# 01.상품

How a schedule from MS Project changed from version to version. A marks actual dates.

## Version 1 (data date 2008-12-12, saved 2008-12-11, file WBS_01.상품.mpp)

Note of the change: Merge branch 'master' of github.com:OOSLAB/2015-SE

| ID | WBS | Task | Duration | Start | Finish | Predecessors | Complete | Constraint |
| --- | --- | --- | --- | --- | --- | --- | --- | --- |
| 1 | 1 | **Inception** | 3d | 2008-07-23 A | 2008-07-25 A |  | 100% |  |
| 2 | 1.1 | **착수준비** | 3d | 2008-07-23 A | 2008-07-25 A |  | 100% |  |
| 3 |  | 업무범위 정의 | 3d | 2008-07-23 A | 2008-07-25 A |  | 100% | start no earlier than 2008-07-23 |
| 4 |  | 업무파트 WBS 정의 | 3d | 2008-07-23 A | 2008-07-25 A |  | 100% | start no earlier than 2008-07-23 |
| 5 | 2 | **Analysis** | 43d | 2008-07-28 A | 2008-09-26 A |  | 100% |  |
| 6 | 2.1 | **현황평가** | 7d | 2008-07-28 A | 2008-08-05 A |  | 100% |  |
| 7 | 2.1.1 | **현행업무분석** | 5d | 2008-07-28 A | 2008-08-01 A |  | 100% |  |
| 8 |  | 현행업무분석서 수집 | 5d | 2008-07-28 A | 2008-08-01 A |  | 100% | start no earlier than 2008-07-28 |
| 9 | 2.1.2 | **현행시스템분석** | 5d | 2008-07-28 A | 2008-08-01 A |  | 100% |  |
| 10 |  | 현행시스템분석서 수집 | 5d | 2008-07-28 A | 2008-08-01 A |  | 100% | start no earlier than 2008-07-28 |
| 11 | 2.1.2.2 | **현행시스템 화면 및 보고서 설명** | 5d | 2008-07-28 A | 2008-08-01 A |  | 100% |  |
| 12 |  | 전통형 해약환급금 산출 | 5d | 2008-07-28 A | 2008-08-01 A |  | 100% | start no earlier than 2008-07-28 |
| 13 |  | 금리연동형 해약환급금 산출 | 5d | 2008-07-28 A | 2008-08-01 A |  | 100% | start no earlier than 2008-07-28 |
| 14 |  | 만기보험금 산출 | 5d | 2008-07-28 A | 2008-08-01 A |  | 100% | start no earlier than 2008-07-28 |
| 15 |  | 분할보험금 산출 | 5d | 2008-07-28 A | 2008-08-01 A |  | 100% | start no earlier than 2008-07-28 |
| 16 |  | 연금액 산출 | 5d | 2008-07-28 A | 2008-08-01 A |  | 100% | start no earlier than 2008-07-28 |
| 17 |  | 배당부리 산출 | 5d | 2008-07-28 A | 2008-08-01 A |  | 100% | start no earlier than 2008-07-28 |
| 18 |  | 기납입보험료 산출 | 5d | 2008-07-28 A | 2008-08-01 A |  | 100% | start no earlier than 2008-07-28 |
| 19 |  | 선납/미납 보험료 산출 | 5d | 2008-07-28 A | 2008-08-01 A |  | 100% | start no earlier than 2008-07-28 |
| 20 |  | 지연이자 산출 | 5d | 2008-07-28 A | 2008-08-01 A |  | 100% | start no earlier than 2008-07-28 |
| 21 |  | 인터뷰실시 | 2d | 2008-08-04 A | 2008-08-05 A |  | 100% | start no earlier than 2008-08-04 |
| 22 |  | 착수W/S | 3d | 2008-08-06 A | 2008-08-08 A |  | 100% | start no earlier than 2008-08-06 |
| 23 | 2.3 | **패키지 요구사항정의** | 14d | 2008-08-11 A | 2008-08-29 A |  | 100% |  |
| 24 | 2.3.1 | **패키지 사용자교육** | 4d | 2008-08-11 A | 2008-08-14 A | 21 | 100% |  |
| 25 | 2.3.1.1 | **애플리케이션 구조 설명** | 4d | 2008-08-11 A | 2008-08-14 A |  | 100% |  |
| 26 |  | 전통형 해약환급금 산출 | 4d | 2008-08-11 A | 2008-08-14 A |  | 100% | start no earlier than 2008-08-11 |
| 27 |  | 금리연동형 해약환급금 산출 | 4d | 2008-08-11 A | 2008-08-14 A |  | 100% | start no earlier than 2008-08-11 |
| 28 |  | 만기보험금 산출 | 4d | 2008-08-11 A | 2008-08-14 A |  | 100% | start no earlier than 2008-08-11 |
| 29 |  | 분할보험금 산출 | 4d | 2008-08-11 A | 2008-08-14 A |  | 100% | start no earlier than 2008-08-11 |
| 30 |  | 연금액 산출 | 4d | 2008-08-11 A | 2008-08-14 A |  | 100% | start no earlier than 2008-08-11 |
| 31 |  | 배당부리 산출 | 4d | 2008-08-11 A | 2008-08-14 A |  | 100% | start no earlier than 2008-08-11 |
| 32 |  | 기납입보험료 산출 | 4d | 2008-08-11 A | 2008-08-14 A |  | 100% | start no earlier than 2008-08-11 |
| 33 |  | 선납/미납 보험료 산출 | 4d | 2008-08-11 A | 2008-08-14 A |  | 100% | start no earlier than 2008-08-11 |
| 34 |  | 지연이자 산출 | 4d | 2008-08-11 A | 2008-08-14 A |  | 100% | start no earlier than 2008-08-11 |
| 35 | 2.3.1.2 | **데이터모델 설명** | 1d | 2008-08-14 A | 2008-08-14 A |  | 100% |  |
| 36 |  | 주요 엔티티 설명 | 1d | 2008-08-14 A | 2008-08-14 A |  | 100% | start no earlier than 2008-08-14 |
| 37 | 2.3.2 | **기능요구사항정의** | 10d | 2008-08-18 A | 2008-08-29 A | 21 | 100% |  |
| 38 | 2.3.2.1 | **현업요구사항정의서작성** | 10d | 2008-08-18 A | 2008-08-29 A |  | 100% |  |
| 39 |  | 전통형 해약환급금 산출 | 5d | 2008-08-18 A | 2008-08-22 A |  | 100% | start no earlier than 2008-08-18 |
| 40 |  | 금리연동형 해약환급금 산출 | 5d | 2008-08-18 A | 2008-08-22 A |  | 100% | start no earlier than 2008-08-18 |
| 41 |  | 만기보험금 산출 | 5d | 2008-08-25 A | 2008-08-29 A |  | 100% | start no earlier than 2008-08-25 |
| 42 |  | 분할보험금 산출 | 5d | 2008-08-25 A | 2008-08-29 A |  | 100% | start no earlier than 2008-08-25 |
| 43 |  | 연금액 산출 | 5d | 2008-08-25 A | 2008-08-29 A |  | 100% | start no earlier than 2008-08-25 |
| 44 |  | 배당부리 산출 | 5d | 2008-08-18 A | 2008-08-22 A |  | 100% | start no earlier than 2008-08-18 |
| 45 |  | 기납입보험료 산출 | 5d | 2008-08-18 A | 2008-08-22 A |  | 100% | start no earlier than 2008-08-18 |
| 46 |  | 선납/미납 보험료 산출 | 5d | 2008-08-25 A | 2008-08-29 A |  | 100% | start no earlier than 2008-08-25 |
| 47 |  | 지연이자 산출 | 5d | 2008-08-25 A | 2008-08-29 A |  | 100% | start no earlier than 2008-08-25 |
| 48 | 2.4 | **매핑** | 24d | 2008-08-18 A | 2008-09-19 A |  | 100% |  |
| 49 | 2.4.1 | **패키지GAP분석** | 10d | 2008-08-18 A | 2008-08-29 A |  | 100% |  |
| 50 |  | 전통형 해약환급금 산출 | 5d | 2008-08-18 A | 2008-08-22 A |  | 100% | start no earlier than 2008-08-18 |
| 51 |  | 금리연동형 해약환급금 산출 | 5d | 2008-08-18 A | 2008-08-22 A |  | 100% | start no earlier than 2008-08-18 |
| 52 |  | 만기보험금 산출 | 5d | 2008-08-25 A | 2008-08-29 A |  | 100% | start no earlier than 2008-08-25 |
| 53 |  | 분할보험금 산출 | 5d | 2008-08-25 A | 2008-08-29 A |  | 100% | start no earlier than 2008-08-25 |
| 54 |  | 연금액 산출 | 5d | 2008-08-25 A | 2008-08-29 A |  | 100% | start no earlier than 2008-08-25 |
| 55 |  | 배당부리 산출 | 5d | 2008-08-18 A | 2008-08-22 A |  | 100% | start no earlier than 2008-08-18 |
| 56 |  | 기납입보험료 산출 | 5d | 2008-08-18 A | 2008-08-22 A |  | 100% | start no earlier than 2008-08-18 |
| 57 |  | 선납/미납 보험료 산출 | 5d | 2008-08-25 A | 2008-08-29 A |  | 100% | start no earlier than 2008-08-25 |
| 58 |  | 지연이자 산출 | 5d | 2008-08-25 A | 2008-08-29 A |  | 100% | start no earlier than 2008-08-25 |
| 59 | 2.4.2 | **매핑결과 및 GAP 대응방안 수립** | 14d | 2008-09-01 A | 2008-09-19 A |  | 100% |  |
| 60 |  | 전통형 해약환급금 산출 | 5d | 2008-09-01 A | 2008-09-05 A |  | 100% | start no earlier than 2008-09-01 |
| 61 |  | 금리연동형 해약환급금 산출 | 5d | 2008-09-01 A | 2008-09-05 A |  | 100% | start no earlier than 2008-09-01 |
| 62 |  | 만기보험금 산출 | 5d | 2008-09-08 A | 2008-09-12 A |  | 100% | start no earlier than 2008-09-08 |
| 63 |  | 분할보험금 산출 | 5d | 2008-09-08 A | 2008-09-12 A |  | 100% | start no earlier than 2008-09-08 |
| 64 |  | 연금액 산출 | 5d | 2008-09-08 A | 2008-09-12 A |  | 100% | start no earlier than 2008-09-08 |
| 65 |  | 배당부리 산출 | 4d | 2008-09-16 A | 2008-09-19 A |  | 100% | start no earlier than 2008-09-16 |
| 66 |  | 기납입보험료 산출 | 4d | 2008-09-16 A | 2008-09-19 A |  | 100% | start no earlier than 2008-09-16 |
| 67 |  | 선납/미납 보험료 산출 | 4d | 2008-09-16 A | 2008-09-19 A |  | 100% | start no earlier than 2008-09-16 |
| 68 |  | 지연이자 산출 | 4d | 2008-09-16 A | 2008-09-19 A |  | 100% | start no earlier than 2008-09-16 |
| 69 | 2.5 | **단계완료** | 5d | 2008-09-22 A | 2008-09-26 A |  | 100% |  |
| 70 |  | 요구사항추적표 작성 | 1d | 2008-09-22 A | 2008-09-22 A |  | 100% | start no earlier than 2008-09-22 |

| ID | WBS | Task | Duration | Start | Finish | Predecessors | Complete | Total float | Constraint |
| --- | --- | --- | --- | --- | --- | --- | --- | --- | --- |
| 71 |  | 분석단계산출물 정리(Inspection) | 1d | 2008-09-23 A | 2008-09-23 A | 70 | 100% |  |  |
| 72 |  | 고객검토 실시 | 2d | 2008-09-24 A | 2008-09-25 A | 71 | 100% |  |  |
| 73 |  | 고객승인 획득 | 1d | 2008-09-26 A | 2008-09-26 A | 72 | 100% |  |  |
| 74 | 3 | **Design** | 44d | 2008-09-29 A | 2008-11-28 A |  | 100% |  |  |
| 75 | 3.1 | **추가개발 설계** | 34d | 2008-09-29 A | 2008-11-14 A |  | 100% |  |  |
| 76 | 3.1.1 | **데이터코드 설계** | 12d | 2008-09-29 A | 2008-10-15 A |  | 100% |  |  |
| 77 |  | 데이터코드정의서 작성 | 12d | 2008-09-29 A | 2008-10-15 A | 73 | 100% |  |  |
| 78 | 3.1.2 | **데이터베이스 설계** | 10d | 2008-10-01 A | 2008-10-15 A |  | 100% |  |  |
| 79 |  | ERD 작성 | 10d | 2008-10-01 A | 2008-10-15 A |  | 100% |  | start no earlier than 2008-10-01 |
| 80 |  | 테이블목록 작성 | 2d | 2008-10-14 A | 2008-10-15 A |  | 100% |  | start no earlier than 2008-10-14 |
| 81 |  | 테이블레이아웃 작성 | 7d | 2008-10-07 A | 2008-10-15 A |  | 100% |  | start no earlier than 2008-10-07 |
| 82 | 3.1.3 | **온라인 프로그램 설계** | 25d | 2008-10-06 A | 2008-11-07 A |  | 100% |  |  |
| 83 |  | 온라인프로그램목록 작성 | 5d | 2008-10-13 A | 2008-10-17 A |  | 100% |  | start no earlier than 2008-10-13 |
| 84 | 3.1.3.2 | **온라인프로그램사양서 작성** | 25d | 2008-10-06 A | 2008-11-07 A |  | 100% |  |  |
| 85 |  | 전통형 해약환급금 산출 | 20d | 2008-10-06 A | 2008-10-31 A |  | 100% |  | start no earlier than 2008-10-06 |
| 86 |  | 금리연동형 해약환급금 산출 | 25d | 2008-10-06 A | 2008-11-07 A |  | 100% |  | start no earlier than 2008-10-06 |
| 87 |  | 만기보험금 산출 | 15d | 2008-10-13 A | 2008-10-31 A |  | 100% |  | start no earlier than 2008-10-13 |
| 88 |  | 분할보험금 산출 | 20d | 2008-10-13 A | 2008-11-07 A |  | 100% |  | start no earlier than 2008-10-13 |
| 89 |  | 연금액 산출 | 25d | 2008-10-06 A | 2008-11-07 A |  | 100% |  | start no earlier than 2008-10-06 |
| 90 |  | 배당부리 산출 | 10d | 2008-10-20 A | 2008-10-31 A |  | 100% |  | start no earlier than 2008-10-20 |
| 91 |  | 기납입보험료 산출 | 15d | 2008-10-20 A | 2008-11-07 A |  | 100% |  | start no earlier than 2008-10-20 |
| 92 |  | 선납/미납 보험료 산출 | 15d | 2008-10-20 A | 2008-11-07 A |  | 100% |  | start no earlier than 2008-10-20 |
| 93 |  | 지연이자 산출 | 10d | 2008-10-27 A | 2008-11-07 A |  | 100% |  | start no earlier than 2008-10-27 |
| 94 | 3.1.4 | **배치플로우 설계** | 15d | 2008-10-27 A | 2008-11-14 A |  | 100% |  |  |
| 95 |  | 배치플로우정의서 작성 | 5d | 2008-10-27 A | 2008-10-31 A |  | 100% |  | start no earlier than 2008-10-27 |
| 96 |  | 배치프로그램목록 작성 | 3d | 2008-11-03 A | 2008-11-05 A |  | 100% |  | start no earlier than 2008-11-03 |
| 97 |  | 배치프로그램사양서 작성 | 10d | 2008-11-03 A | 2008-11-14 A |  | 100% |  | start no earlier than 2008-11-03 |
| 98 | 3.2 | **컨버젼 설계** | 34d | 2008-09-29 A | 2008-11-14 A |  | 100% |  |  |
| 99 |  | 테이블 매핑정의서 작성 지원 | 34d | 2008-09-29 A | 2008-11-14 A |  | 100% |  | start no earlier than 2008-09-29 |
| 100 |  | 데이터코드 매핑정의서 작성 지원 | 34d | 2008-09-29 A | 2008-11-14 A |  | 100% |  | start no earlier than 2008-09-29 |
| 101 | 3.3 | **단계완료** | 10d | 2008-11-17 A | 2008-11-28 A |  | 100% |  |  |
| 102 |  | 요구사항추적표 작성 | 2d | 2008-11-17 A | 2008-11-18 A | 94 | 100% |  | start no earlier than 2008-11-03 |
| 103 |  | 설계단계산출물 정리(Inspection) | 3d | 2008-11-19 A | 2008-11-21 A | 102 | 100% |  |  |
| 104 |  | 고객검토 실시 | 3d | 2008-11-24 A | 2008-11-26 A | 103 | 100% |  |  |
| 105 |  | 고객승인 획득 | 2d | 2008-11-27 A | 2008-11-28 A | 104 | 100% |  |  |
| 106 | 4 | **Build/Unit Test** | 72d | 2008-12-01 A | 2009-03-13 |  | 6% | 85d |  |
| 107 | 4.1 | **추가개발/패키지 커스터마이징 및 Unit Test** | 62d | 2008-12-01 A | 2009-02-27 |  | 16% | 85d |  |
| 108 |  | 개발 1주차(개발착수준비) | 5d | 2008-12-01 A | 2008-12-05 A |  | 100% |  | start no earlier than 2008-12-01 |
| 109 |  | 개발 2주차 | 5d | 2008-12-08 A | 2008-12-12 A | 108 | 100% |  | start no earlier than 2008-12-01 |
| 110 |  | 개발 3주차 | 5d | 2008-12-15 | 2008-12-19 | 109 |  | 86d | start no earlier than 2008-07-21 |
| 111 |  | 개발 4주차 | 4d | 2008-12-22 | 2008-12-26 | 110 |  | 86d | start no earlier than 2008-11-17 |
| 112 |  | 개발 5주차 | 4d | 2008-12-29 | 2009-01-02 | 111 |  | 86d | start no earlier than 2008-12-01 |
| 113 |  | 개발 6주차 | 5d | 2009-01-05 | 2009-01-09 | 112 |  | 86d | start no earlier than 2008-12-01 |
| 114 |  | 개발 7주차 | 5d | 2009-01-12 | 2009-01-16 | 113 |  | 86d | start no earlier than 2008-12-01 |
| 115 |  | 개발 8주차 | 5d | 2009-01-19 | 2009-01-23 | 114 |  | 86d | start no earlier than 2008-07-21 |
| 116 |  | 개발 9주차 | 3d | 2009-01-28 | 2009-01-30 | 115 |  | 85d | start no earlier than 2009-01-28 |
| 117 |  | 개발 10주차 | 5d | 2009-02-02 | 2009-02-06 | 116 |  | 85d | start no earlier than 2008-12-01 |
| 118 |  | 개발 11주차 | 5d | 2009-02-09 | 2009-02-13 | 117 |  | 85d | start no earlier than 2008-12-01 |
| 119 |  | 개발 12주차 | 5d | 2009-02-16 | 2009-02-20 | 118 |  | 85d | start no earlier than 2008-12-01 |
| 120 |  | 개발 13주차 | 5d | 2009-02-23 | 2009-02-27 | 119 |  | 85d | start no earlier than 2008-12-01 |
| 121 | 4.2 | **테스트시나리오 작성** | 62d | 2008-12-01 A | 2009-02-27 |  | 8% | 95d |  |
| 122 |  | 테스트착수준비 | 5d | 2008-12-01 A | 2008-12-05 A |  | 100% |  | start no earlier than 2008-12-01 |
| 123 |  | 테스트목록 및 일정 확정 | 28d | 2008-12-08 | 2009-01-16 | 122 |  | 96d | start no earlier than 2008-12-08 |
| 124 |  | UAT시나리오 작성 - 비즈니스모듈1 | 5d | 2009-01-19 | 2009-01-23 | 123 |  | 96d | start no earlier than 2008-12-01 |
| 125 |  | UAT시나리오 작성 - 비즈니스모듈2 | 3d | 2009-01-28 | 2009-01-30 | 124 |  | 95d | start no earlier than 2009-01-28 |
| 126 |  | UAT시나리오 작성 - 비즈니스모듈3 | 5d | 2009-02-02 | 2009-02-06 | 125 |  | 95d | start no earlier than 2008-11-17 |
| 127 |  | UAT시나리오 작성 - 비즈니스모듈4 | 5d | 2009-02-09 | 2009-02-13 | 126 |  | 95d | start no earlier than 2008-12-01 |
| 128 |  | UAT시나리오 작성 - 비즈니스모듈5 | 5d | 2009-02-16 | 2009-02-20 | 127 |  | 95d | start no earlier than 2008-12-01 |
| 129 |  | UAT시나리오 작성 - 비즈니스모듈6 | 5d | 2009-02-23 | 2009-02-27 | 128 |  | 95d | start no earlier than 2008-12-01 |
| 130 | 4.3 | **사전 E2E Test 지원** | 10d | 2009-03-02 | 2009-03-13 | 107 |  | 85d |  |
| 131 |  | 사전 E2E Test - 주요프로세스1 | 5d | 2009-03-02 | 2009-03-06 |  |  | 85d | start no earlier than 2008-12-01 |
| 132 |  | 사전 E2E Test - 주요프로세스2 | 5d | 2009-03-09 | 2009-03-13 | 131 |  | 85d | start no earlier than 2008-12-01 |
| 133 | 4.4 | **금액 일괄검증(모듈테스트)** | 25d | 2009-02-09 | 2009-03-13 |  |  | 84d |  |
| 134 |  | 전통형 해약환급금 | 25d | 2009-02-09 | 2009-03-13 |  |  | 84d | start no earlier than 2009-02-09 |
| 135 |  | 금리연동형 해약환급금 | 25d | 2009-02-09 | 2009-03-13 |  |  | 84d | start no earlier than 2009-02-09 |
| 136 |  | 분할보험금 | 25d | 2009-02-09 | 2009-03-13 |  |  | 84d | start no earlier than 2009-02-09 |
| 137 |  | 만기보험금 | 25d | 2009-02-09 | 2009-03-13 |  |  | 84d | start no earlier than 2009-02-09 |
| 138 | 4.5 | **개발단계 품질검증 및 단계완료** | 58d | 2008-12-19 | 2009-03-13 |  |  | 85d |  |
| 139 | 4.5.1 | **Code Inspection 실시 및 보완** | 52d | 2008-12-19 | 2009-03-06 |  |  | 84d |  |
| 140 |  | Code Inspection 1차 | 1d | 2008-12-19 | 2008-12-19 |  |  | 137d | start no earlier than 2008-12-19 |

| ID | WBS | Task | Duration | Start | Finish | Predecessors | Total float | Constraint |
| --- | --- | --- | --- | --- | --- | --- | --- | --- |
| 141 |  | Code Inspection 2차 | 1d | 2009-01-02 | 2009-01-02 |  | 129d | start no earlier than 2009-01-02 |
| 142 |  | Code Inspection 3차 | 1d | 2009-01-16 | 2009-01-16 |  | 119d | start no earlier than 2009-01-16 |
| 143 |  | Code Inspection 4차 | 1d | 2009-01-30 | 2009-01-30 |  | 110d | start no earlier than 2009-01-30 |
| 144 |  | Code Inspection 5차 | 1d | 2009-02-13 | 2009-02-13 |  | 100d | start no earlier than 2009-02-13 |
| 145 |  | Code Inspection 6차 | 1d | 2009-02-20 | 2009-02-20 |  | 95d | start no earlier than 2009-02-20 |
| 146 |  | Code Inspection 7차 | 1d | 2009-03-06 | 2009-03-06 |  | 84d | start no earlier than 2009-03-06 |
| 147 |  | 요구사항추적표 작성 | 5d | 2009-03-09 | 2009-03-13 | 139 | 84d |  |
| 148 | 5 | **E2E Test(End to End Test) 지원** | 20d | 2009-03-16 | 2009-04-10 |  | 55d |  |
| 149 |  | E2E 테스트 실시1 | 10d | 2009-03-16 | 2009-03-27 |  | 55d | start no earlier than 2009-03-16 |
| 150 |  | 테스트 결과확인 및 보완1 | 5d | 2009-03-23 | 2009-03-27 |  | 64d | start no earlier than 2009-03-23 |
| 151 |  | E2E 테스트 실시2 | 10d | 2009-03-30 | 2009-04-10 | 149 | 54d |  |
| 152 |  | 테스트 결과확인 및 보완2 | 5d | 2009-04-06 | 2009-04-10 |  | 54d | start no earlier than 2009-04-06 |
| 153 | 5.5 | **금액 일괄검증(1차)** | 20d | 2009-03-16 | 2009-04-10 |  | 54d |  |
| 154 |  | 전통형 해약환급금 | 20d | 2009-03-16 | 2009-04-10 |  | 54d | start no earlier than 2009-03-16 |
| 155 |  | 금리연동형 해약환급금 | 20d | 2009-03-16 | 2009-04-10 |  | 54d | start no earlier than 2009-03-16 |
| 156 |  | 분할보험금 | 20d | 2009-03-16 | 2009-04-10 |  | 54d | start no earlier than 2009-03-16 |
| 157 |  | 만기보험금 | 20d | 2009-03-16 | 2009-04-10 |  | 54d | start no earlier than 2009-03-16 |
| 158 | 6 | **개발 및 Test 검수** | 10d | 2009-04-13 | 2009-04-24 | 148 | 54d |  |
| 159 |  | 테스트결과제출 | 5d | 2009-04-13 | 2009-04-17 |  | 54d |  |
| 160 |  | 고객 테스트결과 확인 | 3d | 2009-04-20 | 2009-04-22 | 159 | 54d |  |
| 161 |  | 고객승인 획득 | 2d | 2009-04-23 | 2009-04-24 | 160 | 54d |  |
| 162 | 7 | **UAT(User Acceptance Test) 지원** | 38d | 2009-04-13 | 2009-06-05 |  | 1d |  |
| 163 |  | 사용자테스트 실시 | 38d | 2009-04-13 | 2009-06-05 |  | 1d | start no earlier than 2009-04-13 |
| 164 |  | 사용자매뉴얼 작성 | 10d | 2009-04-23 | 2009-05-08 |  | 21d | start no earlier than 2009-04-23 |
| 165 |  | 사용자교육 실시 | 20d | 2009-05-11 | 2009-06-05 |  | 1d | start no earlier than 2009-05-11 |
| 166 | 7.4 | **금액 일괄검증(2차)** | 38d | 2009-04-13 | 2009-06-05 |  | 1d |  |
| 167 |  | 전통형 해약환급금 | 38d | 2009-04-13 | 2009-06-05 |  | 1d | start no earlier than 2009-04-13 |
| 168 |  | 금리연동형 해약환급금 | 38d | 2009-04-13 | 2009-06-05 |  | 1d | start no earlier than 2009-04-13 |
| 169 |  | 분할보험금 | 38d | 2009-04-13 | 2009-06-05 |  | 1d | start no earlier than 2009-04-13 |
| 170 |  | 만기보험금 | 38d | 2009-04-13 | 2009-06-05 |  | 1d | start no earlier than 2009-04-13 |
| 171 | 8 | **ORT(Operation Readiness Test)** | 25d | 2009-06-08 | 2009-07-10 | 162 | 1d |  |
| 172 | 8.1 | **구현계획수립** | 5d | 2009-06-08 | 2009-06-12 |  | 6d |  |
| 173 |  | 릴리이즈및비상계획수립 | 5d | 2009-06-08 | 2009-06-12 |  | 21d | start no earlier than 2009-05-25 |
| 174 |  | 교육훈련계획수립 | 5d | 2009-06-08 | 2009-06-12 |  | 6d | start no earlier than 2009-06-01 |
| 175 | 8.2 | **시범운영** | 25d | 2009-06-08 | 2009-07-10 |  | 1d |  |
| 176 |  | 시범운영계획 수립 | 5d | 2009-06-08 | 2009-06-12 |  | 21d | start no earlier than 2009-06-08 |
| 177 |  | 시범운영 실시 | 25d | 2009-06-08 | 2009-07-10 |  | 1d | start no earlier than 2009-06-08 |
| 178 | 8.3 | **시스템사용교육** | 15d | 2009-06-15 | 2009-07-03 |  | 6d |  |
| 179 |  | 운영매뉴얼 작성 | 10d | 2009-06-15 | 2009-06-26 | 174 | 6d | start no earlier than 2009-06-15 |
| 180 |  | 운영자교육 실시 | 5d | 2009-06-29 | 2009-07-03 | 179 | 6d |  |
| 181 | 8.4 | **시스템 인수인계** | 20d | 2009-06-08 | 2009-07-03 |  | 6d |  |
| 182 |  | 인수인계계획 수립 | 5d | 2009-06-08 | 2009-06-12 |  | 6d | start no earlier than 2009-06-08 |
| 183 |  | 인수인계 실시 | 15d | 2009-06-15 | 2009-07-03 | 182 | 6d | start no earlier than 2009-06-15 |
| 184 | 8.5 | **오픈 준비** | 5d | 2009-07-06 | 2009-07-10 |  | 1d |  |
| 185 |  | 데이터베이스 구축 | 5d | 2009-07-06 | 2009-07-10 |  | 1d | start no earlier than 2009-07-06 |
| 186 |  | 소프트웨어 설치 | 5d | 2009-07-06 | 2009-07-10 |  | 1d | start no earlier than 2009-07-06 |
| 187 |  | 데이터컨버전 | 5d | 2009-07-06 | 2009-07-10 |  | 1d | start no earlier than 2009-07-06 |
| 188 |  | 시스템 릴리이즈 | 1d | 2009-07-10 | 2009-07-10 |  | 1d | start no earlier than 2009-07-10 |
| 189 | 9 | **Go Live** | 1d | 2009-07-13 | 2009-07-13 |  | 0d |  |
| 190 |  | 시스템 최종 오픈 | 1d | 2009-07-13 | 2009-07-13 |  | 0d | start no earlier than 2009-07-13 |

## Version 2 (data date 2008-12-12, saved 2008-12-11, file WBS_05.계약변경.mpp)

Note of the change: Merge branch 'master' of github.com:OOSLAB/2015-SE

Last finish stays 2009-07-13. Complete tasks 82 → 124.

Added:

| ID | Task | Duration | Start | Finish | Predecessors | Constraint |
| --- | --- | --- | --- | --- | --- | --- |
| 4 | 업무파트 WBS 작성 | 3d | 2008-07-23 A | 2008-07-25 A |  | start no earlier than 2008-07-23 |
| 12 | 기본계약조회 | 5d | 2008-07-28 A | 2008-08-01 A |  | start no earlier than 2008-07-28 |
| 13 | 세금우대해지 | 5d | 2008-07-28 A | 2008-08-01 A |  | start no earlier than 2008-07-28 |
| 14 | 금융정보보호 | 5d | 2008-07-28 A | 2008-08-01 A |  | start no earlier than 2008-07-28 |
| 15 | 계약사항변경 | 5d | 2008-07-28 A | 2008-08-01 A |  | start no earlier than 2008-07-28 |
| 16 | 단체기타변경 | 5d | 2008-07-28 A | 2008-08-01 A |  | start no earlier than 2008-07-28 |
| 17 | 변경차액관리 | 5d | 2008-07-28 A | 2008-08-01 A |  | start no earlier than 2008-07-28 |
| 18 | 계약변경심사 | 5d | 2008-07-28 A | 2008-08-01 A |  | start no earlier than 2008-07-28 |
| 19 | 수금사항변경 | 5d | 2008-07-28 A | 2008-08-01 A |  | start no earlier than 2008-07-28 |
| 20 | 수금자원실적 | 5d | 2008-07-28 A | 2008-08-01 A |  | start no earlier than 2008-07-28 |
| 21 | 보유계약명세 | 5d | 2008-07-28 A | 2008-08-01 A |  | start no earlier than 2008-07-28 |
| 22 | 마감/통계 | 5d | 2008-07-28 A | 2008-08-01 A |  | start no earlier than 2008-07-28 |
| 27 | **메뉴구조 및 화면 설명** | 4d | 2008-08-11 A | 2008-08-14 A |  |  |
| 28 | 기본계약조회 | 4d | 2008-08-11 A | 2008-08-14 A |  | start no earlier than 2008-07-21 |
| 29 | 세금우대해지 | 4d | 2008-08-11 A | 2008-08-14 A |  | start no earlier than 2008-07-21 |
| 30 | 금융정보보호 | 4d | 2008-08-11 A | 2008-08-14 A |  | start no earlier than 2008-07-21 |
| 31 | 계약사항변경 | 4d | 2008-08-11 A | 2008-08-14 A |  | start no earlier than 2008-07-21 |
| 32 | 단체기타변경 | 4d | 2008-08-11 A | 2008-08-14 A |  | start no earlier than 2008-07-21 |
| 33 | 변경차액관리 | 4d | 2008-08-11 A | 2008-08-14 A |  | start no earlier than 2008-07-21 |
| 34 | 계약변경심사 | 4d | 2008-08-11 A | 2008-08-14 A |  | start no earlier than 2008-07-21 |
| 35 | 수금사항변경 | 4d | 2008-08-11 A | 2008-08-14 A |  | start no earlier than 2008-07-21 |
| 36 | 수금자원실적 | 4d | 2008-08-11 A | 2008-08-14 A |  | start no earlier than 2008-07-21 |
| 37 | 보유계약명세 | 4d | 2008-08-11 A | 2008-08-14 A |  | start no earlier than 2008-07-21 |
| 38 | 마감/통계 | 4d | 2008-08-11 A | 2008-08-14 A |  | start no earlier than 2008-07-21 |
| 43 | 기본계약조회 | 5d | 2008-08-18 A | 2008-08-22 A |  | start no earlier than 2008-07-21 |
| 44 | 세금우대해지 | 5d | 2008-08-18 A | 2008-08-22 A |  | start no earlier than 2008-07-21 |
| 45 | 금융정보보호 | 5d | 2008-08-18 A | 2008-08-22 A |  | start no earlier than 2008-07-21 |
| 46 | 계약사항변경 | 5d | 2008-08-18 A | 2008-08-22 A |  | start no earlier than 2008-07-21 |
| 47 | 단체기타변경 | 5d | 2008-08-25 A | 2008-08-29 A |  | start no earlier than 2008-08-25 |
| 48 | 변경차액관리 | 5d | 2008-08-25 A | 2008-08-29 A |  | start no earlier than 2008-08-25 |
| 49 | 계약변경심사 | 5d | 2008-08-25 A | 2008-08-29 A |  | start no earlier than 2008-08-25 |
| 50 | 수금사항변경 | 5d | 2008-08-25 A | 2008-08-29 A |  | start no earlier than 2008-08-25 |
| 51 | 수금자원실적 | 5d | 2008-08-25 A | 2008-08-29 A |  | start no earlier than 2008-08-25 |
| 52 | 보유계약명세 | 5d | 2008-08-25 A | 2008-08-29 A |  | start no earlier than 2008-08-25 |
| 53 | 마감/통계 | 5d | 2008-08-25 A | 2008-08-29 A |  | start no earlier than 2008-08-25 |
| 54 | **타시스템 인터페이스 요구사항정의** | 5d | 2008-08-18 A | 2008-08-22 A | 23 |  |
| 56 | Customer Center | 5d | 2008-08-18 A | 2008-08-22 A |  | start no earlier than 2008-08-18 |
| 57 | Cyber Portal | 5d | 2008-08-18 A | 2008-08-22 A |  | start no earlier than 2008-08-18 |
| 58 | ARS | 5d | 2008-08-18 A | 2008-08-22 A |  | start no earlier than 2008-08-18 |
| 59 | 방카시스템 | 5d | 2008-08-18 A | 2008-08-22 A |  | start no earlier than 2008-08-18 |
| 60 | 이미지시스템 | 5d | 2008-08-18 A | 2008-08-22 A |  | start no earlier than 2008-08-18 |
| 61 | **대외시스템 인터페이스 목록 작성** | 5d | 2008-08-18 A | 2008-08-22 A |  |  |
| 62 | 은행 리얼타임 이체 | 5d | 2008-08-18 A | 2008-08-22 A |  | start no earlier than 2008-08-18 |
| 63 | 세금우대정보 송수신 | 5d | 2008-08-18 A | 2008-08-22 A |  | start no earlier than 2008-08-18 |
| 64 | 생보협회자료 송수신 | 5d | 2008-08-18 A | 2008-08-22 A |  | start no earlier than 2008-08-18 |
| 80 | 기본계약조회 | 5d | 2008-09-01 A | 2008-09-05 A |  | start no earlier than 2008-09-01 |
| 81 | 세금우대해지 | 5d | 2008-09-01 A | 2008-09-05 A |  | start no earlier than 2008-09-01 |
| 82 | 금융정보보호 | 5d | 2008-09-01 A | 2008-09-05 A |  | start no earlier than 2008-09-01 |
| 83 | 계약사항변경 | 5d | 2008-09-08 A | 2008-09-12 A |  | start no earlier than 2008-09-08 |
| 84 | 단체기타변경 | 5d | 2008-09-08 A | 2008-09-12 A |  | start no earlier than 2008-09-08 |
| 85 | 변경차액관리 | 5d | 2008-09-08 A | 2008-09-12 A |  | start no earlier than 2008-09-08 |
| 86 | 계약변경심사 | 5d | 2008-09-08 A | 2008-09-12 A |  | start no earlier than 2008-09-08 |
| 87 | 수금사항변경 | 4d | 2008-09-16 A | 2008-09-19 A |  | start no earlier than 2008-09-15 |
| 88 | 수금자원실적 | 4d | 2008-09-16 A | 2008-09-19 A |  | start no earlier than 2008-09-16 |
| 89 | 보유계약명세 | 4d | 2008-09-16 A | 2008-09-19 A |  | start no earlier than 2008-09-16 |
| 90 | 마감/통계 | 4d | 2008-09-16 A | 2008-09-19 A |  | start no earlier than 2008-09-16 |
| 104 | **UI 설계** | 29d | 2008-09-29 A | 2008-11-07 A |  |  |
| 105 | **화면레이아웃 작성** | 19d | 2008-09-29 A | 2008-10-24 A | 95 |  |
| 106 | 기본계약조회 | 9d | 2008-09-29 A | 2008-10-10 A |  | start no earlier than 2008-07-21 |
| 107 | 세금우대해지 | 9d | 2008-09-29 A | 2008-10-10 A |  | start no earlier than 2008-07-21 |
| 108 | 금융정보보호 | 5d | 2008-10-06 A | 2008-10-10 A |  | start no earlier than 2008-10-06 |
| 109 | 계약사항변경 | 5d | 2008-10-06 A | 2008-10-10 A |  | start no earlier than 2008-10-06 |
| 110 | 단체기타변경 | 5d | 2008-10-06 A | 2008-10-10 A |  | start no earlier than 2008-10-06 |
| 111 | 변경차액관리 | 5d | 2008-10-13 A | 2008-10-17 A |  | start no earlier than 2008-10-13 |
| 112 | 계약변경심사 | 5d | 2008-10-13 A | 2008-10-17 A |  | start no earlier than 2008-10-13 |
| 113 | 수금사항변경 | 5d | 2008-10-13 A | 2008-10-17 A |  | start no earlier than 2008-10-13 |
| 114 | 수금자원실적 | 5d | 2008-10-20 A | 2008-10-24 A |  | start no earlier than 2008-10-20 |
| 115 | 보유계약명세 | 5d | 2008-10-20 A | 2008-10-24 A |  | start no earlier than 2008-10-20 |
| 116 | 마감/통계 | 5d | 2008-10-20 A | 2008-10-24 A |  | start no earlier than 2008-10-20 |
| 117 | 보고서레이아웃 작성 | 10d | 2008-10-27 A | 2008-11-07 A | 105 |  |
| 121 | 기본계약조회 | 5d | 2008-10-16 A | 2008-10-22 A |  | start no earlier than 2008-07-21 |
| 122 | 세금우대해지 | 5d | 2008-10-16 A | 2008-10-22 A |  | start no earlier than 2008-07-21 |
| 123 | 금융정보보호 | 5d | 2008-10-16 A | 2008-10-22 A |  | start no earlier than 2008-07-21 |
| 124 | 계약사항변경 | 5d | 2008-10-16 A | 2008-10-22 A |  | start no earlier than 2008-10-13 |
| 125 | 단체기타변경 | 5d | 2008-10-16 A | 2008-10-22 A |  | start no earlier than 2008-10-13 |
| 126 | 변경차액관리 | 5d | 2008-11-03 A | 2008-11-07 A |  | start no earlier than 2008-11-03 |
| 127 | 계약변경심사 | 5d | 2008-11-03 A | 2008-11-07 A |  | start no earlier than 2008-11-03 |
| 128 | 수금사항변경 | 5d | 2008-11-03 A | 2008-11-07 A |  | start no earlier than 2008-11-03 |
| 129 | 수금자원실적 | 5d | 2008-11-03 A | 2008-11-07 A |  | start no earlier than 2008-11-03 |
| 130 | 보유계약명세 | 5d | 2008-11-03 A | 2008-11-07 A |  | start no earlier than 2008-11-03 |
| 131 | 마감/통계 | 5d | 2008-11-03 A | 2008-11-07 A |  | start no earlier than 2008-11-03 |
| 136 | **메뉴구조정의** | 5d | 2008-11-10 A | 2008-11-14 A |  |  |
| 137 | 메뉴구조도작성 | 5d | 2008-11-10 A | 2008-11-14 A | 118 |  |
| 141 | **타시스템 인터페이스 설계** | 10d | 2008-11-03 A | 2008-11-14 A |  |  |
| 142 | 인터페이스 목록(상세) 작성 | 5d | 2008-11-03 A | 2008-11-07 A |  | start no earlier than 2008-11-03 |
| 143 | **대내시스템 인터페이스 레이아웃 작성** | 10d | 2008-11-03 A | 2008-11-14 A |  |  |
| 144 | Customer Center | 10d | 2008-11-03 A | 2008-11-14 A |  | start no earlier than 2008-11-03 |
| 145 | Cyber Portal | 10d | 2008-11-03 A | 2008-11-14 A |  | start no earlier than 2008-11-03 |
| 146 | ARS | 10d | 2008-11-03 A | 2008-11-14 A |  | start no earlier than 2008-11-03 |
| 147 | 방카시스템 | 10d | 2008-11-03 A | 2008-11-14 A |  | start no earlier than 2008-11-03 |
| 148 | 이미지시스템 | 10d | 2008-11-03 A | 2008-11-14 A |  | start no earlier than 2008-11-03 |
| 149 | **대외시스템 인터페이스 레이아웃 작성** | 10d | 2008-11-03 A | 2008-11-14 A |  |  |
| 150 | 은행 리얼타임 이체 | 10d | 2008-11-03 A | 2008-11-14 A |  | start no earlier than 2008-11-03 |
| 151 | 세금우대정보 송수신 | 10d | 2008-11-03 A | 2008-11-14 A |  | start no earlier than 2008-11-03 |
| 152 | 생보협회자료 송수신 | 10d | 2008-11-03 A | 2008-11-14 A |  | start no earlier than 2008-11-03 |
| 182 | **사전 E2E Test 실시** | 10d | 2009-03-02 | 2009-03-13 | 159 |  |
| 195 | **E2E Test(End to End Test)** | 20d | 2009-03-16 | 2009-04-10 |  |  |
| 204 | **UAT(User Acceptance Test)** | 39d | 2009-04-13 | 2009-06-05 |  |  |

Removed: 4 업무파트 WBS 정의; 12 전통형 해약환급금 산출; 13 금리연동형 해약환급금 산출; 14 만기보험금 산출; 15 분할보험금 산출; 16 연금액 산출; 17 배당부리 산출; 18 기납입보험료 산출; 19 선납/미납 보험료 산출; 20 지연이자 산출; 25 애플리케이션 구조 설명; 26 전통형 해약환급금 산출; 27 금리연동형 해약환급금 산출; 28 만기보험금 산출; 29 분할보험금 산출; 30 연금액 산출; 31 배당부리 산출; 32 기납입보험료 산출; 33 선납/미납 보험료 산출; 34 지연이자 산출; 39 전통형 해약환급금 산출; 40 금리연동형 해약환급금 산출; 41 만기보험금 산출; 42 분할보험금 산출; 43 연금액 산출; 44 배당부리 산출; 45 기납입보험료 산출; 46 선납/미납 보험료 산출; 47 지연이자 산출; 50 전통형 해약환급금 산출; 51 금리연동형 해약환급금 산출; 52 만기보험금 산출; 53 분할보험금 산출; 54 연금액 산출; 55 배당부리 산출; 56 기납입보험료 산출; 57 선납/미납 보험료 산출; 58 지연이자 산출; 60 전통형 해약환급금 산출; 61 금리연동형 해약환급금 산출; 62 만기보험금 산출; 63 분할보험금 산출; 64 연금액 산출; 65 배당부리 산출; 66 기납입보험료 산출; 67 선납/미납 보험료 산출; 68 지연이자 산출; 85 전통형 해약환급금 산출; 86 금리연동형 해약환급금 산출; 87 만기보험금 산출; 88 분할보험금 산출; 89 연금액 산출; 90 배당부리 산출; 91 기납입보험료 산출; 92 선납/미납 보험료 산출; 93 지연이자 산출; 130 사전 E2E Test 지원; 136 분할보험금; 137 만기보험금; 162 UAT(User Acceptance Test) 지원; 170 만기보험금

Changed:

| ID | Task | Start | Finish | Duration | Complete | Total float | Predecessors | Other |
| --- | --- | --- | --- | --- | --- | --- | --- | --- |
| 23 | 인터뷰실시 |  |  |  |  |  | none → 7 | constraint start no earlier than 2008-08-04 → none |
| 24 | 착수W/S |  |  |  |  |  | none → 23 | constraint start no earlier than 2008-08-06 → none |
| 26 | **패키지 사용자교육** |  |  |  |  |  | 23 → 24 |  |
| 41 | **기능요구사항정의** |  |  |  |  |  | 23 → 26 |  |
| 55 | **대내시스템 인터페이스 목록 작성** | 2009-03-16 → 2008-08-18 A (-210d) | 2009-04-10 → 2008-08-22 A (-231d) | 20d → 5d | 0% → 100% | 55d → none |  | was named E2E Test(End to End Test) 지원; baseline start 2009-03-16 → 2008-08-18; baseline finish 2009-04-10 → 2008-08-22 |
| 66 | **매핑수행** | 2009-02-09 → 2008-08-18 A (-175d) | 2009-03-13 → 2008-08-29 A (-196d) | 25d → 10d | 0% → 100% | 84d → none |  | was named 금리연동형 해약환급금; constraint start no earlier than 2009-02-09 → none; baseline start 2009-02-09 → 2008-08-18; baseline finish 2009-03-13 → 2008-08-29 |
| 67 | **패키지GAP분석** |  |  |  |  |  | none → 26 |  |
| 68 | 기본계약조회 | 2009-02-09 → 2008-08-18 A (-175d) | 2009-03-13 → 2008-08-22 A (-203d) | 25d → 5d | 0% → 100% | 84d → none |  | was named 금액 일괄검증(모듈테스트); constraint none → start no earlier than 2008-07-21; baseline start 2009-02-09 → 2008-08-18; baseline finish 2009-03-13 → 2008-08-22 |
| 69 | 세금우대해지 | 2009-02-09 → 2008-08-18 A (-175d) | 2009-03-13 → 2008-08-22 A (-203d) | 25d → 5d | 0% → 100% | 84d → none |  | was named 전통형 해약환급금; constraint start no earlier than 2009-02-09 → start no earlier than 2008-07-21; baseline start 2009-02-09 → 2008-08-18; baseline finish 2009-03-13 → 2008-08-22 |
| 70 | 금융정보보호 | 2009-03-16 → 2008-08-18 A (-210d) | 2009-04-10 → 2008-08-22 A (-231d) | 20d → 5d | 0% → 100% | 54d → none |  | was named 금액 일괄검증(1차); constraint none → start no earlier than 2008-07-21; baseline start 2009-03-16 → 2008-08-18; baseline finish 2009-04-10 → 2008-08-22 |
| 71 | 계약사항변경 | 2009-03-16 → 2008-08-18 A (-210d) | 2009-04-10 → 2008-08-22 A (-231d) | 20d → 5d | 0% → 100% | 54d → none |  | was named 전통형 해약환급금; constraint start no earlier than 2009-03-16 → start no earlier than 2008-07-21; baseline start 2009-03-16 → 2008-08-18; baseline finish 2009-04-10 → 2008-08-22 |
| 72 | 단체기타변경 | 2009-03-16 → 2008-08-25 A (-203d) | 2009-04-10 → 2008-08-29 A (-224d) | 20d → 5d | 0% → 100% | 54d → none |  | was named 금리연동형 해약환급금; constraint start no earlier than 2009-03-16 → start no earlier than 2008-08-25; baseline start 2009-03-16 → 2008-08-25; baseline finish 2009-04-10 → 2008-08-29 |
| 73 | 변경차액관리 | 2009-03-16 → 2008-08-25 A (-203d) | 2009-04-10 → 2008-08-29 A (-224d) | 20d → 5d | 0% → 100% | 54d → none |  | was named 분할보험금; constraint start no earlier than 2009-03-16 → start no earlier than 2008-08-25; baseline start 2009-03-16 → 2008-08-25; baseline finish 2009-04-10 → 2008-08-29 |
| 74 | 계약변경심사 | 2009-03-16 → 2008-08-25 A (-203d) | 2009-04-10 → 2008-08-29 A (-224d) | 20d → 5d | 0% → 100% | 54d → none |  | was named 만기보험금; constraint start no earlier than 2009-03-16 → start no earlier than 2008-08-25; baseline start 2009-03-16 → 2008-08-25; baseline finish 2009-04-10 → 2008-08-29 |
| 75 | 수금사항변경 | 2009-04-13 → 2008-08-25 A (-231d) | 2009-06-05 → 2008-08-29 A (-280d) | 38d → 5d | 0% → 100% | 1d → none |  | was named 금액 일괄검증(2차); constraint none → start no earlier than 2008-08-25; baseline start 2009-04-13 → 2008-08-25; baseline finish 2009-06-05 → 2008-08-29 |
| 76 | 수금자원실적 | 2009-04-13 → 2008-08-25 A (-231d) | 2009-06-05 → 2008-08-29 A (-280d) | 38d → 5d | 0% → 100% | 1d → none |  | was named 전통형 해약환급금; constraint start no earlier than 2009-04-13 → start no earlier than 2008-08-25; baseline start 2009-04-13 → 2008-08-25; baseline finish 2009-06-05 → 2008-08-29 |
| 77 | 보유계약명세 | 2009-04-13 → 2008-08-25 A (-231d) | 2009-06-05 → 2008-08-29 A (-280d) | 38d → 5d | 0% → 100% | 1d → none |  | was named 금리연동형 해약환급금; constraint start no earlier than 2009-04-13 → start no earlier than 2008-08-25; baseline start 2009-04-13 → 2008-08-25; baseline finish 2009-06-05 → 2008-08-29 |
| 78 | 마감/통계 | 2009-04-13 → 2008-08-25 A (-231d) | 2009-06-05 → 2008-08-29 A (-280d) | 38d → 5d | 0% → 100% | 1d → none |  | was named 분할보험금; constraint start no earlier than 2009-04-13 → start no earlier than 2008-08-25; baseline start 2009-04-13 → 2008-08-25; baseline finish 2009-06-05 → 2008-08-29 |
| 98 | **데이터코드 설계** | 2008-09-29 A → 2008-10-06 A (+7d) |  | 12d → 8d |  |  |  | baseline start 2008-09-29 → 2008-10-06 |
| 99 | 데이터코드정의서 작성 | 2008-09-29 A → 2008-10-06 A (+7d) |  | 12d → 8d |  |  |  | constraint none → finish no earlier than 2008-10-15; baseline start 2008-09-29 → 2008-10-06 |
| 100 | **데이터베이스 설계** | 2008-10-01 A → 2008-10-06 A (+5d) |  | 10d → 8d |  |  |  | baseline start 2008-10-01 → 2008-10-06 |
| 101 | ERD 작성 | 2008-10-01 A → 2008-10-14 A (+13d) |  | 10d → 2d |  |  |  | constraint start no earlier than 2008-10-01 → start no earlier than 2008-10-14; baseline start 2008-10-01 → 2008-10-14 |
| 103 | 테이블레이아웃 작성 | 2008-10-07 A → 2008-10-06 A (-1d) | 2008-10-15 A → 2008-10-14 A (-1d) |  |  |  |  | constraint start no earlier than 2008-10-07 → start no earlier than 2008-10-06; baseline start 2008-10-07 → 2008-10-06; baseline finish 2008-10-15 → 2008-10-14 |
| 118 | **온라인 프로그램 설계** | 2008-10-06 A → 2008-10-16 A (+10d) |  | 25d → 17d |  |  |  | baseline start 2008-10-06 → 2008-10-16 |
| 119 | 온라인프로그램목록 작성 | 2008-10-13 A → 2008-10-16 A (+3d) | 2008-10-17 A → 2008-10-22 A (+5d) |  |  |  | none → 100 | constraint start no earlier than 2008-10-13 → none; baseline start 2008-10-13 → 2008-10-16; baseline finish 2008-10-17 → 2008-10-22 |
| 120 | **온라인프로그램사양서 작성** | 2008-10-06 A → 2008-10-16 A (+10d) |  | 25d → 17d |  |  | none → 100 | baseline start 2008-10-06 → 2008-10-16 |
| 138 | **컨버젼 설계** |  | 2008-11-14 A → 2008-11-10 A (-4d) | 34d → 30d |  |  |  | baseline finish 2008-11-14 → 2008-11-10 |
| 139 | 테이블 매핑정의서 작성 지원 |  | 2008-11-14 A → 2008-11-10 A (-4d) | 34d → 30d |  |  |  | baseline finish 2008-11-14 → 2008-11-10 |
| 140 | 데이터코드 매핑정의서 작성 지원 |  | 2008-11-14 A → 2008-11-10 A (-4d) | 34d → 30d |  |  |  | baseline finish 2008-11-14 → 2008-11-10 |
| 154 | 요구사항추적표 작성 |  | 2008-11-18 A → 2008-11-19 A (+1d) | 2d → 3d |  |  | 132 → 118 | constraint start no earlier than 2008-11-03 → start no earlier than 2008-11-17 |
| 158 | **Build/Unit Test** |  |  | 72d → 71d | 6% → 10% |  |  |  |
| 159 | **추가개발/패키지 커스터마이징 및 Unit Test** |  |  | 62d → 61d |  |  |  |  |
| 168 | 개발 9주차 |  |  |  |  |  |  | constraint start no earlier than 2009-01-28 → start no earlier than 2008-11-17 |
| 173 | **테스트시나리오 작성** |  |  | 62d → 61d |  |  |  |  |
| 177 | UAT시나리오 작성 - 비즈니스모듈2 |  |  |  |  |  |  | constraint start no earlier than 2009-01-28 → start no earlier than 2008-07-21 |
| 185 | **개발단계 품질검증 및 단계완료** |  |  | 58d → 57d |  |  |  |  |
| 200 | **개발 및 Test 검수** |  |  |  |  |  | 55 → 195 |  |
| 205 | 사용자테스트 실시 |  |  | 38d → 39d |  | 1d → 26d |  |  |
| 208 | **ORT(Operation Readiness Test)** | 2009-06-08 → 2009-05-25 (-14d) |  | 25d → 35d |  |  | UAT(User Acceptance Test) 지원 → none | baseline start 2009-06-08 → 2009-05-25 |
| 209 | **구현계획수립** | 2009-06-08 → 2009-05-25 (-14d) | 2009-06-12 → 2009-06-05 (-7d) | 5d → 10d |  | 6d → 16d |  | baseline start 2009-06-08 → 2009-05-25; baseline finish 2009-06-12 → 2009-06-05 |
| 210 | 릴리이즈및비상계획수립 | 2009-06-08 → 2009-05-25 (-14d) | 2009-06-12 → 2009-05-29 (-14d) |  |  | 21d → 31d |  | baseline start 2009-06-08 → 2009-05-25; baseline finish 2009-06-12 → 2009-05-29 |
| 211 | 교육훈련계획수립 | 2009-06-08 → 2009-06-01 (-7d) | 2009-06-12 → 2009-06-05 (-7d) |  |  | 6d → 11d |  | baseline start 2009-06-08 → 2009-06-01; baseline finish 2009-06-12 → 2009-06-05 |

## Version 3 (data date 2008-12-12, saved 2008-12-11, file WBS_02.고객.mpp)

Note of the change: 소공 문서

Last finish stays 2009-07-13. Complete tasks 124 → 79.

Added:

| ID | Task | Duration | Start | Finish | Predecessors | Constraint |
| --- | --- | --- | --- | --- | --- | --- |
| 4 | 업무파트 WBS 정의 | 3d | 2008-07-23 A | 2008-07-25 A |  | start no earlier than 2008-07-23 |
| 16 | 개인고객정보조회 | 4d | 2008-08-11 A | 2008-08-14 A |  | start no earlier than 2008-07-21 |
| 17 | 단체고객정보조회 | 4d | 2008-08-11 A | 2008-08-14 A |  | start no earlier than 2008-07-21 |
| 18 | 개인고객정보등록 | 4d | 2008-08-11 A | 2008-08-14 A |  | start no earlier than 2008-07-21 |
| 19 | 단체고객정보등록 | 4d | 2008-08-11 A | 2008-08-14 A |  | start no earlier than 2008-07-21 |
| 20 | 고객계좌카드정보 및 상담이력관리 | 4d | 2008-08-11 A | 2008-08-14 A |  | start no earlier than 2008-07-21 |
| 21 | 고객안내정보관리 | 4d | 2008-08-11 A | 2008-08-14 A |  | start no earlier than 2008-07-21 |
| 26 | 개인고객정보조회 | 5d | 2008-08-18 A | 2008-08-22 A |  | start no earlier than 2008-07-21 |
| 27 | 단체고객정보조회 | 5d | 2008-08-18 A | 2008-08-22 A |  | start no earlier than 2008-07-21 |
| 28 | 개인고객정보등록 | 5d | 2008-08-18 A | 2008-08-22 A |  | start no earlier than 2008-07-21 |
| 29 | 단체고객정보등록 | 5d | 2008-08-25 A | 2008-08-29 A |  | start no earlier than 2008-08-25 |
| 30 | 고객계좌카드정보 및 상담이력관리 | 5d | 2008-08-25 A | 2008-08-29 A |  | start no earlier than 2008-08-25 |
| 31 | 고객안내정보관리 | 5d | 2008-08-25 A | 2008-08-29 A |  | start no earlier than 2008-08-25 |
| 36 | 대내시스템 인터페이스 목록 작성 | 5d | 2008-08-25 A | 2008-08-29 A |  | start no earlier than 2008-08-25 |
| 37 | 대외시스템 인터페이스 목록 작성 | 5d | 2008-08-25 A | 2008-08-29 A |  | start no earlier than 2008-08-25 |
| 40 | 개인고객정보조회 | 5d | 2008-08-18 A | 2008-08-22 A |  | start no earlier than 2008-07-21 |
| 41 | 단체고객정보조회 | 5d | 2008-08-18 A | 2008-08-22 A |  | start no earlier than 2008-07-21 |
| 42 | 개인고객정보등록 | 5d | 2008-08-18 A | 2008-08-22 A |  | start no earlier than 2008-07-21 |
| 43 | 단체고객정보등록 | 5d | 2008-08-25 A | 2008-08-29 A |  | start no earlier than 2008-08-25 |
| 44 | 고객계좌카드정보 및 상담이력관리 | 5d | 2008-08-25 A | 2008-08-29 A |  | start no earlier than 2008-08-25 |
| 45 | 고객안내정보관리 | 5d | 2008-08-25 A | 2008-08-29 A |  | start no earlier than 2008-08-25 |
| 50 | 개인고객정보조회 | 5d | 2008-09-01 A | 2008-09-05 A |  | start no earlier than 2008-09-01 |
| 51 | 단체고객정보조회 | 5d | 2008-09-01 A | 2008-09-05 A |  | start no earlier than 2008-09-01 |
| 52 | 개인고객정보등록 | 5d | 2008-09-08 A | 2008-09-12 A |  | start no earlier than 2008-09-08 |
| 53 | 단체고객정보등록 | 5d | 2008-09-08 A | 2008-09-12 A |  | start no earlier than 2008-09-08 |
| 54 | 고객계좌카드정보 및 상담이력관리 | 5d | 2008-09-16 A | 2008-09-22 A |  | start no earlier than 2008-09-16 |
| 55 | 고객안내정보관리 | 5d | 2008-09-16 A | 2008-09-22 A |  | start no earlier than 2008-09-16 |
| 74 | 고객응대관리 | 15d | 2008-09-30 A | 2008-10-21 A |  | start no earlier than 2008-07-21 |
| 75 | 접촉정보관리 | 15d | 2008-09-30 A | 2008-10-21 A |  | start no earlier than 2008-07-21 |
| 76 | 통합안내관리 | 23d | 2008-09-30 A | 2008-10-31 A |  | start no earlier than 2008-07-21 |
| 77 | 고객정보관리 | 23d | 2008-09-30 A | 2008-10-31 A |  | start no earlier than 2008-10-14 |
| 78 | 고객공통 | 23d | 2008-09-30 A | 2008-10-31 A |  | start no earlier than 2008-10-14 |
| 79 | 보안카드 | 23d | 2008-09-30 A | 2008-10-31 A |  | start no earlier than 2008-10-14 |
| 80 | 출력레이아웃 작성 | 10d | 2008-11-03 A | 2008-11-14 A | 73 |  |
| 84 | 고객응대관리 | 9d | 2008-10-20 A | 2008-10-30 A |  | finish no earlier than 2008-11-14 |
| 85 | 접촉정보관리 | 9d | 2008-10-20 A | 2008-10-30 A |  | start no earlier than 2008-07-21 |
| 86 | 통합안내관리 | 8.5d | 2008-10-27 A | 2008-11-06 A |  | start no earlier than 2008-07-21 |
| 87 | 고객정보관리 | 7d | 2008-10-27 A | 2008-11-04 A |  | finish no earlier than 2008-11-07 |
| 88 | 고객공통 | 3.5d | 2008-11-03 A | 2008-11-06 A |  | finish no earlier than 2008-11-10 |
| 89 | 보안카드 | 15d | 2008-10-27 A | 2008-11-14 A |  | start no earlier than 2008-10-20 |
| 101 | 대내시스템 인터페이스 레이아웃 작성 | 10d | 2008-11-03 A | 2008-11-14 A |  | start no earlier than 2008-11-03 |
| 102 | 대외시스템 인터페이스 레이아웃 작성 | 10d | 2008-11-03 A | 2008-11-14 A |  | start no earlier than 2008-11-03 |
| 150 | **개발 및 테스트 검수** | 10d | 2009-04-13 | 2009-04-24 | 145 |  |

Removed: 4 업무파트 WBS 작성; 11 현행시스템 화면 및 보고서 설명; 12 기본계약조회; 13 세금우대해지; 14 금융정보보호; 15 계약사항변경; 16 단체기타변경; 17 변경차액관리; 18 계약변경심사; 19 수금사항변경; 20 수금자원실적; 21 보유계약명세; 22 마감/통계; 28 기본계약조회; 29 세금우대해지; 30 금융정보보호; 31 계약사항변경; 32 단체기타변경; 33 변경차액관리; 34 계약변경심사; 35 수금사항변경; 36 수금자원실적; 37 보유계약명세; 38 마감/통계; 43 기본계약조회; 44 세금우대해지; 45 금융정보보호; 46 계약사항변경; 47 단체기타변경; 48 변경차액관리; 49 계약변경심사; 50 수금사항변경; 51 수금자원실적; 52 보유계약명세; 53 마감/통계; 55 대내시스템 인터페이스 목록 작성; 56 Customer Center; 57 Cyber Portal; 58 ARS; 59 방카시스템; 60 이미지시스템; 61 대외시스템 인터페이스 목록 작성; 62 은행 리얼타임 이체; 63 세금우대정보 송수신; 64 생보협회자료 송수신; 66 매핑수행; 68 기본계약조회; 69 세금우대해지; 70 금융정보보호; 71 계약사항변경; 72 단체기타변경; 73 변경차액관리; 74 계약변경심사; 75 수금사항변경; 76 수금자원실적; 77 보유계약명세; 78 마감/통계; 80 기본계약조회; 90 마감/통계; 106 기본계약조회; 107 세금우대해지; 108 금융정보보호; 109 계약사항변경; 110 단체기타변경; 111 변경차액관리; 112 계약변경심사; 113 수금사항변경; 114 수금자원실적; 115 보유계약명세; 116 마감/통계; 117 보고서레이아웃 작성; 121 기본계약조회; 122 세금우대해지; 123 금융정보보호; 124 계약사항변경; 125 단체기타변경; 126 변경차액관리; 127 계약변경심사; 128 수금사항변경; 129 수금자원실적; 130 보유계약명세; 131 마감/통계; 143 대내시스템 인터페이스 레이아웃 작성; 144 Customer Center; 145 Cyber Portal; 146 ARS; 147 방카시스템; 148 이미지시스템; 149 대외시스템 인터페이스 레이아웃 작성; 150 은행 리얼타임 이체; 151 세금우대정보 송수신; 152 생보협회자료 송수신; 200 개발 및 Test 검수

Changed:

| ID | Task | Start | Finish | Duration | Complete | Total float | Predecessors | Other |
| --- | --- | --- | --- | --- | --- | --- | --- | --- |
| 5 | **Analysis** |  | 2008-09-26 A → 2008-09-29 A (+3d) | 43d → 44d |  |  |  | baseline finish 2008-09-26 → 2008-09-29 |
| 32 | 통합거래명세 및 고객서류스캔목록 조회 | 2008-09-08 A → 2008-08-25 A (-14d) | 2008-09-12 A → 2008-08-29 A (-14d) |  |  |  |  | was named 변경차액관리; constraint start no earlier than 2008-09-08 → finish no earlier than 2008-08-29; baseline start 2008-09-08 → 2008-08-25; baseline finish 2008-09-12 → 2008-08-29 |
| 33 | 우수고객관리 | 2008-09-08 A → 2008-08-25 A (-14d) | 2008-09-12 A → 2008-08-29 A (-14d) |  |  |  |  | was named 단체기타변경; constraint start no earlier than 2008-09-08 → finish no earlier than 2008-08-29; baseline start 2008-09-08 → 2008-08-25; baseline finish 2008-09-12 → 2008-08-29 |
| 34 | 보안카드 | 2008-09-01 A → 2008-08-25 A (-7d) | 2008-09-05 A → 2008-08-29 A (-7d) |  |  |  |  | was named 세금우대해지; constraint start no earlier than 2008-09-01 → start no earlier than 2008-08-25; baseline start 2008-09-01 → 2008-08-25; baseline finish 2008-09-05 → 2008-08-29 |
| 35 | **타시스템 인터페이스 요구사항정의** | 2008-08-18 A → 2008-08-25 A (+7d) | 2008-08-22 A → 2008-08-29 A (+7d) |  |  |  |  | baseline start 2008-08-18 → 2008-08-25; baseline finish 2008-08-22 → 2008-08-29 |
| 38 | **매핑** |  | 2008-09-19 A → 2008-09-22 A (+3d) | 24d → 25d |  |  |  | baseline finish 2008-09-19 → 2008-09-22 |
| 46 | 통합거래명세 및 고객서류스캔목록 조회 | 2008-09-16 A → 2008-08-25 A (-22d) | 2008-09-19 A → 2008-08-29 A (-21d) | 4d → 5d |  |  |  | was named 수금사항변경; constraint start no earlier than 2008-09-15 → finish no earlier than 2008-08-29; baseline start 2008-09-16 → 2008-08-25; baseline finish 2008-09-19 → 2008-08-29 |
| 47 | 우수고객관리 | 2008-09-08 A → 2008-08-25 A (-14d) | 2008-09-12 A → 2008-08-29 A (-14d) |  |  |  |  | was named 계약변경심사; constraint start no earlier than 2008-09-08 → finish no earlier than 2008-08-29; baseline start 2008-09-08 → 2008-08-25; baseline finish 2008-09-12 → 2008-08-29 |
| 48 | 보안카드 | 2008-09-01 A → 2008-08-25 A (-7d) | 2008-09-05 A → 2008-08-29 A (-7d) |  |  |  |  | was named 금융정보보호; constraint start no earlier than 2008-09-01 → start no earlier than 2008-08-25; baseline start 2008-09-01 → 2008-08-25; baseline finish 2008-09-05 → 2008-08-29 |
| 49 | **매핑결과 및 GAP 대응방안 수립** |  | 2008-09-19 A → 2008-09-22 A (+3d) | 14d → 15d |  |  |  | baseline finish 2008-09-19 → 2008-09-22 |
| 56 | 통합거래명세 및 고객서류스캔목록 조회 |  |  |  |  |  |  | was named 보유계약명세; constraint start no earlier than 2008-09-16 → finish no earlier than 2008-09-19 |
| 57 | 우수고객관리 |  |  |  |  |  |  | was named 수금자원실적; constraint start no earlier than 2008-09-16 → finish no earlier than 2008-09-19 |
| 58 | 보안카드 | 2008-09-08 A → 2008-09-16 A (+8d) | 2008-09-12 A → 2008-09-19 A (+7d) | 5d → 4d |  |  |  | was named 계약사항변경; constraint start no earlier than 2008-09-08 → start no earlier than 2008-09-16; baseline start 2008-09-08 → 2008-09-16; baseline finish 2008-09-12 → 2008-09-19 |
| 59 | **단계완료** | 2008-09-22 A → 2008-09-23 A (+1d) | 2008-09-26 A → 2008-09-29 A (+3d) |  |  |  |  | baseline start 2008-09-22 → 2008-09-23; baseline finish 2008-09-26 → 2008-09-29 |
| 60 | 요구사항추적표 작성 | 2008-09-22 A → 2008-09-23 A (+1d) | 2008-09-22 A → 2008-09-23 A (+1d) |  |  |  | none → 49 | baseline start 2008-09-22 → 2008-09-23; baseline finish 2008-09-22 → 2008-09-23 |
| 61 | 분석단계산출물 정리(Inspection) | 2008-09-23 A → 2008-09-24 A (+1d) | 2008-09-23 A → 2008-09-24 A (+1d) |  |  |  |  | constraint none → start no earlier than 2008-09-23; baseline start 2008-09-23 → 2008-09-24; baseline finish 2008-09-23 → 2008-09-24 |
| 62 | 고객검토 실시 | 2008-09-24 A → 2008-09-25 A (+1d) | 2008-09-25 A → 2008-09-26 A (+1d) |  |  |  |  | constraint none → start no earlier than 2008-09-24; baseline start 2008-09-24 → 2008-09-25; baseline finish 2008-09-25 → 2008-09-26 |
| 63 | 고객승인 획득 | 2008-09-26 A → 2008-09-29 A (+3d) | 2008-09-26 A → 2008-09-29 A (+3d) |  |  |  |  | constraint none → start no earlier than 2008-09-26; baseline start 2008-09-26 → 2008-09-29; baseline finish 2008-09-26 → 2008-09-29 |
| 65 | **추가개발 설계** |  | 2008-11-14 A → 2008-11-21 A (+7d) | 34d → 39d |  |  |  | baseline finish 2008-11-14 → 2008-11-17 |
| 66 | **데이터코드 설계** | 2008-10-06 A → 2008-09-29 A (-7d) | 2008-10-15 A → 2008-10-31 A (+16d) | 8d → 24d |  |  |  | baseline start 2008-10-06 → 2008-09-29; baseline finish 2008-10-15 → 2008-10-24 |
| 67 | 데이터코드정의서 작성 | 2008-10-06 A → 2008-09-29 A (-7d) | 2008-10-15 A → 2008-10-31 A (+16d) | 8d → 24d |  |  | 63 → none | constraint finish no earlier than 2008-10-15 → finish no earlier than 2008-10-24; baseline start 2008-10-06 → 2008-09-29; baseline finish 2008-10-15 → 2008-10-24 |
| 68 | **데이터베이스 설계** | 2008-10-06 A → 2008-10-13 A (+7d) | 2008-10-15 A → 2008-10-31 A (+16d) | 8d → 15d |  |  |  | baseline start 2008-10-06 → 2008-10-13; baseline finish 2008-10-15 → 2008-10-23 |
| 69 | ERD 작성 | 2008-10-14 A → 2008-10-13 A (-1d) | 2008-10-15 A → 2008-10-31 A (+16d) | 2d → 15d |  |  | none → 63 | constraint start no earlier than 2008-10-14 → start no earlier than 2008-10-13; baseline start 2008-10-14 → 2008-10-13; baseline finish 2008-10-15 → 2008-10-17 |
| 70 | 테이블목록 작성 | 2008-10-14 A → 2008-10-13 A (-1d) | 2008-10-15 A → 2008-10-31 A (+16d) | 2d → 15d |  |  |  | constraint start no earlier than 2008-10-14 → start no earlier than 2008-10-13; baseline start 2008-10-14 → 2008-10-13; baseline finish 2008-10-15 → 2008-10-14 |
| 71 | 테이블레이아웃 작성 | 2008-10-06 A → 2008-10-15 A (+9d) | 2008-10-14 A → 2008-10-31 A (+17d) | 7d → 13d |  |  |  | constraint start no earlier than 2008-10-06 → start no earlier than 2008-10-15; baseline start 2008-10-06 → 2008-10-15; baseline finish 2008-10-14 → 2008-10-23 |
| 72 | **UI 설계** | 2008-09-29 A → 2008-09-30 A (+1d) | 2008-11-07 A → 2008-11-14 A (+7d) | 29d → 33d |  |  |  | baseline start 2008-09-29 → 2008-09-30; baseline finish 2008-11-07 → 2008-11-14 |
| 73 | **화면레이아웃 작성** | 2008-09-29 A → 2008-09-30 A (+1d) | 2008-10-24 A → 2008-10-31 A (+7d) | 19d → 23d |  |  |  | baseline start 2008-09-29 → 2008-09-30; baseline finish 2008-10-24 → 2008-10-31 |
| 81 | **온라인 프로그램 설계** | 2008-10-16 A → 2008-10-20 A (+4d) | 2008-11-07 A → 2008-11-14 A (+7d) | 17d → 20d |  |  |  | baseline start 2008-10-16 → 2008-10-20; baseline finish 2008-11-07 → 2008-11-14 |
| 82 | 온라인프로그램목록 작성 | 2008-10-16 A → 2008-10-27 A (+11d) | 2008-10-22 A → 2008-10-31 A (+9d) |  |  |  | 68 → none | constraint none → start no earlier than 2008-10-27; baseline start 2008-10-16 → 2008-10-27; baseline finish 2008-10-22 → 2008-10-31 |
| 83 | **온라인프로그램사양서 작성** | 2008-10-16 A → 2008-10-20 A (+4d) | 2008-11-07 A → 2008-11-14 A (+7d) | 17d → 20d |  |  |  | baseline start 2008-10-16 → 2008-10-20; baseline finish 2008-11-07 → 2008-11-14 |
| 91 | 배치플로우정의서 작성 |  | 2008-10-31 A → 2008-11-07 A (+7d) | 5d → 10d |  |  |  | baseline finish 2008-10-31 → 2008-11-07 |
| 92 | 배치프로그램목록 작성 | 2008-11-03 A → 2008-10-27 A (-7d) | 2008-11-05 A → 2008-11-07 A (+2d) | 3d → 10d |  |  |  | constraint start no earlier than 2008-11-03 → start no earlier than 2008-10-27; baseline start 2008-11-03 → 2008-10-27; baseline finish 2008-11-05 → 2008-11-07 |
| 94 | **메뉴구조정의** | 2008-11-10 A → 2008-11-17 A (+7d) | 2008-11-14 A → 2008-11-21 A (+7d) |  |  |  |  | baseline start 2008-11-10 → 2008-11-11; baseline finish 2008-11-14 → 2008-11-17 |
| 95 | 메뉴구조도작성 | 2008-11-10 A → 2008-11-17 A (+7d) | 2008-11-14 A → 2008-11-21 A (+7d) |  |  |  |  | baseline start 2008-11-10 → 2008-11-11; baseline finish 2008-11-14 → 2008-11-17 |
| 96 | **컨버젼 설계** |  | 2008-11-10 A → 2008-11-14 A (+4d) | 30d → 34d |  |  |  | baseline finish 2008-11-10 → 2008-11-14 |
| 97 | 테이블 매핑정의서 작성 지원 |  | 2008-11-10 A → 2008-11-14 A (+4d) | 30d → 34d |  |  |  | constraint start no earlier than 2008-09-29 → finish no earlier than 2008-11-14; baseline finish 2008-11-10 → 2008-11-14 |
| 98 | 데이터코드 매핑정의서 작성 지원 |  | 2008-11-10 A → 2008-11-14 A (+4d) | 30d → 34d |  |  |  | baseline finish 2008-11-10 → 2008-11-14 |
| 104 | 요구사항추적표 작성 |  | 2008-11-19 A → 2008-11-18 A (-1d) | 3d → 2d |  |  |  |  |
| 105 | 설계단계산출물 정리(Inspection) |  |  |  |  |  | 104 → none | constraint none → start no earlier than 2008-11-19 |
| 109 | **추가개발/패키지 커스터마이징 및 Unit Test** |  |  |  |  |  | none → 103 |  |
| 111 | 개발 2주차 |  | 2008-12-12 A → 2008-12-12 |  | 100% → 95% | none → 85d |  |  |
| 125 | 테스트목록 및 일정 확정 |  |  |  |  |  |  | constraint start no earlier than 2008-12-08 → none |
| 132 | **사전 E2E Test 실시** |  |  |  |  |  | 109 → none |  |
| 133 | 사전 E2E Test - 주요프로세스1 |  |  |  |  |  | none → 109 |  |
| 138 | Code Inspection 2차 |  |  |  |  | 128d → 93d | none → 137 |  |
| 139 | Code Inspection 3차 |  |  |  |  | 118d → 84d | none → 138 |  |
| 140 | Code Inspection 4차 |  |  |  |  | 110d → 77d | none → 139 |  |
| 141 | Code Inspection 5차 |  |  |  |  | 100d → 68d | none → 140 |  |
| 142 | Code Inspection 6차 |  |  |  |  | 95d → 64d | none → 141 |  |
| 143 | Code Inspection 7차 |  |  |  |  | 84d → 54d | none → 142 |  |
| 144 | 요구사항추적표 작성 |  |  |  |  | 84d → 54d | 136 → 143 |  |
| 145 | **E2E Test(End to End Test)** |  |  |  |  |  | none → 135 |  |
| 154 | **UAT(User Acceptance Test)** | 2009-04-13 → 2008-07-01 (-286d) |  | 39d → 236d |  | 26d → 1d |  |  |
| 155 | 사용자테스트 실시 | 2009-04-13 → 2008-07-01 (-286d) | 2009-06-05 → 2008-08-25 (-284d) |  |  | 26d → 198d |  | constraint start no earlier than 2009-04-13 → none |
| 158 | **ORT(Operation Readiness Test)** | 2009-05-25 → 2009-06-08 (+14d) |  | 35d → 25d |  |  | none → 154 | baseline start 2009-05-25 → 2009-06-08 |
| 159 | **구현계획수립** | 2009-05-25 → 2009-06-08 (+14d) | 2009-06-05 → 2009-06-12 (+7d) | 10d → 5d |  | 16d → 6d |  | baseline start 2009-05-25 → 2009-06-08; baseline finish 2009-06-05 → 2009-06-12 |
| 160 | 릴리이즈및비상계획수립 | 2009-05-25 → 2009-06-08 (+14d) | 2009-05-29 → 2009-06-12 (+14d) |  |  | 31d → 21d |  | baseline start 2009-05-25 → 2009-06-08; baseline finish 2009-05-29 → 2009-06-12 |
| 161 | 교육훈련계획수립 | 2009-06-01 → 2009-06-08 (+7d) | 2009-06-05 → 2009-06-12 (+7d) |  |  | 11d → 6d |  | baseline start 2009-06-01 → 2009-06-08; baseline finish 2009-06-05 → 2009-06-12 |

## Version 4 (data date 2008-12-12, saved 2008-12-11, file WBS_07.CLAIM.mpp)

Note of the change: Merge branch 'master' of github.com:OOSLAB/2015-SE

Last finish stays 2009-07-13. Complete tasks 79 → 91.

Added:

| ID | Task | Duration | Start | Finish | Predecessors | Constraint |
| --- | --- | --- | --- | --- | --- | --- |
| 11 | **현행시스템 화면 및 보고서 설명** | 5d | 2008-07-28 A | 2008-08-01 A |  |  |
| 12 | 사고보험금 청구 | 5d | 2008-07-28 A | 2008-08-01 A |  | start no earlier than 2008-07-28 |
| 13 | 진단서 입력 | 5d | 2008-07-28 A | 2008-08-01 A |  | start no earlier than 2008-07-28 |
| 14 | 보험금 심사 | 5d | 2008-07-28 A | 2008-08-01 A |  | start no earlier than 2008-07-28 |
| 15 | 보험금 지급 | 5d | 2008-07-28 A | 2008-08-01 A |  | start no earlier than 2008-07-28 |
| 16 | 보험금 실사 | 5d | 2008-07-28 A | 2008-08-01 A |  | start no earlier than 2008-07-28 |
| 17 | 조회 및 통계 | 5d | 2008-07-28 A | 2008-08-01 A |  | start no earlier than 2008-07-28 |
| 18 | 안내장 관리 | 5d | 2008-07-28 A | 2008-08-01 A |  | start no earlier than 2008-07-28 |
| 19 | 지급코드 관리 | 5d | 2008-07-28 A | 2008-08-01 A |  | start no earlier than 2008-07-28 |
| 43 | Customer Center | 5d | 2008-08-25 A | 2008-08-29 A |  | start no earlier than 2008-08-25 |
| 44 | Cyber Portal | 5d | 2008-08-25 A | 2008-08-29 A |  | start no earlier than 2008-08-25 |
| 45 | ARS | 5d | 2008-08-25 A | 2008-08-29 A |  | start no earlier than 2008-08-25 |
| 46 | 방카시스템 | 5d | 2008-08-25 A | 2008-08-29 A |  | start no earlier than 2008-08-25 |
| 47 | 이미지시스템 | 5d | 2008-08-25 A | 2008-08-29 A |  | start no earlier than 2008-08-25 |
| 49 | 외부조사업체 인터페이스 | 5d | 2008-08-25 A | 2008-08-29 A |  | start no earlier than 2008-08-25 |
| 50 | 방카 | 5d | 2008-08-25 A | 2008-08-29 A |  | start no earlier than 2008-08-25 |
| 51 | 생보협회 자료 송수신 | 5d | 2008-08-25 A | 2008-08-29 A |  | start no earlier than 2008-08-25 |
| 110 | Customer Center | 10d | 2008-11-03 A | 2008-11-14 A |  | start no earlier than 2008-11-03 |
| 111 | Cyber Portal | 10d | 2008-11-03 A | 2008-11-14 A |  | start no earlier than 2008-11-03 |
| 112 | ARS | 10d | 2008-11-03 A | 2008-11-14 A |  | start no earlier than 2008-11-03 |
| 113 | 방카시스템 | 10d | 2008-11-03 A | 2008-11-14 A |  | start no earlier than 2008-11-03 |
| 114 | 이미지시스템 | 10d | 2008-11-03 A | 2008-11-14 A |  | start no earlier than 2008-11-03 |
| 116 | 외부조사업체 인터페이스 | 10d | 2008-11-03 A | 2008-11-14 A |  | start no earlier than 2008-11-03 |
| 117 | 방카 | 10d | 2008-11-03 A | 2008-11-14 A |  | start no earlier than 2008-11-03 |
| 118 | 생보협회 자료 송수신 | 10d | 2008-11-03 A | 2008-11-14 A |  | start no earlier than 2008-11-03 |
| 166 | **개발 및 Test 검수** | 10d | 2009-04-13 | 2009-04-24 | 161 |  |

Removed: 32 통합거래명세 및 고객서류스캔목록 조회; 33 우수고객관리; 34 보안카드; 46 통합거래명세 및 고객서류스캔목록 조회; 47 우수고객관리; 48 보안카드; 56 통합거래명세 및 고객서류스캔목록 조회; 57 우수고객관리; 58 보안카드; 150 개발 및 테스트 검수

Changed:

| ID | Task | Start | Finish | Duration | Predecessors | Other |
| --- | --- | --- | --- | --- | --- | --- |
| 5 | **Analysis** |  | 2008-09-29 A → 2008-09-26 A (-3d) | 44d → 43d |  | baseline finish 2008-09-29 → 2008-09-26 |
| 25 | 사고접수 및 지급 |  |  |  |  | was named 개인고객정보조회 |
| 26 | 사고연금 |  |  |  |  | was named 단체고객정보조회 |
| 27 | 심사 및 조사 |  |  |  |  | was named 개인고객정보등록 |
| 28 | 조회 및 통계 |  |  |  |  | was named 단체고객정보등록 |
| 29 | 안내장 |  |  |  |  | was named 고객계좌카드정보 및 상담이력관리 |
| 30 | 보장규칙 및 코드관리 |  |  |  |  | was named 고객안내정보관리 |
| 35 | 사고접수 및 지급 |  |  |  |  | was named 개인고객정보조회 |
| 36 | 사고연금 |  |  |  |  | was named 단체고객정보조회 |
| 37 | 심사 및 조사 |  |  |  |  | was named 개인고객정보등록 |
| 38 | 조회 및 통계 |  |  |  |  | was named 단체고객정보등록 |
| 39 | 안내장 |  |  |  |  | was named 고객계좌카드정보 및 상담이력관리 |
| 40 | 보장규칙 및 코드관리 |  |  |  |  | was named 고객안내정보관리 |
| 42 | **대내시스템 인터페이스 목록 작성** |  |  |  |  | constraint start no earlier than 2008-08-25 → none |
| 48 | **대외시스템 인터페이스 목록 작성** |  |  |  |  | constraint start no earlier than 2008-08-25 → none |
| 52 | **매핑** |  | 2008-09-22 A → 2008-09-19 A (-3d) | 25d → 24d |  | baseline finish 2008-09-22 → 2008-09-19 |
| 54 | 사고접수 및 지급 |  |  |  |  | was named 개인고객정보조회 |
| 55 | 사고연금 |  |  |  |  | was named 단체고객정보조회 |
| 56 | 심사 및 조사 |  |  |  |  | was named 개인고객정보등록 |
| 57 | 조회 및 통계 |  |  |  |  | was named 단체고객정보등록 |
| 58 | 안내장 |  |  |  |  | was named 고객계좌카드정보 및 상담이력관리 |
| 59 | 보장규칙 및 코드관리 |  |  |  |  | was named 고객안내정보관리 |
| 60 | **매핑결과 및 GAP 대응방안 수립** |  | 2008-09-22 A → 2008-09-19 A (-3d) | 15d → 14d |  | baseline finish 2008-09-22 → 2008-09-19 |
| 61 | 사고접수 및 지급 |  |  |  |  | was named 개인고객정보조회 |
| 62 | 사고연금 |  |  |  |  | was named 단체고객정보조회 |
| 63 | 심사 및 조사 |  |  |  |  | was named 개인고객정보등록 |
| 64 | 조회 및 통계 |  |  |  |  | was named 단체고객정보등록 |
| 65 | 안내장 |  | 2008-09-22 A → 2008-09-19 A (-3d) | 5d → 4d |  | was named 고객계좌카드정보 및 상담이력관리; baseline finish 2008-09-22 → 2008-09-19 |
| 66 | 보장규칙 및 코드관리 |  | 2008-09-22 A → 2008-09-19 A (-3d) | 5d → 4d |  | was named 고객안내정보관리; baseline finish 2008-09-22 → 2008-09-19 |
| 67 | **단계완료** | 2008-09-23 A → 2008-09-22 A (-1d) | 2008-09-29 A → 2008-09-26 A (-3d) |  |  | baseline start 2008-09-23 → 2008-09-22; baseline finish 2008-09-29 → 2008-09-26 |
| 68 | 요구사항추적표 작성 | 2008-09-23 A → 2008-09-22 A (-1d) | 2008-09-23 A → 2008-09-22 A (-1d) |  |  | constraint start no earlier than 2008-09-22 → start no earlier than 2008-09-08; baseline start 2008-09-23 → 2008-09-22; baseline finish 2008-09-23 → 2008-09-22 |
| 69 | 분석단계산출물 정리(Inspection) | 2008-09-24 A → 2008-09-23 A (-1d) | 2008-09-24 A → 2008-09-23 A (-1d) |  |  | constraint start no earlier than 2008-09-23 → none; baseline start 2008-09-24 → 2008-09-23; baseline finish 2008-09-24 → 2008-09-23 |
| 70 | 고객검토 실시 | 2008-09-25 A → 2008-09-24 A (-1d) | 2008-09-26 A → 2008-09-25 A (-1d) |  |  | constraint start no earlier than 2008-09-24 → none; baseline start 2008-09-25 → 2008-09-24; baseline finish 2008-09-26 → 2008-09-25 |
| 71 | 고객승인 획득 | 2008-09-29 A → 2008-09-26 A (-3d) | 2008-09-29 A → 2008-09-26 A (-3d) |  |  | constraint start no earlier than 2008-09-26 → none; baseline start 2008-09-29 → 2008-09-26; baseline finish 2008-09-29 → 2008-09-26 |
| 73 | **추가개발 설계** |  |  |  |  | baseline finish 2008-11-17 → 2008-11-14 |
| 74 | **데이터코드 설계** | 2008-09-29 A → 2008-10-06 A (+7d) | 2008-10-31 A → 2008-10-15 A (-16d) | 24d → 8d |  | baseline start 2008-09-29 → 2008-10-06; baseline finish 2008-10-24 → 2008-10-15 |
| 75 | 데이터코드정의서 작성 | 2008-09-29 A → 2008-10-06 A (+7d) | 2008-10-31 A → 2008-10-15 A (-16d) | 24d → 8d |  | constraint finish no earlier than 2008-10-24 → start no earlier than 2008-10-06; baseline start 2008-09-29 → 2008-10-06; baseline finish 2008-10-24 → 2008-10-15 |
| 76 | **데이터베이스 설계** | 2008-10-13 A → 2008-09-29 A (-14d) | 2008-10-31 A → 2008-10-15 A (-16d) | 15d → 12d |  | baseline start 2008-10-13 → 2008-09-29; baseline finish 2008-10-23 → 2008-10-15 |
| 77 | ERD 작성 | 2008-10-13 A → 2008-10-14 A (+1d) | 2008-10-31 A → 2008-10-15 A (-16d) | 15d → 2d |  | constraint start no earlier than 2008-10-13 → finish no earlier than 2008-10-15; baseline start 2008-10-13 → 2008-10-14; baseline finish 2008-10-17 → 2008-10-15 |
| 78 | 테이블목록 작성 | 2008-10-13 A → 2008-10-14 A (+1d) | 2008-10-31 A → 2008-10-15 A (-16d) | 15d → 2d |  | constraint start no earlier than 2008-10-13 → start no earlier than 2008-10-14; baseline start 2008-10-13 → 2008-10-14; baseline finish 2008-10-14 → 2008-10-15 |
| 79 | 테이블레이아웃 작성 | 2008-10-15 A → 2008-09-29 A (-16d) | 2008-10-31 A → 2008-10-13 A (-18d) | 13d → 10d |  | constraint start no earlier than 2008-10-15 → start no earlier than 2008-09-29; baseline start 2008-10-15 → 2008-09-29; baseline finish 2008-10-23 → 2008-10-13 |
| 80 | **UI 설계** | 2008-09-30 A → 2008-09-29 A (-1d) | 2008-11-14 A → 2008-11-07 A (-7d) | 33d → 29d |  | baseline start 2008-09-30 → 2008-09-29; baseline finish 2008-11-14 → 2008-11-07 |
| 81 | **화면레이아웃 작성** | 2008-09-30 A → 2008-09-29 A (-1d) | 2008-10-31 A → 2008-10-24 A (-7d) | 23d → 19d |  | baseline start 2008-09-30 → 2008-09-29; baseline finish 2008-10-31 → 2008-10-24 |
| 82 | 사고접수 및 지급 | 2008-09-30 A → 2008-09-29 A (-1d) | 2008-10-21 A → 2008-10-10 A (-11d) | 15d → 9d |  | was named 고객응대관리; baseline start 2008-09-30 → 2008-09-29; baseline finish 2008-10-21 → 2008-10-10 |
| 83 | 사고연금 | 2008-09-30 A → 2008-09-29 A (-1d) | 2008-10-21 A → 2008-10-10 A (-11d) | 15d → 9d |  | was named 접촉정보관리; baseline start 2008-09-30 → 2008-09-29; baseline finish 2008-10-21 → 2008-10-10 |
| 84 | 심사 및 조사 | 2008-09-30 A → 2008-10-20 A (+20d) | 2008-10-31 A → 2008-10-24 A (-7d) | 23d → 5d |  | was named 통합안내관리; constraint start no earlier than 2008-07-21 → start no earlier than 2008-10-20; baseline start 2008-09-30 → 2008-10-20; baseline finish 2008-10-31 → 2008-10-24 |
| 85 | 조회 및 통계 | 2008-09-30 A → 2008-10-13 A (+13d) | 2008-10-31 A → 2008-10-17 A (-14d) | 23d → 5d |  | was named 고객정보관리; constraint start no earlier than 2008-10-14 → start no earlier than 2008-10-13; baseline start 2008-09-30 → 2008-10-13; baseline finish 2008-10-31 → 2008-10-17 |
| 86 | 안내장 | 2008-09-30 A → 2008-10-20 A (+20d) | 2008-10-31 A → 2008-10-24 A (-7d) | 23d → 5d |  | was named 고객공통; constraint start no earlier than 2008-10-14 → start no earlier than 2008-10-20; baseline start 2008-09-30 → 2008-10-20; baseline finish 2008-10-31 → 2008-10-24 |
| 87 | 보장규칙 및 코드관리 | 2008-09-30 A → 2008-10-13 A (+13d) | 2008-10-31 A → 2008-10-17 A (-14d) | 23d → 5d |  | was named 보안카드; constraint start no earlier than 2008-10-14 → start no earlier than 2008-10-13; baseline start 2008-09-30 → 2008-10-13; baseline finish 2008-10-31 → 2008-10-17 |
| 88 | 보고서레이아웃 작성 | 2008-11-03 A → 2008-10-27 A (-7d) | 2008-11-14 A → 2008-11-07 A (-7d) |  |  | was named 출력레이아웃 작성; baseline start 2008-11-03 → 2008-10-27; baseline finish 2008-11-14 → 2008-11-07 |
| 89 | **온라인 프로그램 설계** | 2008-10-20 A → 2008-10-16 A (-4d) |  | 20d → 22d |  | baseline start 2008-10-20 → 2008-10-16; baseline finish 2008-11-14 → 2008-11-07 |
| 90 | 온라인프로그램목록 작성 | 2008-10-27 A → 2008-10-16 A (-11d) | 2008-10-31 A → 2008-10-22 A (-9d) |  | none → 76 | constraint start no earlier than 2008-10-27 → none; baseline start 2008-10-27 → 2008-10-16; baseline finish 2008-10-31 → 2008-10-22 |
| 91 | **온라인프로그램사양서 작성** | 2008-10-20 A → 2008-10-16 A (-4d) |  | 20d → 22d |  | baseline start 2008-10-20 → 2008-10-16; baseline finish 2008-11-14 → 2008-11-07 |
| 92 | 사고접수 및 지급 | 2008-10-20 A → 2008-10-16 A (-4d) | 2008-10-30 A → 2008-10-29 A (-1d) | 9d → 10d |  | was named 고객응대관리; constraint finish no earlier than 2008-11-14 → start no earlier than 2008-07-21; baseline start 2008-10-20 → 2008-10-16; baseline finish 2008-10-31 → 2008-10-29 |
| 93 | 사고연금 | 2008-10-20 A → 2008-10-16 A (-4d) | 2008-10-30 A → 2008-10-29 A (-1d) | 9d → 10d |  | was named 접촉정보관리; baseline start 2008-10-20 → 2008-10-16; baseline finish 2008-10-31 → 2008-10-29 |
| 94 | 심사 및 조사 |  | 2008-11-06 A → 2008-10-31 A (-6d) | 8.5d → 5d |  | was named 통합안내관리; constraint start no earlier than 2008-07-21 → start no earlier than 2008-10-27; baseline finish 2008-11-07 → 2008-10-31 |
| 95 | 조회 및 통계 | 2008-10-27 A → 2008-11-10 A (+14d) | 2008-11-04 A → 2008-11-14 A (+10d) | 7d → 5d |  | was named 고객정보관리; constraint finish no earlier than 2008-11-07 → start no earlier than 2008-11-10; baseline start 2008-10-27 → 2008-11-10; baseline finish 2008-11-07 → 2008-11-14 |
| 96 | 안내장 |  | 2008-11-06 A → 2008-11-07 A (+1d) | 3.5d → 5d |  | was named 고객공통; constraint finish no earlier than 2008-11-10 → start no earlier than 2008-11-03; baseline finish 2008-11-10 → 2008-11-07 |
| 97 | 보장규칙 및 코드관리 | 2008-10-27 A → 2008-11-03 A (+7d) | 2008-11-14 A → 2008-11-07 A (-7d) | 15d → 5d |  | was named 보안카드; constraint start no earlier than 2008-10-20 → start no earlier than 2008-11-03; baseline start 2008-10-27 → 2008-11-03; baseline finish 2008-11-14 → 2008-11-07 |
| 98 | **배치플로우 설계** | 2008-10-27 A → 2008-11-12 A (+16d) |  | 15d → 3d |  |  |
| 99 | 배치플로우정의서 작성 | 2008-10-27 A → 2008-11-12 A (+16d) | 2008-11-07 A → 2008-11-14 A (+7d) | 10d → 3d |  | constraint start no earlier than 2008-10-27 → start no earlier than 2008-11-12; baseline start 2008-10-27 → 2008-11-12; baseline finish 2008-11-07 → 2008-11-14 |
| 100 | 배치프로그램목록 작성 | 2008-10-27 A → 2008-11-12 A (+16d) | 2008-11-07 A → 2008-11-14 A (+7d) | 10d → 3d |  | constraint start no earlier than 2008-10-27 → start no earlier than 2008-11-12; baseline start 2008-10-27 → 2008-11-12; baseline finish 2008-11-07 → 2008-11-14 |
| 101 | 배치프로그램사양서 작성 | 2008-11-03 A → 2008-11-12 A (+9d) |  | 10d → 3d |  | constraint start no earlier than 2008-11-03 → start no earlier than 2008-11-12; baseline start 2008-11-03 → 2008-11-12 |
| 102 | **메뉴구조정의** |  |  |  |  | baseline start 2008-11-11 → 2008-11-10; baseline finish 2008-11-17 → 2008-11-14 |
| 103 | 메뉴구조도작성 |  |  |  |  | baseline start 2008-11-11 → 2008-11-10; baseline finish 2008-11-17 → 2008-11-14 |
| 104 | **컨버젼 설계** |  | 2008-11-14 A → 2008-11-10 A (-4d) | 34d → 30d |  | baseline finish 2008-11-14 → 2008-11-10 |
| 105 | 테이블 매핑정의서 작성 지원 |  | 2008-11-14 A → 2008-11-10 A (-4d) | 34d → 30d |  | constraint finish no earlier than 2008-11-14 → start no earlier than 2008-09-29; baseline finish 2008-11-14 → 2008-11-10 |
| 106 | 데이터코드 매핑정의서 작성 지원 |  | 2008-11-14 A → 2008-11-10 A (-4d) | 34d → 30d |  | baseline finish 2008-11-14 → 2008-11-10 |
| 109 | **대내시스템 인터페이스 레이아웃 작성** |  |  |  |  | constraint start no earlier than 2008-11-03 → none |
| 115 | **대외시스템 인터페이스 레이아웃 작성** |  |  |  |  | constraint start no earlier than 2008-11-03 → none |

| ID | Task | Start | Finish | Duration | Complete | Total float | Predecessors | Other |
| --- | --- | --- | --- | --- | --- | --- | --- | --- |
| 121 | 설계단계산출물 정리(Inspection) |  |  |  |  |  | none → 120 | constraint start no earlier than 2008-11-19 → none |
| 125 | **추가개발/패키지 커스터마이징 및 Unit Test** |  |  |  |  | 85d → 55d | 119 → none |  |
| 127 | 개발 2주차 |  | 2008-12-12 A |  | 95% → 100% | 85d → none |  |  |
| 141 | 테스트목록 및 일정 확정 |  |  |  |  |  |  | constraint none → start no earlier than 2008-12-01 |
| 143 | UAT시나리오 작성 - 비즈니스모듈2 |  |  |  |  |  |  | constraint start no earlier than 2008-07-21 → start no earlier than 2009-01-28 |
| 144 | UAT시나리오 작성 - 비즈니스모듈3 |  |  |  |  |  |  | constraint start no earlier than 2008-11-17 → start no earlier than 2009-02-02 |
| 145 | UAT시나리오 작성 - 비즈니스모듈4 |  |  |  |  |  |  | constraint start no earlier than 2008-12-01 → start no earlier than 2009-02-09 |
| 146 | UAT시나리오 작성 - 비즈니스모듈5 |  |  |  |  |  |  | constraint start no earlier than 2008-12-01 → start no earlier than 2009-02-16 |
| 147 | UAT시나리오 작성 - 비즈니스모듈6 |  |  |  |  |  |  | constraint start no earlier than 2008-12-01 → start no earlier than 2009-02-23 |
| 148 | **사전 E2E Test 실시** |  |  |  |  | 85d → 55d | none → 125 |  |
| 149 | 사전 E2E Test - 주요프로세스1 |  |  |  |  | 85d → 55d | 125 → none |  |
| 154 | Code Inspection 2차 |  |  |  |  | 93d → 128d | 153 → none |  |
| 155 | Code Inspection 3차 |  |  |  |  | 84d → 118d | 154 → none |  |
| 156 | Code Inspection 4차 |  |  |  |  | 77d → 110d | 155 → none |  |
| 157 | Code Inspection 5차 |  |  |  |  | 68d → 100d | 156 → none |  |
| 158 | Code Inspection 6차 |  |  |  |  | 64d → 95d | 157 → none |  |
| 159 | Code Inspection 7차 |  |  |  |  | 54d → 84d | 158 → none |  |
| 160 | 요구사항추적표 작성 |  |  |  |  | 54d → 84d | 159 → 152 |  |
| 161 | **E2E Test(End to End Test)** |  |  |  |  |  | 151 → 150 |  |
| 170 | **UAT(User Acceptance Test)** | 2008-07-01 → 2009-04-13 (+286d) |  | 236d → 39d |  |  |  |  |
| 171 | 사용자테스트 실시 | 2008-07-01 → 2009-04-13 (+286d) | 2008-08-25 → 2009-06-05 (+284d) |  |  | 198d → 1d |  | constraint none → start no earlier than 2009-04-13 |

## Version 5 (data date 2008-12-12, saved 2008-12-12, file WBS_06.지급.mpp)

Note of the change: 소공 문서

Last finish stays 2009-07-13. Complete tasks 91 → 141.

Added:

| ID | Task | Duration | Start | Finish | Constraint |
| --- | --- | --- | --- | --- | --- |
| 20 | 지급공통 | 5d | 2008-07-28 A | 2008-08-01 A | start no earlier than 2008-07-28 |
| 21 | 자동송금 | 5d | 2008-07-28 A | 2008-08-01 A | start no earlier than 2008-07-28 |
| 22 | 채권압류/지급중지 | 5d | 2008-07-28 A | 2008-08-01 A | start no earlier than 2008-07-28 |
| 23 | 지급 명세 및 통계 | 5d | 2008-07-28 A | 2008-08-01 A | start no earlier than 2008-07-28 |
| 24 | 보험계약대출 자동이체 | 5d | 2008-07-28 A | 2008-08-01 A | start no earlier than 2008-07-28 |
| 25 | 마감/결산 | 5d | 2008-07-28 A | 2008-08-01 A | start no earlier than 2008-07-28 |
| 37 | 보험계약대출 및 상환 | 4d | 2008-08-11 A | 2008-08-14 A | start no earlier than 2008-07-21 |
| 38 | 제지급 신청 및 처리 | 4d | 2008-08-11 A | 2008-08-14 A | start no earlier than 2008-07-21 |
| 39 | 지급공통 | 4d | 2008-08-11 A | 2008-08-14 A | start no earlier than 2008-07-21 |
| 40 | 자동송금 | 4d | 2008-08-11 A | 2008-08-14 A | start no earlier than 2008-07-21 |
| 41 | 채권압류/지급중지 | 4d | 2008-08-11 A | 2008-08-14 A | start no earlier than 2008-07-21 |
| 42 | 지급 명세 및 통계 | 4d | 2008-08-11 A | 2008-08-14 A | start no earlier than 2008-07-21 |
| 43 | 보험계약대출 자동이체 | 4d | 2008-08-11 A | 2008-08-14 A | start no earlier than 2008-07-21 |
| 44 | 마감/결산 | 4d | 2008-08-11 A | 2008-08-14 A | start no earlier than 2008-07-21 |
| 55 | 보험계약대출 및 상환 | 5d | 2008-08-18 A | 2008-08-22 A | start no earlier than 2008-07-21 |
| 56 | 제지급 신청 및 처리 | 5d | 2008-08-18 A | 2008-08-22 A | start no earlier than 2008-07-21 |
| 57 | 지급공통 | 5d | 2008-08-18 A | 2008-08-22 A | start no earlier than 2008-07-21 |
| 58 | 자동송금 | 5d | 2008-08-25 A | 2008-08-29 A | start no earlier than 2008-08-25 |
| 59 | 채권압류/지급중지 | 5d | 2008-08-25 A | 2008-08-29 A | start no earlier than 2008-08-25 |
| 60 | 지급 명세 및 통계 | 5d | 2008-08-25 A | 2008-08-29 A | start no earlier than 2008-08-25 |
| 61 | 보험계약대출 자동이체 | 5d | 2008-08-25 A | 2008-08-29 A | start no earlier than 2008-08-25 |
| 62 | 마감/결산 | 5d | 2008-08-25 A | 2008-08-29 A | start no earlier than 2008-08-25 |
| 82 | 보험계약대출 및 상환 | 5d | 2008-08-18 A | 2008-08-22 A | start no earlier than 2008-07-21 |
| 83 | 제지급 신청 및 처리 | 5d | 2008-08-18 A | 2008-08-22 A | start no earlier than 2008-07-21 |
| 84 | 지급공통 | 5d | 2008-08-18 A | 2008-08-22 A | start no earlier than 2008-07-21 |
| 85 | 자동송금 | 5d | 2008-08-25 A | 2008-08-29 A | start no earlier than 2008-08-25 |
| 86 | 채권압류/지급중지 | 5d | 2008-08-25 A | 2008-08-29 A | start no earlier than 2008-08-25 |
| 87 | 지급 명세 및 통계 | 5d | 2008-08-25 A | 2008-08-29 A | start no earlier than 2008-08-25 |
| 88 | 보험계약대출 자동이체 | 5d | 2008-08-25 A | 2008-08-29 A | start no earlier than 2008-08-25 |
| 89 | 마감/결산 | 5d | 2008-08-25 A | 2008-08-29 A | start no earlier than 2008-08-25 |
| 97 | 보험계약대출 및 상환 | 5d | 2008-09-01 A | 2008-09-05 A | start no earlier than 2008-09-01 |
| 98 | 제지급 신청 및 처리 | 5d | 2008-09-01 A | 2008-09-05 A | start no earlier than 2008-09-01 |
| 99 | 지급공통 | 5d | 2008-09-01 A | 2008-09-05 A | start no earlier than 2008-09-01 |
| 100 | 자동송금 | 5d | 2008-09-08 A | 2008-09-12 A | start no earlier than 2008-09-08 |
| 101 | 채권압류/지급중지 | 4d | 2008-09-16 A | 2008-09-19 A | start no earlier than 2008-09-16 |
| 102 | 지급 명세 및 통계 | 4d | 2008-09-16 A | 2008-09-19 A | start no earlier than 2008-09-15 |
| 103 | 보험계약대출 자동이체 | 5d | 2008-09-08 A | 2008-09-12 A | start no earlier than 2008-09-08 |
| 104 | 마감/결산 | 4d | 2008-09-16 A | 2008-09-19 A | start no earlier than 2008-09-16 |
| 126 | 보험계약대출 및 상환 | 9d | 2008-09-29 A | 2008-10-10 A | start no earlier than 2008-07-21 |
| 127 | 제지급 신청 및 처리 | 9d | 2008-09-29 A | 2008-10-10 A | start no earlier than 2008-07-21 |
| 128 | 지급공통 | 9d | 2008-09-29 A | 2008-10-10 A | start no earlier than 2008-07-21 |
| 129 | 자동송금 | 5d | 2008-10-13 A | 2008-10-17 A | start no earlier than 2008-10-13 |
| 130 | 채권압류/지급중지 | 5d | 2008-10-13 A | 2008-10-17 A | start no earlier than 2008-10-13 |
| 131 | 지급 명세 및 통계 | 5d | 2008-10-20 A | 2008-10-24 A | start no earlier than 2008-10-20 |
| 142 | 보험계약대출 및 상환 | 10d | 2008-10-13 A | 2008-10-24 A | start no earlier than 2008-10-13 |
| 143 | 제지급 신청 및 처리 | 10d | 2008-10-13 A | 2008-10-24 A | start no earlier than 2008-10-13 |
| 144 | 지급공통 | 10d | 2008-10-13 A | 2008-10-24 A | start no earlier than 2008-10-13 |
| 145 | 자동송금 | 5d | 2008-11-03 A | 2008-11-07 A | start no earlier than 2008-11-03 |
| 146 | 채권압류/지급중지 | 5d | 2008-11-03 A | 2008-11-07 A | start no earlier than 2008-11-03 |
| 147 | 지급 명세 및 통계 | 5d | 2008-11-03 A | 2008-11-07 A | start no earlier than 2008-11-03 |

Changed:

| ID | Task | Start | Finish | Duration | Predecessors | Other |
| --- | --- | --- | --- | --- | --- | --- |
| 12 | 해약 |  |  |  |  | was named 사고보험금 청구 |
| 13 | 만기 |  |  |  |  | was named 진단서 입력 |
| 14 | 분할 |  |  |  |  | was named 보험금 심사 |
| 15 | 배당 |  |  |  |  | was named 보험금 지급 |
| 16 | 연금 |  |  |  |  | was named 보험금 실사 |
| 17 | 인출 |  |  |  |  | was named 조회 및 통계 |
| 18 | 보험계약대출 및 상환 |  |  |  |  | was named 안내장 관리 |
| 19 | 제지급 신청 및 처리 |  |  |  |  | was named 지급코드 관리 |
| 31 | 해약 |  |  |  |  | was named 사고접수 및 지급 |
| 32 | 만기 |  |  |  |  | was named 사고연금 |
| 33 | 분할 |  |  |  |  | was named 심사 및 조사 |
| 34 | 배당 |  |  |  |  | was named 조회 및 통계 |
| 35 | 연금 |  |  |  |  | was named 안내장 |
| 36 | 인출 |  |  |  |  | was named 보장규칙 및 코드관리 |
| 49 | 해약 |  |  |  |  | was named 사고접수 및 지급 |
| 50 | 만기 |  |  |  |  | was named 사고연금 |
| 51 | 분할 |  |  |  |  | was named 심사 및 조사 |
| 52 | 배당 | 2008-08-25 A → 2008-08-18 A (-7d) | 2008-08-29 A → 2008-08-22 A (-7d) |  |  | was named 조회 및 통계; constraint start no earlier than 2008-08-25 → start no earlier than 2008-07-21; baseline start 2008-08-25 → 2008-08-18; baseline finish 2008-08-29 → 2008-08-22 |
| 53 | 연금 | 2008-08-25 A → 2008-08-18 A (-7d) | 2008-08-29 A → 2008-08-22 A (-7d) |  |  | was named 안내장; constraint start no earlier than 2008-08-25 → start no earlier than 2008-07-21; baseline start 2008-08-25 → 2008-08-18; baseline finish 2008-08-29 → 2008-08-22 |
| 54 | 인출 | 2008-08-25 A → 2008-08-18 A (-7d) | 2008-08-29 A → 2008-08-22 A (-7d) |  |  | was named 보장규칙 및 코드관리; constraint start no earlier than 2008-08-25 → start no earlier than 2008-07-21; baseline start 2008-08-25 → 2008-08-18; baseline finish 2008-08-29 → 2008-08-22 |
| 71 | 은행 리얼타임 이체 |  |  |  |  | was named 외부조사업체 인터페이스 |
| 72 | 세금우대정보 수신 |  |  |  |  | was named 방카 |
| 73 | 자동이체 반송 송수신 |  |  |  |  | was named 생보협회 자료 송수신 |
| 76 | 해약 |  |  |  |  | was named 사고접수 및 지급 |
| 77 | 만기 |  |  |  |  | was named 사고연금 |
| 78 | 분할 |  |  |  |  | was named 심사 및 조사 |
| 79 | 배당 | 2008-08-25 A → 2008-08-18 A (-7d) | 2008-08-29 A → 2008-08-22 A (-7d) |  |  | was named 조회 및 통계; constraint start no earlier than 2008-08-25 → start no earlier than 2008-07-21; baseline start 2008-08-25 → 2008-08-18; baseline finish 2008-08-29 → 2008-08-22 |
| 80 | 연금 | 2008-08-25 A → 2008-08-18 A (-7d) | 2008-08-29 A → 2008-08-22 A (-7d) |  |  | was named 안내장; constraint start no earlier than 2008-08-25 → start no earlier than 2008-07-21; baseline start 2008-08-25 → 2008-08-18; baseline finish 2008-08-29 → 2008-08-22 |
| 81 | 인출 | 2008-08-25 A → 2008-08-18 A (-7d) | 2008-08-29 A → 2008-08-22 A (-7d) |  |  | was named 보장규칙 및 코드관리; constraint start no earlier than 2008-08-25 → start no earlier than 2008-07-21; baseline start 2008-08-25 → 2008-08-18; baseline finish 2008-08-29 → 2008-08-22 |
| 91 | 해약 |  |  |  |  | was named 사고접수 및 지급 |
| 92 | 만기 |  |  |  |  | was named 사고연금 |
| 93 | 분할 | 2008-09-08 A → 2008-09-01 A (-7d) | 2008-09-12 A → 2008-09-05 A (-7d) |  |  | was named 심사 및 조사; constraint start no earlier than 2008-09-08 → start no earlier than 2008-09-01; baseline start 2008-09-08 → 2008-09-01; baseline finish 2008-09-12 → 2008-09-05 |
| 94 | 배당 | 2008-09-08 A → 2008-09-01 A (-7d) | 2008-09-12 A → 2008-09-05 A (-7d) |  |  | was named 조회 및 통계; constraint start no earlier than 2008-09-08 → start no earlier than 2008-09-01; baseline start 2008-09-08 → 2008-09-01; baseline finish 2008-09-12 → 2008-09-05 |
| 95 | 연금 | 2008-09-16 A → 2008-09-08 A (-8d) | 2008-09-19 A → 2008-09-12 A (-7d) | 4d → 5d |  | was named 안내장; constraint start no earlier than 2008-09-16 → start no earlier than 2008-09-08; baseline start 2008-09-16 → 2008-09-08; baseline finish 2008-09-19 → 2008-09-12 |
| 96 | 인출 | 2008-09-16 A → 2008-09-01 A (-15d) | 2008-09-19 A → 2008-09-05 A (-14d) | 4d → 5d |  | was named 보장규칙 및 코드관리; constraint start no earlier than 2008-09-16 → start no earlier than 2008-09-01; baseline start 2008-09-16 → 2008-09-01; baseline finish 2008-09-19 → 2008-09-05 |
| 111 | **추가개발 설계** |  | 2008-11-21 A → 2008-11-14 A (-7d) | 39d → 34d |  |  |
| 112 | **데이터코드 설계** | 2008-10-06 A → 2008-09-29 A (-7d) |  | 8d → 12d |  | baseline start 2008-10-06 → 2008-09-29 |
| 113 | 데이터코드정의서 작성 | 2008-10-06 A → 2008-09-29 A (-7d) |  | 8d → 12d | none → 109 | constraint start no earlier than 2008-10-06 → none; baseline start 2008-10-06 → 2008-09-29 |
| 115 | ERD 작성 | 2008-10-14 A → 2008-09-29 A (-15d) |  | 2d → 12d |  | constraint finish no earlier than 2008-10-15 → none; baseline start 2008-10-14 → 2008-09-29 |
| 117 | 테이블레이아웃 작성 | 2008-09-29 A → 2008-10-06 A (+7d) | 2008-10-13 A → 2008-10-15 A (+2d) | 10d → 8d |  | constraint start no earlier than 2008-09-29 → start no earlier than 2008-10-06; baseline start 2008-09-29 → 2008-10-06; baseline finish 2008-10-13 → 2008-10-15 |
| 118 | **UI 설계** |  | 2008-11-07 A → 2008-10-31 A (-7d) | 29d → 24d |  | baseline finish 2008-11-07 → 2008-10-31 |
| 120 | 해약 |  |  |  |  | was named 사고접수 및 지급 |
| 121 | 만기 |  |  |  |  | was named 사고연금 |
| 122 | 분할 | 2008-10-20 A → 2008-09-29 A (-21d) | 2008-10-24 A → 2008-10-10 A (-14d) | 5d → 9d |  | was named 심사 및 조사; constraint start no earlier than 2008-10-20 → start no earlier than 2008-07-21; baseline start 2008-10-20 → 2008-09-29; baseline finish 2008-10-24 → 2008-10-10 |
| 123 | 배당 | 2008-10-13 A → 2008-10-06 A (-7d) | 2008-10-17 A → 2008-10-10 A (-7d) |  |  | was named 조회 및 통계; constraint start no earlier than 2008-10-13 → start no earlier than 2008-10-06; baseline start 2008-10-13 → 2008-10-06; baseline finish 2008-10-17 → 2008-10-10 |
| 124 | 연금 | 2008-10-20 A → 2008-09-29 A (-21d) | 2008-10-24 A → 2008-10-10 A (-14d) | 5d → 9d |  | was named 안내장; constraint start no earlier than 2008-10-20 → start no earlier than 2008-07-21; baseline start 2008-10-20 → 2008-09-29; baseline finish 2008-10-24 → 2008-10-10 |
| 125 | 인출 | 2008-10-13 A → 2008-10-06 A (-7d) | 2008-10-17 A → 2008-10-10 A (-7d) |  |  | was named 보장규칙 및 코드관리; constraint start no earlier than 2008-10-13 → start no earlier than 2008-10-06; baseline start 2008-10-13 → 2008-10-06; baseline finish 2008-10-17 → 2008-10-10 |
| 132 | 보고서레이아웃 작성 | 2008-10-27 A → 2008-10-20 A (-7d) | 2008-11-07 A → 2008-10-31 A (-7d) |  | 119 → none | constraint none → start no earlier than 2008-10-20; baseline start 2008-10-27 → 2008-10-20; baseline finish 2008-11-07 → 2008-10-31 |
| 133 | **온라인 프로그램 설계** | 2008-10-16 A → 2008-10-13 A (-3d) | 2008-11-14 A → 2008-11-07 A (-7d) | 22d → 20d |  | baseline start 2008-10-16 → 2008-10-13 |
| 134 | 온라인프로그램목록 작성 | 2008-10-16 A → 2008-10-13 A (-3d) | 2008-10-22 A → 2008-10-17 A (-5d) |  | 114 → none | constraint none → start no earlier than 2008-10-13; baseline start 2008-10-16 → 2008-10-13; baseline finish 2008-10-22 → 2008-10-17 |
| 135 | **온라인프로그램사양서 작성** | 2008-10-16 A → 2008-10-13 A (-3d) | 2008-11-14 A → 2008-11-07 A (-7d) | 22d → 20d | 114 → none | baseline start 2008-10-16 → 2008-10-13 |
| 136 | 해약 | 2008-10-16 A → 2008-10-13 A (-3d) | 2008-10-29 A → 2008-10-24 A (-5d) |  |  | was named 사고접수 및 지급; constraint start no earlier than 2008-07-21 → start no earlier than 2008-10-13; baseline start 2008-10-16 → 2008-10-13; baseline finish 2008-10-29 → 2008-10-24 |
| 137 | 만기 | 2008-10-16 A → 2008-10-13 A (-3d) | 2008-10-29 A → 2008-10-24 A (-5d) |  |  | was named 사고연금; constraint start no earlier than 2008-07-21 → start no earlier than 2008-10-13; baseline start 2008-10-16 → 2008-10-13; baseline finish 2008-10-29 → 2008-10-24 |
| 138 | 분할 | 2008-10-27 A → 2008-10-13 A (-14d) | 2008-10-31 A → 2008-10-24 A (-7d) | 5d → 10d |  | was named 심사 및 조사; constraint start no earlier than 2008-10-27 → start no earlier than 2008-10-13; baseline start 2008-10-27 → 2008-10-13; baseline finish 2008-10-31 → 2008-10-24 |
| 139 | 배당 | 2008-11-10 A → 2008-10-27 A (-14d) | 2008-11-14 A → 2008-10-31 A (-14d) |  |  | was named 조회 및 통계; constraint start no earlier than 2008-11-10 → start no earlier than 2008-10-27; baseline start 2008-11-10 → 2008-10-27; baseline finish 2008-11-14 → 2008-10-31 |
| 140 | 연금 | 2008-11-03 A → 2008-10-13 A (-21d) | 2008-11-07 A → 2008-10-24 A (-14d) | 5d → 10d |  | was named 안내장; constraint start no earlier than 2008-11-03 → start no earlier than 2008-10-13; baseline start 2008-11-03 → 2008-10-13; baseline finish 2008-11-07 → 2008-10-24 |
| 141 | 인출 | 2008-11-03 A → 2008-10-27 A (-7d) | 2008-11-07 A → 2008-10-31 A (-7d) |  |  | was named 보장규칙 및 코드관리; constraint start no earlier than 2008-11-03 → start no earlier than 2008-10-27; baseline start 2008-11-03 → 2008-10-27; baseline finish 2008-11-07 → 2008-10-31 |
| 148 | **배치플로우 설계** | 2008-11-12 A → 2008-10-27 A (-16d) |  | 3d → 15d |  |  |
| 149 | 배치플로우정의서 작성 | 2008-11-12 A → 2008-10-27 A (-16d) | 2008-11-14 A → 2008-10-31 A (-14d) | 3d → 5d |  | constraint start no earlier than 2008-11-12 → start no earlier than 2008-10-27; baseline start 2008-11-12 → 2008-10-27; baseline finish 2008-11-14 → 2008-10-31 |
| 150 | 배치프로그램목록 작성 | 2008-11-12 A → 2008-11-03 A (-9d) | 2008-11-14 A → 2008-11-05 A (-9d) |  |  | constraint start no earlier than 2008-11-12 → start no earlier than 2008-11-03; baseline start 2008-11-12 → 2008-11-03; baseline finish 2008-11-14 → 2008-11-05 |
| 151 | 배치프로그램사양서 작성 | 2008-11-12 A → 2008-11-03 A (-9d) |  | 3d → 10d |  | constraint start no earlier than 2008-11-12 → start no earlier than 2008-11-03; baseline start 2008-11-12 → 2008-11-03 |
| 152 | **메뉴구조정의** | 2008-11-17 A → 2008-11-10 A (-7d) | 2008-11-21 A → 2008-11-14 A (-7d) |  |  |  |
| 153 | 메뉴구조도작성 | 2008-11-17 A → 2008-11-10 A (-7d) | 2008-11-21 A → 2008-11-14 A (-7d) |  |  |  |
| 154 | **컨버젼 설계** |  | 2008-11-10 A → 2008-11-14 A (+4d) | 30d → 34d |  | baseline finish 2008-11-10 → 2008-11-14 |
| 155 | 테이블 매핑정의서 작성 지원 |  | 2008-11-10 A → 2008-11-14 A (+4d) | 30d → 34d |  | baseline finish 2008-11-10 → 2008-11-14 |
| 156 | 데이터코드 매핑정의서 작성 지원 |  | 2008-11-10 A → 2008-11-14 A (+4d) | 30d → 34d |  | baseline finish 2008-11-10 → 2008-11-14 |
| 166 | 은행 리얼타임 이체 |  |  |  |  | was named 외부조사업체 인터페이스 |
| 167 | 세금우대정보 수신 |  |  |  |  | was named 방카 |
| 168 | 자동이체 반송 송수신 |  |  |  |  | was named 생보협회 자료 송수신 |
| 190 | 테스트착수준비 |  |  |  |  | constraint start no earlier than 2008-12-01 → none |

| ID | Task | Other |
| --- | --- | --- |
| 193 | UAT시나리오 작성 - 비즈니스모듈2 | constraint start no earlier than 2009-01-28 → start no earlier than 2008-07-21 |
| 194 | UAT시나리오 작성 - 비즈니스모듈3 | constraint start no earlier than 2009-02-02 → start no earlier than 2008-11-17 |
| 195 | UAT시나리오 작성 - 비즈니스모듈4 | constraint start no earlier than 2009-02-09 → start no earlier than 2008-12-01 |
| 196 | UAT시나리오 작성 - 비즈니스모듈5 | constraint start no earlier than 2009-02-16 → start no earlier than 2008-12-01 |
| 197 | UAT시나리오 작성 - 비즈니스모듈6 | constraint start no earlier than 2009-02-23 → start no earlier than 2008-12-01 |

## Version 6 (data date 2008-12-12, saved 2008-12-12, file WBS_08.변액.mpp)

Note of the change: Merge branch 'master' of github.com:OOSLAB/2015-SE

Last finish stays 2009-07-13. Complete tasks 141 → 94.

Added:

| ID | Task | Duration | Start | Finish | Constraint |
| --- | --- | --- | --- | --- | --- |
| 44 | 기간계 수금/보전 | 5d | 2008-08-25 A | 2008-08-29 A | start no earlier than 2008-08-25 |
| 45 | 기간계 지급 | 5d | 2008-08-25 A | 2008-08-29 A | start no earlier than 2008-08-25 |
| 46 | 기간계 회계/마감 | 5d | 2008-08-25 A | 2008-08-29 A | start no earlier than 2008-08-25 |
| 47 | 안내장 | 5d | 2008-08-25 A | 2008-08-29 A | start no earlier than 2008-08-25 |
| 112 | 기간계 신계약 | 10d | 2008-11-10 A | 2008-11-21 A | start no earlier than 2008-11-10 |
| 113 | 기간계 수금/보전 | 10d | 2008-11-10 A | 2008-11-21 A | start no earlier than 2008-11-10 |
| 114 | 기간계 지급 | 10d | 2008-11-10 A | 2008-11-21 A | start no earlier than 2008-11-10 |
| 116 | 안내장 | 10d | 2008-11-10 A | 2008-11-21 A | start no earlier than 2008-11-10 |
| 118 | NFS 월마감 자료 | 13d | 2008-11-10 A | 2008-11-26 A | start no earlier than 2008-11-10 |

Removed: 18 보험계약대출 및 상환; 19 제지급 신청 및 처리; 20 지급공통; 21 자동송금; 22 채권압류/지급중지; 23 지급 명세 및 통계; 24 보험계약대출 자동이체; 25 마감/결산; 39 지급공통; 40 자동송금; 41 채권압류/지급중지; 42 지급 명세 및 통계; 43 보험계약대출 자동이체; 44 마감/결산; 53 연금; 54 인출; 55 보험계약대출 및 상환; 56 제지급 신청 및 처리; 57 지급공통; 58 자동송금; 59 채권압류/지급중지; 60 지급 명세 및 통계; 67 ARS; 69 이미지시스템; 70 대외시스템 인터페이스 목록 작성; 71 은행 리얼타임 이체; 72 세금우대정보 수신; 73 자동이체 반송 송수신; 79 배당; 80 연금; 81 인출; 82 보험계약대출 및 상환; 83 제지급 신청 및 처리; 84 지급공통; 88 보험계약대출 자동이체; 89 마감/결산; 94 배당; 95 연금; 96 인출; 97 보험계약대출 및 상환; 98 제지급 신청 및 처리; 99 지급공통; 103 보험계약대출 자동이체; 104 마감/결산; 124 연금; 126 보험계약대출 및 상환; 127 제지급 신청 및 처리; 128 지급공통; 140 연금; 142 보험계약대출 및 상환; 143 제지급 신청 및 처리; 144 지급공통; 162 ARS; 164 이미지시스템; 165 대외시스템 인터페이스 레이아웃 작성; 166 은행 리얼타임 이체; 167 세금우대정보 수신; 168 자동이체 반송 송수신

Changed:

| ID | Task | Start | Finish | Duration | Predecessors | Other |
| --- | --- | --- | --- | --- | --- | --- |
| 11 | **현행시스템 설명** |  |  |  |  | was named 현행시스템 화면 및 보고서 설명 |
| 12 | 변액 신계약 처리 |  |  |  |  | was named 해약 |
| 13 | 변액 수금/보전 처리 |  |  |  |  | was named 만기 |
| 14 | 변액 지급 처리 |  |  |  |  | was named 분할 |
| 15 | 변액 회계/마감 처리 |  |  |  |  | was named 배당 |
| 16 | 변액 인터페이스 처리 |  |  |  |  | was named 연금 |
| 17 | 변액 온라인 |  |  |  |  | was named 인출 |
| 23 | 변액 신계약 처리 |  |  |  |  | was named 해약 |
| 24 | 변액 수금/보전 처리 |  |  |  |  | was named 만기 |
| 25 | 변액 지급 처리 |  |  |  |  | was named 분할 |
| 26 | 변액 회계/마감 처리 |  |  |  |  | was named 배당 |
| 27 | 변액 인터페이스 처리 |  |  |  |  | was named 연금 |
| 28 | 변액 온라인 |  |  |  |  | was named 인출 |
| 29 | 변액 버퍼/로그파일 생성 처리 |  |  |  |  | was named 보험계약대출 및 상환 |
| 30 | 변액 전일자 작업 처리 |  |  |  |  | was named 제지급 신청 및 처리 |
| 35 | 변액 신계약 처리 |  |  |  |  | was named 해약 |
| 36 | 변액 수금/보전 처리 |  |  |  |  | was named 만기 |
| 37 | 변액 지급 처리 |  |  |  |  | was named 분할 |
| 38 | 변액 회계/마감 처리 |  |  |  |  | was named 배당 |
| 39 | 변액 인터페이스 |  |  |  |  | was named 보험계약대출 자동이체 |
| 40 | 변액 온라인 |  |  |  |  | was named 마감/결산 |
| 43 | 기간계 신계약 |  |  |  |  | was named Customer Center |
| 52 | 변액 신계약 |  |  |  |  | was named 해약 |
| 53 | 변액 수금/보전 |  |  |  |  | was named 만기 |
| 54 | 변액 지급 |  |  |  |  | was named 분할 |
| 55 | 변액 회계/마감 |  |  |  |  | was named 자동송금 |
| 56 | 변액 인터페이스 |  |  |  |  | was named 채권압류/지급중지 |
| 57 | 변액 온라인 |  |  |  |  | was named 지급 명세 및 통계 |
| 59 | 변액 신계약 |  | 2008-09-05 A → 2008-09-10 A (+5d) | 5d → 8d |  | was named 해약; baseline finish 2008-09-05 → 2008-09-10 |
| 60 | 변액 수금/보전 |  | 2008-09-05 A → 2008-09-10 A (+5d) | 5d → 8d |  | was named 만기; baseline finish 2008-09-05 → 2008-09-10 |
| 61 | 변액 지급 |  | 2008-09-05 A → 2008-09-10 A (+5d) | 5d → 8d |  | was named 분할; baseline finish 2008-09-05 → 2008-09-10 |
| 62 | 변액 회계/마감 | 2008-09-08 A → 2008-09-10 A (+2d) | 2008-09-12 A → 2008-09-19 A (+7d) | 5d → 7d |  | was named 자동송금; constraint start no earlier than 2008-09-08 → start no earlier than 2008-09-10; baseline start 2008-09-08 → 2008-09-10; baseline finish 2008-09-12 → 2008-09-19 |
| 63 | 변액 인터페이스 | 2008-09-16 A → 2008-09-10 A (-6d) |  | 4d → 7d |  | was named 채권압류/지급중지; constraint start no earlier than 2008-09-16 → start no earlier than 2008-09-10; baseline start 2008-09-16 → 2008-09-10 |
| 64 | 변액 온라인 | 2008-09-16 A → 2008-09-10 A (-6d) |  | 4d → 7d |  | was named 지급 명세 및 통계; constraint start no earlier than 2008-09-15 → start no earlier than 2008-09-10; baseline start 2008-09-16 → 2008-09-10 |
| 66 | 요구사항추적표 작성 |  |  |  | 58 → none | constraint start no earlier than 2008-09-08 → start no earlier than 2008-09-22 |
| 73 | 데이터코드정의서 작성 |  |  |  |  | constraint none → start no earlier than 2008-09-29 |
| 75 | ERD 작성 |  |  |  |  | constraint none → finish no earlier than 2008-10-15 |
| 76 | 테이블목록 작성 |  |  |  |  | constraint start no earlier than 2008-10-14 → finish no earlier than 2008-10-15 |
| 77 | 테이블레이아웃 작성 |  |  |  |  | constraint start no earlier than 2008-10-06 → finish no earlier than 2008-10-15 |
| 78 | **UI 설계** | 2008-09-29 A → 2008-10-07 A (+8d) | 2008-10-31 A → 2008-11-14 A (+14d) | 24d → 29d |  | baseline start 2008-09-29 → 2008-10-07; baseline finish 2008-10-31 → 2008-11-14 |
| 79 | **화면레이아웃 작성** | 2008-09-29 A → 2008-10-07 A (+8d) | 2008-10-24 A → 2008-10-31 A (+7d) |  |  | baseline start 2008-09-29 → 2008-10-07; baseline finish 2008-10-24 → 2008-10-31 |
| 80 | 계약정보 관련 | 2008-09-29 A → 2008-10-07 A (+8d) | 2008-10-10 A → 2008-10-17 A (+7d) |  |  | was named 해약; constraint start no earlier than 2008-07-21 → finish no earlier than 2008-10-17; baseline start 2008-09-29 → 2008-10-07; baseline finish 2008-10-10 → 2008-10-17 |
| 81 | 펀드정보 관련 | 2008-09-29 A → 2008-10-07 A (+8d) | 2008-10-10 A → 2008-10-17 A (+7d) |  |  | was named 만기; constraint start no earlier than 2008-07-21 → finish no earlier than 2008-10-17; baseline start 2008-09-29 → 2008-10-07; baseline finish 2008-10-10 → 2008-10-17 |
| 82 | 거래정보 관련 | 2008-09-29 A → 2008-10-07 A (+8d) | 2008-10-10 A → 2008-10-17 A (+7d) |  |  | was named 분할; constraint start no earlier than 2008-07-21 → finish no earlier than 2008-10-17; baseline start 2008-09-29 → 2008-10-07; baseline finish 2008-10-10 → 2008-10-17 |
| 83 | 적립금정보 관련 | 2008-10-06 A → 2008-10-20 A (+14d) | 2008-10-10 A → 2008-10-24 A (+14d) |  |  | was named 배당; constraint start no earlier than 2008-10-06 → start no earlier than 2008-10-20; baseline start 2008-10-06 → 2008-10-20; baseline finish 2008-10-10 → 2008-10-24 |
| 84 | 전표정보 관련 | 2008-10-06 A → 2008-10-20 A (+14d) | 2008-10-10 A → 2008-10-24 A (+14d) |  |  | was named 인출; constraint start no earlier than 2008-10-06 → start no earlier than 2008-10-20; baseline start 2008-10-06 → 2008-10-20; baseline finish 2008-10-10 → 2008-10-24 |
| 85 | 자금정보관련 | 2008-10-13 A → 2008-10-20 A (+7d) | 2008-10-17 A → 2008-10-24 A (+7d) |  |  | was named 자동송금; constraint start no earlier than 2008-10-13 → start no earlier than 2008-10-20; baseline start 2008-10-13 → 2008-10-20; baseline finish 2008-10-17 → 2008-10-24 |
| 86 | 코드정보 관련 |  |  |  |  | was named 채권압류/지급중지 |
| 87 | 마감 정보 관련 | 2008-10-20 A → 2008-10-27 A (+7d) | 2008-10-24 A → 2008-10-31 A (+7d) |  | none → 84 | was named 지급 명세 및 통계; constraint start no earlier than 2008-10-20 → none; baseline start 2008-10-20 → 2008-10-27; baseline finish 2008-10-24 → 2008-10-31 |
| 88 | 보고서레이아웃 작성 | 2008-10-20 A → 2008-11-03 A (+14d) | 2008-10-31 A → 2008-11-14 A (+14d) |  | none → 79 | constraint start no earlier than 2008-10-20 → none; baseline start 2008-10-20 → 2008-11-03; baseline finish 2008-10-31 → 2008-11-14 |
| 89 | **온라인 프로그램 설계** | 2008-10-13 A → 2008-10-16 A (+3d) |  | 20d → 17d |  | baseline start 2008-10-13 → 2008-10-16 |
| 90 | 온라인프로그램목록 작성 | 2008-10-13 A → 2008-10-16 A (+3d) | 2008-10-17 A → 2008-10-22 A (+5d) |  | none → 74 | constraint start no earlier than 2008-10-13 → none; baseline start 2008-10-13 → 2008-10-16; baseline finish 2008-10-17 → 2008-10-22 |
| 91 | **온라인프로그램사양서 작성** | 2008-10-13 A → 2008-10-16 A (+3d) |  | 20d → 17d | none → 74 | baseline start 2008-10-13 → 2008-10-16 |
| 92 | 계약정보 관련 | 2008-10-13 A → 2008-10-16 A (+3d) | 2008-10-24 A → 2008-10-29 A (+5d) |  |  | was named 해약; constraint start no earlier than 2008-10-13 → start no earlier than 2008-07-21; baseline start 2008-10-13 → 2008-10-16; baseline finish 2008-10-24 → 2008-10-29 |
| 93 | 펀드정보 관련 | 2008-10-13 A → 2008-10-16 A (+3d) | 2008-10-24 A → 2008-10-29 A (+5d) |  |  | was named 만기; constraint start no earlier than 2008-10-13 → start no earlier than 2008-07-21; baseline start 2008-10-13 → 2008-10-16; baseline finish 2008-10-24 → 2008-10-29 |
| 94 | 거래정보 관련 | 2008-10-13 A → 2008-10-16 A (+3d) | 2008-10-24 A → 2008-10-29 A (+5d) |  |  | was named 분할; constraint start no earlier than 2008-10-13 → start no earlier than 2008-07-21; baseline start 2008-10-13 → 2008-10-16; baseline finish 2008-10-24 → 2008-10-29 |
| 95 | 적립금정보관련 |  |  |  |  | was named 배당 |
| 96 | 전표정보 관련 |  |  |  |  | was named 인출 |
| 97 | 자금정보관련 |  |  |  |  | was named 자동송금 |
| 98 | 코드정보관련 |  |  |  |  | was named 채권압류/지급중지 |
| 99 | 마감정보 관련 |  |  |  |  | was named 지급 명세 및 통계 |
| 101 | 배치프로우 정의서 작성 |  |  |  |  | was named 배치플로우정의서 작성 |
| 102 | 배치프로그램목록 작성 | 2008-11-03 A → 2008-10-27 A (-7d) | 2008-11-05 A → 2008-10-29 A (-7d) |  |  | constraint start no earlier than 2008-11-03 → start no earlier than 2008-10-27; baseline start 2008-11-03 → 2008-10-27; baseline finish 2008-11-05 → 2008-10-29 |
| 103 | 배치프로그램사양서 작성 | 2008-11-03 A → 2008-10-27 A (-7d) |  | 10d → 15d |  | constraint start no earlier than 2008-11-03 → start no earlier than 2008-10-27; baseline start 2008-11-03 → 2008-10-27 |
| 108 | 데이터코드 매핑정의서 작성 지원 | 2008-09-29 A → 2008-10-27 A (+28d) |  | 34d → 15d |  | constraint start no earlier than 2008-09-29 → start no earlier than 2008-10-27; baseline start 2008-09-29 → 2008-10-27 |
| 109 | **타시스템 인터페이스 설계** | 2008-11-03 A → 2008-11-10 A (+7d) | 2008-11-14 A → 2008-11-26 A (+12d) | 10d → 13d |  | baseline start 2008-11-03 → 2008-11-10; baseline finish 2008-11-14 → 2008-11-26 |
| 110 | 인터페이스 목록(상세) 작성 | 2008-11-03 A → 2008-11-10 A (+7d) | 2008-11-07 A → 2008-11-14 A (+7d) |  |  | constraint start no earlier than 2008-11-03 → start no earlier than 2008-11-10; baseline start 2008-11-03 → 2008-11-10; baseline finish 2008-11-07 → 2008-11-14 |
| 111 | **대내시스템 인터페이스 레이아웃 작성** | 2008-11-03 A → 2008-11-10 A (+7d) | 2008-11-14 A → 2008-11-26 A (+12d) | 10d → 13d |  | baseline start 2008-11-03 → 2008-11-10; baseline finish 2008-11-14 → 2008-11-26 |
| 115 | 기간계 회계/마감 | 2008-11-03 A → 2008-11-10 A (+7d) | 2008-11-14 A → 2008-11-21 A (+7d) |  |  | was named Customer Center; constraint start no earlier than 2008-11-03 → start no earlier than 2008-11-10; baseline start 2008-11-03 → 2008-11-10; baseline finish 2008-11-14 → 2008-11-21 |
| 117 | Cyber Portal | 2008-11-03 A → 2008-11-10 A (+7d) | 2008-11-14 A → 2008-11-21 A (+7d) |  |  | constraint start no earlier than 2008-11-03 → start no earlier than 2008-11-10; baseline start 2008-11-03 → 2008-11-10; baseline finish 2008-11-14 → 2008-11-21 |

| ID | Task | Start | Finish | Duration | Total float | Predecessors | Other |
| --- | --- | --- | --- | --- | --- | --- | --- |
| 119 | 방카시스템 | 2008-11-03 A → 2008-11-10 A (+7d) | 2008-11-14 A → 2008-11-21 A (+7d) |  |  |  | constraint start no earlier than 2008-11-03 → start no earlier than 2008-11-10; baseline start 2008-11-03 → 2008-11-10; baseline finish 2008-11-14 → 2008-11-21 |
| 123 | 고객검토 실시 |  |  |  |  |  | constraint none → start no earlier than 2008-11-24 |
| 141 | 테스트착수준비 |  |  |  |  |  | constraint none → start no earlier than 2008-12-01 |
| 142 | 테스트목록 및 일정 확정 |  |  |  |  |  | constraint start no earlier than 2008-12-01 → start no earlier than 2008-12-08 |
| 149 | **사전 E2E Test 실시** |  |  |  | 55d → 65d | 126 → none |  |
| 150 | 사전 E2E Test - 주요프로세스1 |  |  |  | 55d → 65d |  | constraint start no earlier than 2008-12-01 → start no earlier than 2009-03-02 |
| 167 | **개발 및 Test 검수** |  |  |  |  | 162 → none |  |
| 168 | 테스트결과제출 |  |  |  |  |  | constraint none → start no earlier than 2009-04-13 |
| 175 | **ORT(Operation Readiness Test)** | 2009-06-08 → 2009-05-25 (-14d) |  | 25d → 35d |  | 171 → none |  |
| 176 | **구현계획수립** | 2009-06-08 → 2009-05-25 (-14d) | 2009-06-12 → 2009-06-05 (-7d) | 5d → 10d | 6d → 16d |  |  |
| 177 | 릴리이즈및비상계획수립 | 2009-06-08 → 2009-05-25 (-14d) | 2009-06-12 → 2009-05-29 (-14d) |  | 21d → 31d |  |  |
| 178 | 교육훈련계획수립 | 2009-06-08 → 2009-06-01 (-7d) | 2009-06-12 → 2009-06-05 (-7d) |  | 6d → 11d |  |  |

## Version 7 (data date 2008-12-12, saved 2008-12-12, file WBS_04.수금.mpp)

Note of the change: Merge branch 'master' of github.com:OOSLAB/2015-SE

Last finish stays 2009-07-13. Complete tasks 94 → 135.

Added:

| ID | Task | Duration | Start | Finish | Constraint |
| --- | --- | --- | --- | --- | --- |
| 12 | 간이/방문 | 5d | 2008-08-04 A | 2008-08-08 A | start no earlier than 2008-07-21 |
| 14 | 자동이체 | 5d | 2008-08-04 A | 2008-08-08 A |  |
| 16 | 가상계좌 | 5d | 2008-08-04 A | 2008-08-08 A |  |
| 17 | 단체입금 | 5d | 2008-08-04 A | 2008-08-08 A |  |
| 19 | 지로입금 | 5d | 2008-08-04 A | 2008-08-08 A | start no earlier than 2008-07-21 |
| 20 | 보험료반송 | 5d | 2008-08-04 A | 2008-08-08 A | start no earlier than 2008-07-21 |
| 21 | 특별입금 | 5d | 2008-08-04 A | 2008-08-08 A | start no earlier than 2008-07-21 |
| 22 | 영수증관리 | 5d | 2008-08-04 A | 2008-08-08 A | start no earlier than 2008-07-21 |
| 23 | 마감/통계 | 5d | 2008-08-04 A | 2008-08-08 A | start no earlier than 2008-07-21 |
| 31 | 자동이체 | 4d | 2008-08-11 A | 2008-08-14 A |  |
| 33 | 가상계좌 | 4d | 2008-08-11 A | 2008-08-14 A |  |
| 34 | 단체입금 | 4d | 2008-08-11 A | 2008-08-14 A |  |
| 36 | 지로입금 | 4d | 2008-08-11 A | 2008-08-14 A | start no earlier than 2008-07-21 |
| 37 | 보험료반송 | 4d | 2008-08-11 A | 2008-08-14 A | start no earlier than 2008-07-21 |
| 38 | 특별입금 | 4d | 2008-08-11 A | 2008-08-14 A | start no earlier than 2008-07-21 |
| 39 | 영수증관리 | 4d | 2008-08-11 A | 2008-08-14 A | start no earlier than 2008-07-21 |
| 40 | 마감/통계 | 4d | 2008-08-11 A | 2008-08-14 A | start no earlier than 2008-07-21 |
| 45 | 간이/방문 | 5d | 2008-08-18 A | 2008-08-22 A | start no earlier than 2008-07-21 |
| 48 | 즉시이체 | 5d | 2008-08-25 A | 2008-08-29 A | start no earlier than 2008-08-25 |
| 49 | 가상계좌 | 5d | 2008-08-25 A | 2008-08-29 A | start no earlier than 2008-08-25 |
| 50 | 단체입금 | 5d | 2008-08-18 A | 2008-08-22 A | start no earlier than 2008-07-21 |
| 52 | 지로입금 | 5d | 2008-08-18 A | 2008-08-22 A | start no earlier than 2008-07-21 |
| 53 | 보험료반송 | 5d | 2008-08-25 A | 2008-08-29 A | start no earlier than 2008-08-25 |
| 54 | 특별입금 | 5d | 2008-08-25 A | 2008-08-29 A | start no earlier than 2008-08-25 |
| 56 | 마감/통계 | 5d | 2008-08-25 A | 2008-08-29 A | start no earlier than 2008-08-25 |
| 62 | NFS시스템 | 5d | 2008-08-18 A | 2008-08-22 A | start no earlier than 2008-08-18 |
| 63 | **대외시스템 인터페이스 목록 작성** | 5d | 2008-08-18 A | 2008-08-22 A |  |
| 64 | 은행 리얼타임 이체 | 5d | 2008-08-18 A | 2008-08-22 A | start no earlier than 2008-08-18 |
| 66 | 세금우대정보 수신 | 5d | 2008-08-18 A | 2008-08-22 A | start no earlier than 2008-08-18 |
| 67 | 자동이체 송수신 | 5d | 2008-08-18 A | 2008-08-22 A | start no earlier than 2008-08-18 |
| 68 | 가상계좌 이체 | 5d | 2008-08-18 A | 2008-08-22 A | start no earlier than 2008-08-18 |
| 72 | 카드이체 | 5d | 2008-08-18 A | 2008-08-22 A |  |
| 73 | 자동이체 | 5d | 2008-08-18 A | 2008-08-22 A |  |
| 74 | 즉시이체 | 5d | 2008-08-25 A | 2008-08-29 A | start no earlier than 2008-08-25 |
| 80 | 특별입금 | 5d | 2008-08-25 A | 2008-08-29 A | start no earlier than 2008-08-25 |
| 81 | 영수증관리 | 5d | 2008-08-25 A | 2008-08-29 A | start no earlier than 2008-08-25 |
| 82 | 마감/통계 | 5d | 2008-08-25 A | 2008-08-29 A | start no earlier than 2008-08-25 |
| 86 | 자동이체 | 5d | 2008-09-01 A | 2008-09-05 A |  |
| 87 | 즉시이체 | 5d | 2008-09-08 A | 2008-09-12 A | start no earlier than 2008-09-08 |
| 88 | 가상계좌 | 5d | 2008-09-08 A | 2008-09-12 A | start no earlier than 2008-09-08 |
| 89 | 단체입금 | 5d | 2008-09-01 A | 2008-09-05 A | start no earlier than 2008-08-25 |
| 93 | 특별입금 | 4d | 2008-09-16 A | 2008-09-19 A | start no earlier than 2008-09-16 |
| 94 | 영수증관리 | 4d | 2008-09-16 A | 2008-09-19 A | start no earlier than 2008-09-16 |
| 95 | 마감/통계 | 4d | 2008-09-16 A | 2008-09-19 A | start no earlier than 2008-09-16 |
| 111 | 간이/방문 | 9d | 2008-09-29 A | 2008-10-10 A | start no earlier than 2008-07-21 |
| 112 | 카드이체 | 9d | 2008-09-29 A | 2008-10-10 A |  |
| 113 | 자동이체 | 5d | 2008-10-13 A | 2008-10-17 A | finish no earlier than 2008-10-17 |
| 114 | 즉시이체 | 10d | 2008-10-06 A | 2008-10-17 A | finish no earlier than 2008-10-17 |
| 115 | 가상계좌 | 10d | 2008-10-06 A | 2008-10-17 A | finish no earlier than 2008-10-17 |
| 116 | 단체입금 | 9d | 2008-09-29 A | 2008-10-10 A | start no earlier than 2008-09-22 |
| 118 | 지로입금 | 9d | 2008-09-29 A | 2008-10-10 A | start no earlier than 2008-09-29 |
| 119 | 보험료반송 | 5d | 2008-10-20 A | 2008-10-24 A | finish no earlier than 2008-10-24 |
| 131 | 카드이체 | 5d | 2008-10-16 A | 2008-10-22 A |  |
| 132 | 자동이체 | 5d | 2008-10-20 A | 2008-10-24 A | start no earlier than 2008-10-20 |
| 133 | 즉시이체 | 5d | 2008-10-20 A | 2008-10-24 A | start no earlier than 2008-10-20 |
| 134 | 가상계좌 | 5d | 2008-10-16 A | 2008-10-22 A | start no earlier than 2008-10-06 |
| 135 | 단체입금 | 5d | 2008-10-16 A | 2008-10-22 A | start no earlier than 2008-10-06 |
| 136 | 자동대출 | 5d | 2008-10-27 A | 2008-10-31 A | start no earlier than 2008-10-27 |
| 137 | 지로입금 | 5d | 2008-10-16 A | 2008-10-22 A | start no earlier than 2008-10-06 |
| 138 | 보험료반송 | 5d | 2008-10-27 A | 2008-10-31 A | start no earlier than 2008-10-27 |
| 139 | 특별입금 | 5d | 2008-10-27 A | 2008-10-31 A | start no earlier than 2008-10-27 |
| 140 | 영수증관리 | 5d | 2008-11-03 A | 2008-11-07 A | start no earlier than 2008-11-03 |
| 141 | 마감/통계 | 5d | 2008-11-03 A | 2008-11-07 A | start no earlier than 2008-11-03 |
| 158 | **대외시스템 인터페이스 레이아웃 작성** | 5d | 2008-11-10 A | 2008-11-14 A |  |
| 159 | 은행 리얼타임 이체 | 5d | 2008-11-10 A | 2008-11-14 A | start no earlier than 2008-11-10 |
| 160 | 카드사 실시간 승인 | 5d | 2008-11-10 A | 2008-11-14 A | start no earlier than 2008-11-10 |
| 162 | 자동이체 송수신 | 5d | 2008-11-10 A | 2008-11-14 A | start no earlier than 2008-11-10 |
| 163 | 가상계좌 이체 | 5d | 2008-11-10 A | 2008-11-14 A | start no earlier than 2008-11-10 |

Removed: 13 변액 수금/보전 처리; 16 변액 인터페이스 처리; 29 변액 버퍼/로그파일 생성 처리; 35 변액 신계약 처리; 36 변액 수금/보전 처리; 44 기간계 수금/보전; 45 기간계 지급; 46 기간계 회계/마감; 48 Cyber Portal; 59 변액 신계약; 60 변액 수금/보전; 85 자금정보관련; 87 마감 정보 관련; 93 펀드정보 관련; 94 거래정보 관련; 96 전표정보 관련; 97 자금정보관련; 98 코드정보관련; 99 마감정보 관련; 112 기간계 신계약; 113 기간계 수금/보전; 114 기간계 지급; 116 안내장; 118 NFS 월마감 자료

Changed:

| ID | Task | Start | Finish | Duration | Total float | Predecessors | Other |
| --- | --- | --- | --- | --- | --- | --- | --- |
| 6 | **현황평가** |  | 2008-08-05 A → 2008-08-08 A (+3d) | 7d → 10d |  |  | baseline finish 2008-08-05 → 2008-08-08 |
| 9 | **현행시스템분석** | 2008-07-28 A → 2008-08-04 A (+7d) | 2008-08-01 A → 2008-08-08 A (+7d) |  |  | none → 8 | baseline start 2008-07-28 → 2008-08-04; baseline finish 2008-08-01 → 2008-08-08 |
| 10 | 현행시스템분석서 수집 | 2008-07-28 A → 2008-08-04 A (+7d) | 2008-08-01 A → 2008-08-08 A (+7d) |  |  |  | constraint start no earlier than 2008-07-28 → start no earlier than 2008-07-21; baseline start 2008-07-28 → 2008-08-04; baseline finish 2008-08-01 → 2008-08-08 |
| 11 | **현행시스템 화면 및 보고서 설명** | 2008-07-28 A → 2008-08-04 A (+7d) | 2008-08-01 A → 2008-08-08 A (+7d) |  |  |  | was named 현행시스템 설명; baseline start 2008-07-28 → 2008-08-04; baseline finish 2008-08-01 → 2008-08-08 |
| 13 | 카드이체 | 2008-10-13 A → 2008-08-04 A (-70d) | 2008-10-17 A → 2008-08-08 A (-70d) |  |  |  | was named 코드정보 관련; constraint start no earlier than 2008-10-13 → none; baseline start 2008-10-13 → 2008-08-04; baseline finish 2008-10-17 → 2008-08-08 |
| 15 | 즉시이체 | 2008-10-20 A → 2008-08-04 A (-77d) | 2008-10-24 A → 2008-08-08 A (-77d) |  |  |  | was named 전표정보 관련; constraint start no earlier than 2008-10-20 → none; baseline start 2008-10-20 → 2008-08-04; baseline finish 2008-10-24 → 2008-08-08 |
| 18 | 자동대출 | 2008-10-07 A → 2008-08-04 A (-64d) | 2008-10-17 A → 2008-08-08 A (-70d) | 9d → 5d |  |  | was named 계약정보 관련; constraint finish no earlier than 2008-10-17 → start no earlier than 2008-07-21; baseline start 2008-10-07 → 2008-08-04; baseline finish 2008-10-17 → 2008-08-08 |
| 24 | 인터뷰실시 |  |  |  |  | 7 → none | constraint none → start no earlier than 2008-08-04 |
| 29 | 간이/방문 |  |  |  |  |  | was named 변액 전일자 작업 처리 |
| 30 | 카드이체 | 2008-08-25 A → 2008-08-11 A (-14d) | 2008-08-29 A → 2008-08-14 A (-15d) | 5d → 4d |  |  | was named 변액 온라인; constraint start no earlier than 2008-08-25 → none; baseline start 2008-08-25 → 2008-08-11; baseline finish 2008-08-29 → 2008-08-14 |
| 32 | 즉시이체 | 2008-08-18 A → 2008-08-11 A (-7d) | 2008-08-22 A → 2008-08-14 A (-8d) | 5d → 4d |  |  | was named 변액 지급; constraint start no earlier than 2008-07-21 → none; baseline start 2008-08-18 → 2008-08-11; baseline finish 2008-08-22 → 2008-08-14 |
| 35 | 자동대출 | 2008-10-07 A → 2008-08-11 A (-57d) | 2008-10-17 A → 2008-08-14 A (-64d) | 9d → 4d |  |  | was named 펀드정보 관련; constraint finish no earlier than 2008-10-17 → start no earlier than 2008-07-21; baseline start 2008-10-07 → 2008-08-11; baseline finish 2008-10-17 → 2008-08-14 |
| 46 | 카드이체 |  |  |  |  |  | was named 변액 지급 처리; constraint start no earlier than 2008-07-21 → none |
| 47 | 자동이체 |  |  |  |  |  | was named 변액 회계/마감 처리; constraint start no earlier than 2008-07-21 → finish no earlier than 2008-08-22 |
| 51 | 자동대출 | 2008-10-07 A → 2008-08-18 A (-50d) | 2008-10-17 A → 2008-08-22 A (-56d) | 9d → 5d |  |  | was named 거래정보 관련; constraint finish no earlier than 2008-10-17 → start no earlier than 2008-07-21; baseline start 2008-10-07 → 2008-08-18; baseline finish 2008-10-17 → 2008-08-22 |
| 55 | 영수증관리 |  |  |  |  |  | was named 변액 인터페이스 |
| 57 | **타시스템 인터페이스 요구사항정의** | 2008-08-25 A → 2008-08-18 A (-7d) | 2008-08-29 A → 2008-08-22 A (-7d) |  |  | 24 → 27 | baseline start 2008-08-25 → 2008-08-18; baseline finish 2008-08-29 → 2008-08-22 |
| 58 | **대내시스템 인터페이스 목록 작성** | 2008-08-25 A → 2008-08-18 A (-7d) | 2008-08-29 A → 2008-08-22 A (-7d) |  |  |  | baseline start 2008-08-25 → 2008-08-18; baseline finish 2008-08-29 → 2008-08-22 |
| 59 | 사이버창구/ARS | 2008-08-25 A → 2008-08-18 A (-7d) | 2008-08-29 A → 2008-08-22 A (-7d) |  |  |  | was named 기간계 신계약; constraint start no earlier than 2008-08-25 → start no earlier than 2008-08-18; baseline start 2008-08-25 → 2008-08-18; baseline finish 2008-08-29 → 2008-08-22 |
| 60 | TM시스템 | 2008-08-25 A → 2008-08-18 A (-7d) | 2008-08-29 A → 2008-08-22 A (-7d) |  |  |  | was named 안내장; constraint start no earlier than 2008-08-25 → start no earlier than 2008-08-18; baseline start 2008-08-25 → 2008-08-18; baseline finish 2008-08-29 → 2008-08-22 |
| 61 | 방카시스템 | 2008-08-25 A → 2008-08-18 A (-7d) | 2008-08-29 A → 2008-08-22 A (-7d) |  |  |  | constraint start no earlier than 2008-08-25 → start no earlier than 2008-08-18; baseline start 2008-08-25 → 2008-08-18; baseline finish 2008-08-29 → 2008-08-22 |
| 65 | 카드사 실시간 승인 | 2008-07-28 A → 2008-08-18 A (+21d) | 2008-08-01 A → 2008-08-22 A (+21d) |  |  |  | was named 변액 신계약 처리; constraint start no earlier than 2008-07-28 → start no earlier than 2008-08-18; baseline start 2008-07-28 → 2008-08-18; baseline finish 2008-08-01 → 2008-08-22 |
| 71 | 간이/방문 | 2008-08-25 A → 2008-08-18 A (-7d) | 2008-08-29 A → 2008-08-22 A (-7d) |  |  |  | was named 변액 회계/마감; constraint start no earlier than 2008-08-25 → start no earlier than 2008-07-21; baseline start 2008-08-25 → 2008-08-18; baseline finish 2008-08-29 → 2008-08-22 |
| 75 | 가상계좌 | 2008-08-18 A → 2008-08-25 A (+7d) | 2008-08-22 A → 2008-08-29 A (+7d) |  |  |  | was named 변액 신계약; constraint start no earlier than 2008-07-21 → start no earlier than 2008-08-25; baseline start 2008-08-18 → 2008-08-25; baseline finish 2008-08-22 → 2008-08-29 |
| 76 | 단체입금 |  |  |  |  |  | was named 변액 수금/보전; constraint start no earlier than 2008-07-21 → none |
| 77 | 자동대출 | 2008-10-20 A → 2008-08-18 A (-63d) | 2008-10-24 A → 2008-08-22 A (-63d) |  |  |  | was named 적립금정보 관련; constraint start no earlier than 2008-10-20 → start no earlier than 2008-07-21; baseline start 2008-10-20 → 2008-08-18; baseline finish 2008-10-24 → 2008-08-22 |
| 78 | 지로입금 | 2008-08-25 A → 2008-08-18 A (-7d) | 2008-08-29 A → 2008-08-22 A (-7d) |  |  |  | was named 변액 인터페이스; constraint start no earlier than 2008-08-25 → start no earlier than 2008-07-21; baseline start 2008-08-25 → 2008-08-18; baseline finish 2008-08-29 → 2008-08-22 |
| 79 | 보험료반송 |  |  |  |  |  | was named 변액 온라인 |
| 83 | **매핑결과 및 GAP 대응방안 수립** |  |  |  |  | none → 70 |  |
| 84 | 간이/방문 | 2008-09-10 A → 2008-09-01 A (-9d) | 2008-09-19 A → 2008-09-05 A (-14d) | 7d → 5d |  |  | was named 변액 회계/마감; constraint start no earlier than 2008-09-10 → start no earlier than 2008-07-21; baseline start 2008-09-10 → 2008-09-01; baseline finish 2008-09-19 → 2008-09-05 |
| 85 | 카드이체 |  | 2008-09-10 A → 2008-09-05 A (-5d) | 8d → 5d |  |  | was named 변액 지급; constraint start no earlier than 2008-09-01 → none; baseline finish 2008-09-10 → 2008-09-05 |
| 90 | 자동대출 | 2008-10-16 A → 2008-09-01 A (-45d) | 2008-10-29 A → 2008-09-05 A (-54d) | 10d → 5d |  |  | was named 계약정보 관련; constraint start no earlier than 2008-07-21 → start no earlier than 2008-08-25; baseline start 2008-10-16 → 2008-09-01; baseline finish 2008-10-29 → 2008-09-05 |
| 91 | 지로입금 | 2008-09-10 A → 2008-09-01 A (-9d) | 2008-09-19 A → 2008-09-05 A (-14d) | 7d → 5d |  |  | was named 변액 인터페이스; constraint start no earlier than 2008-09-10 → start no earlier than 2008-08-25; baseline start 2008-09-10 → 2008-09-01; baseline finish 2008-09-19 → 2008-09-05 |
| 92 | 보험료반송 | 2008-09-10 A → 2008-09-08 A (-2d) | 2008-09-19 A → 2008-09-12 A (-7d) | 7d → 5d |  |  | was named 변액 온라인; constraint start no earlier than 2008-09-10 → start no earlier than 2008-09-08; baseline start 2008-09-10 → 2008-09-08; baseline finish 2008-09-19 → 2008-09-12 |
| 97 | 요구사항추적표 작성 |  |  |  |  | none → 83 |  |
| 102 | **추가개발 설계** |  | 2008-11-14 A → 2008-11-21 A (+7d) | 34d → 39d |  |  | baseline finish 2008-11-14 → 2008-11-21 |
| 103 | **데이터코드 설계** | 2008-09-29 A → 2008-10-06 A (+7d) |  | 12d → 8d |  |  | baseline start 2008-09-29 → 2008-10-06 |
| 104 | 데이터코드정의서 작성 | 2008-09-29 A → 2008-10-06 A (+7d) |  | 12d → 8d |  |  | constraint start no earlier than 2008-09-29 → finish no earlier than 2008-10-15; baseline start 2008-09-29 → 2008-10-06 |
| 105 | **데이터베이스 설계** | 2008-09-29 A → 2008-10-07 A (+8d) |  | 12d → 7d |  |  | baseline start 2008-09-29 → 2008-10-07 |
| 106 | ERD 작성 | 2008-09-29 A → 2008-10-14 A (+15d) |  | 12d → 2d |  | 100 → none | constraint finish no earlier than 2008-10-15 → start no earlier than 2008-10-14; baseline start 2008-09-29 → 2008-10-14 |
| 107 | 테이블목록 작성 |  |  |  |  |  | constraint finish no earlier than 2008-10-15 → start no earlier than 2008-10-14 |
| 108 | 테이블레이아웃 작성 | 2008-10-06 A → 2008-10-07 A (+1d) |  | 8d → 7d |  |  | constraint finish no earlier than 2008-10-15 → start no earlier than 2008-10-07; baseline start 2008-10-06 → 2008-10-07 |
| 109 | **UI 설계** | 2008-10-07 A → 2008-09-29 A (-8d) | 2008-11-14 A → 2008-11-07 A (-7d) |  |  |  | baseline start 2008-10-07 → 2008-09-29; baseline finish 2008-11-14 → 2008-11-07 |
| 110 | **화면레이아웃 작성** | 2008-10-07 A → 2008-09-29 A (-8d) | 2008-10-31 A → 2008-10-24 A (-7d) |  |  |  | baseline start 2008-10-07 → 2008-09-29; baseline finish 2008-10-31 → 2008-10-24 |
| 117 | 자동대출 | 2008-10-27 A → 2008-10-13 A (-14d) | 2008-10-31 A → 2008-10-17 A (-14d) |  |  |  | was named 적립금정보관련; constraint start no earlier than 2008-10-27 → start no earlier than 2008-10-13; baseline start 2008-10-27 → 2008-10-13; baseline finish 2008-10-31 → 2008-10-17 |
| 120 | 특별입금 | 2008-08-11 A → 2008-10-20 A (+70d) | 2008-08-14 A → 2008-10-24 A (+71d) | 4d → 5d |  |  | was named 변액 신계약 처리; constraint start no earlier than 2008-07-21 → finish no earlier than 2008-10-24; baseline start 2008-08-11 → 2008-10-20; baseline finish 2008-08-14 → 2008-10-24 |
| 121 | 영수증관리 | 2008-08-11 A → 2008-10-20 A (+70d) | 2008-08-14 A → 2008-10-24 A (+71d) | 4d → 5d |  |  | was named 변액 수금/보전 처리; constraint start no earlier than 2008-07-21 → finish no earlier than 2008-10-24; baseline start 2008-08-11 → 2008-10-20; baseline finish 2008-08-14 → 2008-10-24 |
| 122 | 마감/통계 | 2008-08-11 A → 2008-10-20 A (+70d) | 2008-08-14 A → 2008-10-24 A (+71d) | 4d → 5d |  |  | was named 변액 지급 처리; constraint start no earlier than 2008-07-21 → finish no earlier than 2008-10-24; baseline start 2008-08-11 → 2008-10-20; baseline finish 2008-08-14 → 2008-10-24 |
| 123 | **출력레이아웃 작성** | 2008-11-03 A → 2008-10-27 A (-7d) | 2008-11-14 A → 2008-11-07 A (-7d) |  |  |  | was named 보고서레이아웃 작성; baseline start 2008-11-03 → 2008-10-27; baseline finish 2008-11-14 → 2008-11-07 |
| 124 | 보험료영수증(개인/단체) 작성 | 2008-08-11 A → 2008-10-27 A (+77d) | 2008-08-14 A → 2008-11-07 A (+85d) | 4d → 10d |  |  | was named 변액 회계/마감 처리; constraint start no earlier than 2008-07-21 → none; baseline start 2008-08-11 → 2008-10-27; baseline finish 2008-08-14 → 2008-11-07 |
| 125 | 제신청서양식 작성 | 2008-08-11 A → 2008-10-27 A (+77d) | 2008-08-14 A → 2008-11-07 A (+85d) | 4d → 10d |  |  | was named 변액 인터페이스 처리; constraint start no earlier than 2008-07-21 → none; baseline start 2008-08-11 → 2008-10-27; baseline finish 2008-08-14 → 2008-11-07 |
| 126 | 안내장 작성 | 2008-07-28 A → 2008-10-27 A (+91d) | 2008-08-01 A → 2008-11-07 A (+98d) | 5d → 10d |  |  | was named 변액 온라인; constraint start no earlier than 2008-07-28 → start no earlier than 2008-10-27; baseline start 2008-07-28 → 2008-10-27; baseline finish 2008-08-01 → 2008-11-07 |
| 130 | 간이/방문 | 2008-08-11 A → 2008-10-16 A (+66d) | 2008-08-14 A → 2008-10-22 A (+69d) | 4d → 5d |  |  | was named 변액 온라인; baseline start 2008-08-11 → 2008-10-16; baseline finish 2008-08-14 → 2008-10-22 |
| 142 | **배치플로우 설계** |  | 2008-11-14 A → 2008-11-21 A (+7d) | 15d → 20d |  |  | baseline finish 2008-11-14 → 2008-11-21 |
| 143 | 배치플로우정의서 작성 |  |  |  |  |  | was named 배치프로우 정의서 작성 |
| 144 | 배치프로그램목록 작성 | 2008-10-27 A → 2008-11-03 A (+7d) | 2008-10-29 A → 2008-11-05 A (+7d) |  |  |  | constraint start no earlier than 2008-10-27 → start no earlier than 2008-11-03; baseline start 2008-10-27 → 2008-11-03; baseline finish 2008-10-29 → 2008-11-05 |
| 145 | 배치프로그램사양서 작성 | 2008-10-27 A → 2008-11-03 A (+7d) | 2008-11-14 A → 2008-11-21 A (+7d) |  |  |  | constraint start no earlier than 2008-10-27 → start no earlier than 2008-11-03; baseline start 2008-10-27 → 2008-11-03; baseline finish 2008-11-14 → 2008-11-21 |
| 148 | **컨버젼 설계** |  | 2008-11-14 A → 2008-11-18 A (+4d) | 34d → 36d |  |  | baseline finish 2008-11-14 → 2008-11-18 |
| 149 | 테이블 매핑정의서 작성 지원 |  | 2008-11-14 A → 2008-11-18 A (+4d) | 34d → 36d |  |  | baseline finish 2008-11-14 → 2008-11-18 |
| 150 | 데이터코드 매핑정의서 작성 지원 | 2008-10-27 A → 2008-09-29 A (-28d) | 2008-11-14 A → 2008-11-18 A (+4d) | 15d → 36d |  |  | constraint start no earlier than 2008-10-27 → start no earlier than 2008-09-29; baseline start 2008-10-27 → 2008-09-29; baseline finish 2008-11-14 → 2008-11-18 |
| 151 | **타시스템 인터페이스 설계** |  | 2008-11-26 A → 2008-11-14 A (-12d) | 13d → 5d |  |  | baseline finish 2008-11-26 → 2008-11-14 |
| 153 | **대내시스템 인터페이스 레이아웃 작성** |  | 2008-11-26 A → 2008-11-14 A (-12d) | 13d → 5d |  |  | baseline finish 2008-11-26 → 2008-11-14 |
| 154 | 사이버창구/ARS |  | 2008-11-21 A → 2008-11-14 A (-7d) | 10d → 5d |  |  | was named 기간계 회계/마감; baseline finish 2008-11-21 → 2008-11-14 |
| 155 | TM시스템 |  | 2008-11-21 A → 2008-11-14 A (-7d) | 10d → 5d |  |  | was named Cyber Portal; baseline finish 2008-11-21 → 2008-11-14 |
| 156 | 방카시스템 |  | 2008-11-21 A → 2008-11-14 A (-7d) | 10d → 5d |  |  | baseline finish 2008-11-21 → 2008-11-14 |
| 157 | NFS시스템 | 2008-07-28 A → 2008-11-10 A (+105d) | 2008-08-01 A → 2008-11-14 A (+105d) |  |  |  | was named 변액 지급 처리; constraint start no earlier than 2008-07-28 → start no earlier than 2008-11-10; baseline start 2008-07-28 → 2008-11-10; baseline finish 2008-08-01 → 2008-11-14 |
| 161 | 세금우대정보 수신 | 2008-07-28 A → 2008-11-10 A (+105d) | 2008-08-01 A → 2008-11-14 A (+105d) |  |  |  | was named 변액 회계/마감 처리; constraint start no earlier than 2008-07-28 → start no earlier than 2008-11-10; baseline start 2008-07-28 → 2008-11-10; baseline finish 2008-08-01 → 2008-11-14 |
| 167 | 고객검토 실시 |  |  |  |  |  | constraint start no earlier than 2008-11-24 → none |
| 186 | 테스트목록 및 일정 확정 |  |  |  |  |  | constraint start no earlier than 2008-12-08 → none |
| 193 | **사전 E2E Test 실시** |  |  |  | 65d → 55d | none → 170 |  |

| ID | Task | Start | Finish | Duration | Total float | Predecessors | Other |
| --- | --- | --- | --- | --- | --- | --- | --- |
| 194 | 사전 E2E Test - 주요프로세스1 |  |  |  | 65d → 55d |  | constraint start no earlier than 2009-03-02 → start no earlier than 2008-12-01 |
| 211 | **개발 및 Test 검수** |  |  |  |  | none → 206 |  |
| 212 | 테스트결과제출 |  |  |  |  |  | constraint start no earlier than 2009-04-13 → none |
| 215 | **UAT(User Acceptance Test)** |  |  | 39d → 38d | 26d → 1d |  |  |
| 216 | 사용자테스트 실시 |  |  | 39d → 38d | 26d → 1d |  |  |
| 219 | **ORT(Operation Readiness Test)** | 2009-05-25 → 2009-06-08 (+14d) |  | 35d → 25d |  | none → 215 |  |
| 220 | **구현계획수립** | 2009-05-25 → 2009-06-08 (+14d) | 2009-06-05 → 2009-06-12 (+7d) | 10d → 5d | 16d → 6d |  |  |
| 221 | 릴리이즈및비상계획수립 | 2009-05-25 → 2009-06-08 (+14d) | 2009-05-29 → 2009-06-12 (+14d) |  | 31d → 21d |  |  |
| 222 | 교육훈련계획수립 | 2009-06-01 → 2009-06-08 (+7d) | 2009-06-05 → 2009-06-12 (+7d) |  | 11d → 6d |  |  |

## Version 8 (data date 2008-12-12, saved 2008-12-12, file WBS_03.신계약.mpp)

Note of the change: 소공 문서

Last finish stays 2009-07-13. Complete tasks 135 → 214.

Added:

| ID | Task | Duration | Start | Finish | Constraint |
| --- | --- | --- | --- | --- | --- |
| 32 | 단체신계약심사 | 5d | 2008-07-28 A | 2008-08-01 A | start no earlier than 2008-07-28 |
| 33 | 부활심사 | 5d | 2008-07-28 A | 2008-08-01 A | start no earlier than 2008-07-28 |
| 34 | 심사공통조회 | 5d | 2008-07-28 A | 2008-08-01 A | start no earlier than 2008-07-28 |
| 35 | 심사(U/W)관리 | 5d | 2008-07-28 A | 2008-08-01 A | start no earlier than 2008-07-28 |
| 38 | 증권관리 | 5d | 2008-07-28 A | 2008-08-01 A | start no earlier than 2008-07-28 |
| 46 | **청약** | 3d | 2008-08-11 A | 2008-08-13 A |  |
| 57 | **청약서/영수증관리** | 3d | 2008-08-11 A | 2008-08-13 A |  |
| 58 | 신계약양식관리 | 3d | 2008-08-11 A | 2008-08-13 A | start no earlier than 2008-07-21 |
| 59 | 청약서사용관리 | 3d | 2008-08-11 A | 2008-08-13 A | start no earlier than 2008-07-21 |
| 60 | 영수증사용관리 | 3d | 2008-08-11 A | 2008-08-13 A | start no earlier than 2008-07-21 |
| 61 | **반환보험료관리** | 3d | 2008-08-11 A | 2008-08-13 A |  |
| 62 | 반송/청약철회 | 3d | 2008-08-11 A | 2008-08-13 A | start no earlier than 2008-07-21 |
| 63 | 해지 | 3d | 2008-08-11 A | 2008-08-13 A | start no earlier than 2008-07-21 |
| 64 | **계약심사** | 3d | 2008-08-11 A | 2008-08-13 A |  |
| 65 | 개인신계약심사 | 3d | 2008-08-11 A | 2008-08-13 A | start no earlier than 2008-07-21 |
| 66 | 단체신계약심사 | 3d | 2008-08-11 A | 2008-08-13 A | start no earlier than 2008-07-21 |
| 67 | 부활심사 | 3d | 2008-08-11 A | 2008-08-13 A | start no earlier than 2008-07-21 |
| 68 | 심사공통조회 | 3d | 2008-08-11 A | 2008-08-13 A | start no earlier than 2008-07-21 |
| 69 | 심사(U/W)관리 | 3d | 2008-08-11 A | 2008-08-13 A | start no earlier than 2008-07-21 |
| 84 | 청약보험료수납 | 5d | 2008-08-18 A | 2008-08-22 A | start no earlier than 2008-07-21 |
| 85 | 납입서조회 | 5d | 2008-08-18 A | 2008-08-22 A | start no earlier than 2008-07-21 |
| 88 | 심사대상조회 | 5d | 2008-08-18 A | 2008-08-22 A | start no earlier than 2008-07-21 |
| 89 | 심사목록조회 | 5d | 2008-08-18 A | 2008-08-22 A | start no earlier than 2008-07-21 |
| 90 | **청약서/영수증관리** | 5d | 2008-08-18 A | 2008-08-22 A |  |
| 91 | 신계약양식관리 | 5d | 2008-08-18 A | 2008-08-22 A | start no earlier than 2008-07-21 |
| 92 | 청약서사용관리 | 5d | 2008-08-18 A | 2008-08-22 A | start no earlier than 2008-07-21 |
| 93 | 영수증사용관리 | 5d | 2008-08-18 A | 2008-08-22 A | start no earlier than 2008-07-21 |
| 94 | **반환보험료관리** | 5d | 2008-08-18 A | 2008-08-22 A |  |
| 95 | 반송/청약철회 | 5d | 2008-08-18 A | 2008-08-22 A | start no earlier than 2008-07-21 |
| 96 | 해지 | 5d | 2008-08-18 A | 2008-08-22 A | start no earlier than 2008-07-21 |
| 97 | **계약심사** | 5d | 2008-08-25 A | 2008-08-29 A |  |
| 98 | 개인신계약심사 | 5d | 2008-08-25 A | 2008-08-29 A | start no earlier than 2008-08-25 |
| 99 | 단체신계약심사 | 5d | 2008-08-25 A | 2008-08-29 A | start no earlier than 2008-08-25 |
| 100 | 부활심사 | 5d | 2008-08-25 A | 2008-08-29 A | start no earlier than 2008-08-25 |
| 101 | 심사공통조회 | 5d | 2008-08-25 A | 2008-08-29 A | start no earlier than 2008-08-25 |
| 102 | 심사(U/W)관리 | 5d | 2008-08-25 A | 2008-08-29 A | start no earlier than 2008-08-25 |
| 103 | 적부조사 | 5d | 2008-08-25 A | 2008-08-29 A | start no earlier than 2008-08-25 |
| 104 | 진단 | 5d | 2008-08-25 A | 2008-08-29 A | start no earlier than 2008-08-25 |
| 105 | 증권관리 | 5d | 2008-08-25 A | 2008-08-29 A | start no earlier than 2008-08-25 |
| 106 | 마감 | 5d | 2008-08-25 A | 2008-08-29 A | start no earlier than 2008-08-25 |
| 107 | 통계 | 5d | 2008-08-25 A | 2008-08-29 A | start no earlier than 2008-08-25 |
| 113 | 이미지시스템 | 5d | 2008-08-25 A | 2008-08-29 A | start no earlier than 2008-08-25 |
| 118 | 카드사 매입요청 및 매입결과 수신 | 5d | 2008-08-25 A | 2008-08-29 A | start no earlier than 2008-08-25 |
| 123 | **청약** | 5d | 2008-08-18 A | 2008-08-22 A |  |
| 124 | 개인청약 | 5d | 2008-08-18 A | 2008-08-22 A | start no earlier than 2008-08-18 |
| 125 | 단체청약 | 5d | 2008-08-18 A | 2008-08-22 A | start no earlier than 2008-08-18 |
| 126 | 부활청약 | 5d | 2008-08-18 A | 2008-08-22 A | start no earlier than 2008-08-18 |
| 127 | **청약보험료** | 5d | 2008-08-18 A | 2008-08-22 A |  |
| 128 | 청약보험료수납 | 5d | 2008-08-18 A | 2008-08-22 A | start no earlier than 2008-08-18 |
| 129 | 납입서조회 | 5d | 2008-08-18 A | 2008-08-22 A | start no earlier than 2008-08-18 |
| 130 | **신계약일반조회** | 5d | 2008-08-18 A | 2008-08-22 A |  |
| 131 | 계약정보조회 | 5d | 2008-08-18 A | 2008-08-22 A | start no earlier than 2008-08-18 |
| 132 | 심사대상조회 | 5d | 2008-08-18 A | 2008-08-22 A | start no earlier than 2008-08-18 |
| 133 | 심사목록조회 | 5d | 2008-08-18 A | 2008-08-22 A | start no earlier than 2008-08-18 |
| 134 | **청약서/영수증관리** | 5d | 2008-08-18 A | 2008-08-22 A |  |
| 135 | 신계약양식관리 | 5d | 2008-08-18 A | 2008-08-22 A | start no earlier than 2008-08-18 |
| 136 | 청약서사용관리 | 5d | 2008-08-18 A | 2008-08-22 A | start no earlier than 2008-08-18 |
| 137 | 영수증사용관리 | 5d | 2008-08-18 A | 2008-08-22 A | start no earlier than 2008-08-18 |
| 138 | **반환보험료관리** | 5d | 2008-08-18 A | 2008-08-22 A |  |
| 139 | 반송/청약철회 | 5d | 2008-08-18 A | 2008-08-22 A | start no earlier than 2008-08-18 |
| 140 | 해지 | 5d | 2008-08-18 A | 2008-08-22 A | start no earlier than 2008-08-18 |
| 141 | **계약심사** | 5d | 2008-08-25 A | 2008-08-29 A |  |
| 142 | 개인신계약심사 | 5d | 2008-08-25 A | 2008-08-29 A | start no earlier than 2008-08-25 |
| 143 | 단체신계약심사 | 5d | 2008-08-25 A | 2008-08-29 A | start no earlier than 2008-08-25 |
| 144 | 부활심사 | 5d | 2008-08-25 A | 2008-08-29 A | start no earlier than 2008-08-25 |
| 145 | 심사공통조회 | 5d | 2008-08-25 A | 2008-08-29 A | start no earlier than 2008-08-25 |
| 146 | 심사(U/W)관리 | 5d | 2008-08-25 A | 2008-08-29 A | start no earlier than 2008-08-25 |
| 147 | 적부조사 | 5d | 2008-08-25 A | 2008-08-29 A | start no earlier than 2008-08-25 |
| 148 | 진단 | 5d | 2008-08-25 A | 2008-08-29 A | start no earlier than 2008-08-25 |
| 149 | 증권관리 | 5d | 2008-08-25 A | 2008-08-29 A | start no earlier than 2008-08-25 |
| 150 | 마감 | 5d | 2008-08-25 A | 2008-08-29 A | start no earlier than 2008-08-25 |
| 151 | 통계 | 5d | 2008-08-25 A | 2008-08-29 A | start no earlier than 2008-08-25 |
| 153 | **청약** | 5d | 2008-09-01 A | 2008-09-05 A |  |
| 154 | 개인청약 | 5d | 2008-09-01 A | 2008-09-05 A | start no earlier than 2008-09-01 |
| 155 | 단체청약 | 5d | 2008-09-01 A | 2008-09-05 A | start no earlier than 2008-09-01 |
| 156 | 부활청약 | 5d | 2008-09-01 A | 2008-09-05 A | start no earlier than 2008-09-01 |
| 157 | **청약보험료** | 5d | 2008-09-01 A | 2008-09-05 A |  |
| 158 | 청약보험료수납 | 5d | 2008-09-01 A | 2008-09-05 A | start no earlier than 2008-09-01 |
| 159 | 납입서조회 | 5d | 2008-09-01 A | 2008-09-05 A | start no earlier than 2008-09-01 |
| 160 | **신계약일반조회** | 5d | 2008-09-08 A | 2008-09-12 A |  |
| 161 | 계약정보조회 | 5d | 2008-09-08 A | 2008-09-12 A | start no earlier than 2008-09-08 |
| 162 | 심사대상조회 | 5d | 2008-09-08 A | 2008-09-12 A | start no earlier than 2008-09-08 |
| 163 | 심사목록조회 | 5d | 2008-09-08 A | 2008-09-12 A | start no earlier than 2008-09-08 |
| 164 | **청약서/영수증관리** | 5d | 2008-09-08 A | 2008-09-12 A |  |
| 165 | 신계약양식관리 | 5d | 2008-09-08 A | 2008-09-12 A | start no earlier than 2008-09-08 |
| 166 | 청약서사용관리 | 5d | 2008-09-08 A | 2008-09-12 A | start no earlier than 2008-09-08 |
| 167 | 영수증사용관리 | 5d | 2008-09-08 A | 2008-09-12 A | start no earlier than 2008-09-08 |
| 168 | **반환보험료관리** | 5d | 2008-09-08 A | 2008-09-12 A |  |
| 169 | 반송/청약철회 | 5d | 2008-09-08 A | 2008-09-12 A | start no earlier than 2008-09-08 |
| 170 | 해지 | 5d | 2008-09-08 A | 2008-09-12 A | start no earlier than 2008-09-08 |
| 171 | **계약심사** | 5d | 2008-09-08 A | 2008-09-12 A |  |
| 172 | 개인신계약심사 | 5d | 2008-09-08 A | 2008-09-12 A | start no earlier than 2008-09-08 |
| 173 | 단체신계약심사 | 5d | 2008-09-08 A | 2008-09-12 A | start no earlier than 2008-09-08 |
| 174 | 부활심사 | 5d | 2008-09-08 A | 2008-09-12 A | start no earlier than 2008-09-08 |
| 175 | 심사공통조회 | 5d | 2008-09-08 A | 2008-09-12 A | start no earlier than 2008-09-08 |
| 176 | 심사(U/W)관리 | 5d | 2008-09-08 A | 2008-09-12 A | start no earlier than 2008-09-08 |
| 177 | 적부조사 | 4d | 2008-09-16 A | 2008-09-19 A | start no earlier than 2008-09-16 |
| 178 | 진단 | 4d | 2008-09-16 A | 2008-09-19 A | start no earlier than 2008-09-16 |
| 179 | 증권관리 | 4d | 2008-09-16 A | 2008-09-19 A | start no earlier than 2008-09-16 |
| 180 | 마감 | 4d | 2008-09-16 A | 2008-09-19 A | start no earlier than 2008-09-16 |
| 181 | 통계 | 4d | 2008-09-16 A | 2008-09-19 A | start no earlier than 2008-09-16 |
| 197 | **청약** | 10d | 2008-10-06 A | 2008-10-17 A |  |
| 198 | 개인청약 | 10d | 2008-10-06 A | 2008-10-17 A | finish no earlier than 2008-10-17 |
| 199 | 단체청약 | 10d | 2008-10-06 A | 2008-10-17 A | finish no earlier than 2008-10-17 |
| 200 | 부활청약 | 10d | 2008-10-06 A | 2008-10-17 A | finish no earlier than 2008-10-17 |
| 201 | **청약보험료** | 5d | 2008-10-13 A | 2008-10-17 A |  |
| 202 | 청약보험료수납 | 5d | 2008-10-13 A | 2008-10-17 A | start no earlier than 2008-10-13 |
| 203 | 납입서조회 | 5d | 2008-10-13 A | 2008-10-17 A | start no earlier than 2008-10-13 |
| 204 | **신계약일반조회** | 5d | 2008-10-06 A | 2008-10-10 A |  |
| 205 | 계약정보조회 | 5d | 2008-10-06 A | 2008-10-10 A | start no earlier than 2008-10-06 |
| 206 | 심사목록조회 | 5d | 2008-10-06 A | 2008-10-10 A | start no earlier than 2008-10-06 |
| 207 | **청약서/영수증관리** | 5d | 2008-10-13 A | 2008-10-17 A |  |
| 208 | 청약서사용관리 | 5d | 2008-10-13 A | 2008-10-17 A | start no earlier than 2008-10-13 |
| 209 | 영수증사용관리 | 5d | 2008-10-13 A | 2008-10-17 A | start no earlier than 2008-10-13 |
| 210 | **반환보험료관리** | 5d | 2008-10-06 A | 2008-10-10 A |  |
| 211 | 반송/청약철회 | 5d | 2008-10-06 A | 2008-10-10 A | start no earlier than 2008-10-06 |
| 212 | 품질보증해지 | 5d | 2008-10-06 A | 2008-10-10 A | start no earlier than 2008-10-06 |
| 213 | **계약심사** | 5d | 2008-10-13 A | 2008-10-17 A |  |
| 214 | 개인신계약심사 | 5d | 2008-10-13 A | 2008-10-17 A | start no earlier than 2008-10-13 |
| 215 | 단체신계약심사 | 5d | 2008-10-13 A | 2008-10-17 A | start no earlier than 2008-10-13 |
| 216 | 부활심사 | 5d | 2008-10-13 A | 2008-10-17 A | start no earlier than 2008-10-13 |
| 217 | 선심사 | 5d | 2008-10-13 A | 2008-10-17 A | start no earlier than 2008-10-13 |
| 218 | 심사공통조회 | 5d | 2008-10-13 A | 2008-10-17 A | start no earlier than 2008-10-13 |
| 219 | 심사(U/W)관리 | 5d | 2008-10-13 A | 2008-10-17 A | start no earlier than 2008-10-13 |
| 220 | 적부조사 | 5d | 2008-10-13 A | 2008-10-17 A | start no earlier than 2008-10-13 |
| 221 | 진단 | 5d | 2008-10-13 A | 2008-10-17 A | start no earlier than 2008-10-13 |
| 222 | 증권관리 | 5d | 2008-10-20 A | 2008-10-24 A | start no earlier than 2008-10-20 |
| 223 | 마감 | 5d | 2008-10-20 A | 2008-10-24 A | start no earlier than 2008-10-20 |
| 224 | 통계 | 5d | 2008-10-20 A | 2008-10-24 A | start no earlier than 2008-10-20 |
| 227 | 증권양식 작성 | 10d | 2008-10-27 A | 2008-11-07 A |  |
| 232 | **청약** | 9d | 2008-10-16 A | 2008-10-28 A |  |
| 233 | 개인청약 | 9d | 2008-10-16 A | 2008-10-28 A | start no earlier than 2008-07-21 |
| 234 | 단체청약 | 9d | 2008-10-16 A | 2008-10-28 A | start no earlier than 2008-07-21 |
| 235 | 부활청약 | 9d | 2008-10-16 A | 2008-10-28 A | start no earlier than 2008-07-21 |
| 236 | **청약보험료** | 5d | 2008-10-16 A | 2008-10-22 A |  |
| 237 | 청약보험료수납 | 5d | 2008-10-16 A | 2008-10-22 A | start no earlier than 2008-07-21 |
| 238 | 납입서조회 | 5d | 2008-10-16 A | 2008-10-22 A | start no earlier than 2008-07-21 |
| 239 | **신계약일반조회** | 5d | 2008-10-16 A | 2008-10-22 A |  |
| 240 | 계약정보조회 | 5d | 2008-10-16 A | 2008-10-22 A | start no earlier than 2008-07-21 |
| 241 | 심사대상조회 | 5d | 2008-10-16 A | 2008-10-22 A | start no earlier than 2008-07-21 |
| 242 | 심사목록조회 | 5d | 2008-10-16 A | 2008-10-22 A | start no earlier than 2008-07-21 |
| 243 | **청약서/영수증관리** | 5d | 2008-10-16 A | 2008-10-22 A |  |
| 244 | 신계약양식관리 | 5d | 2008-10-16 A | 2008-10-22 A | start no earlier than 2008-07-21 |
| 245 | 청약서사용관리 | 5d | 2008-10-16 A | 2008-10-22 A | start no earlier than 2008-07-21 |
| 246 | 영수증사용관리 | 5d | 2008-10-16 A | 2008-10-22 A | start no earlier than 2008-07-21 |
| 247 | **반환보험료관리** | 5d | 2008-10-16 A | 2008-10-22 A |  |
| 248 | 반송/청약철회 | 5d | 2008-10-16 A | 2008-10-22 A | start no earlier than 2008-07-21 |
| 249 | 해지 | 5d | 2008-10-16 A | 2008-10-22 A | start no earlier than 2008-07-21 |
| 250 | **계약심사** | 10d | 2008-10-16 A | 2008-10-29 A |  |
| 251 | 개인신계약심사 | 10d | 2008-10-16 A | 2008-10-29 A | start no earlier than 2008-07-21 |
| 252 | 단체신계약심사 | 10d | 2008-10-16 A | 2008-10-29 A | start no earlier than 2008-07-21 |
| 253 | 부활심사 | 10d | 2008-10-16 A | 2008-10-29 A | start no earlier than 2008-07-21 |
| 254 | 심사공통조회 | 10d | 2008-10-16 A | 2008-10-29 A | start no earlier than 2008-07-21 |
| 255 | 심사(U/W)관리 | 10d | 2008-10-16 A | 2008-10-29 A | start no earlier than 2008-07-21 |
| 256 | 적부조사 | 10d | 2008-10-27 A | 2008-11-07 A | start no earlier than 2008-10-27 |
| 257 | 진단 | 10d | 2008-10-27 A | 2008-11-07 A | start no earlier than 2008-10-27 |
| 258 | 증권관리 | 10d | 2008-10-27 A | 2008-11-07 A | start no earlier than 2008-10-27 |
| 259 | 마감 | 10d | 2008-10-27 A | 2008-11-07 A | start no earlier than 2008-10-27 |
| 260 | 통계 | 10d | 2008-10-27 A | 2008-11-07 A | start no earlier than 2008-10-27 |
| 275 | Customer Center | 10d | 2008-11-03 A | 2008-11-14 A | start no earlier than 2008-11-03 |
| 277 | 이미지시스템 | 10d | 2008-11-03 A | 2008-11-14 A | start no earlier than 2008-11-03 |
| 282 | 카드사 매입요청 및 매입결과 수신 | 10d | 2008-11-03 A | 2008-11-14 A | start no earlier than 2008-11-03 |

Removed: 29 간이/방문; 31 자동이체; 36 지로입금; 37 보험료반송; 38 특별입금; 39 영수증관리; 40 마감/통계; 45 간이/방문; 50 단체입금; 52 지로입금; 53 보험료반송; 54 특별입금; 56 마감/통계; 67 자동이체 송수신; 71 간이/방문; 78 지로입금; 79 보험료반송; 80 특별입금; 81 영수증관리; 82 마감/통계; 84 간이/방문; 88 가상계좌; 91 지로입금; 92 보험료반송; 93 특별입금; 94 영수증관리; 95 마감/통계; 111 간이/방문; 118 지로입금; 119 보험료반송; 120 특별입금; 121 영수증관리; 122 마감/통계; 126 안내장 작성; 130 간이/방문; 137 지로입금; 138 보험료반송; 139 특별입금; 140 영수증관리; 141 마감/통계; 162 자동이체 송수신

Changed:

| ID | Task | Start | Finish | Duration | Predecessors | Other |
| --- | --- | --- | --- | --- | --- | --- |
| 4 | 업무파트 WBS 작성 |  |  |  |  | was named 업무파트 WBS 정의 |
| 6 | **현황평가** |  | 2008-08-08 A → 2008-08-05 A (-3d) | 10d → 7d |  | baseline finish 2008-08-08 → 2008-08-05 |
| 9 | **현행시스템분석** | 2008-08-04 A → 2008-07-28 A (-7d) | 2008-08-08 A → 2008-08-01 A (-7d) |  | 8 → none | baseline start 2008-08-04 → 2008-07-28; baseline finish 2008-08-08 → 2008-08-01 |
| 10 | 현행시스템분석서 수집 | 2008-08-04 A → 2008-07-28 A (-7d) | 2008-08-08 A → 2008-08-01 A (-7d) |  |  | constraint start no earlier than 2008-07-21 → start no earlier than 2008-07-28; baseline start 2008-08-04 → 2008-07-28; baseline finish 2008-08-08 → 2008-08-01 |
| 11 | **현행시스템 화면 및 보고서 설명** | 2008-08-04 A → 2008-07-28 A (-7d) | 2008-08-08 A → 2008-08-01 A (-7d) |  |  | baseline start 2008-08-04 → 2008-07-28; baseline finish 2008-08-08 → 2008-08-01 |
| 12 | **청약** | 2008-08-18 A → 2008-07-28 A (-21d) | 2008-08-22 A → 2008-08-01 A (-21d) |  |  | was named 카드이체; baseline start 2008-08-18 → 2008-07-28; baseline finish 2008-08-22 → 2008-08-01 |
| 13 | 개인청약 | 2008-08-25 A → 2008-07-28 A (-28d) | 2008-08-29 A → 2008-08-01 A (-28d) |  |  | was named 즉시이체; constraint start no earlier than 2008-08-25 → start no earlier than 2008-07-28; baseline start 2008-08-25 → 2008-07-28; baseline finish 2008-08-29 → 2008-08-01 |
| 14 | 단체청약 | 2008-08-18 A → 2008-07-28 A (-21d) | 2008-08-22 A → 2008-08-01 A (-21d) |  |  | was named 자동이체; constraint finish no earlier than 2008-08-22 → start no earlier than 2008-07-28; baseline start 2008-08-18 → 2008-07-28; baseline finish 2008-08-22 → 2008-08-01 |
| 15 | 부활청약 | 2008-08-04 A → 2008-07-28 A (-7d) | 2008-08-08 A → 2008-08-01 A (-7d) |  |  | was named 간이/방문; constraint start no earlier than 2008-07-21 → start no earlier than 2008-07-28; baseline start 2008-08-04 → 2008-07-28; baseline finish 2008-08-08 → 2008-08-01 |
| 16 | **청약보험료** | 2008-08-25 A → 2008-07-28 A (-28d) | 2008-08-29 A → 2008-08-01 A (-28d) |  |  | was named 가상계좌; constraint start no earlier than 2008-08-25 → none; baseline start 2008-08-25 → 2008-07-28; baseline finish 2008-08-29 → 2008-08-01 |
| 17 | 청약보험료수납 | 2008-08-25 A → 2008-07-28 A (-28d) | 2008-08-29 A → 2008-08-01 A (-28d) |  |  | was named 영수증관리; constraint start no earlier than 2008-08-25 → start no earlier than 2008-07-28; baseline start 2008-08-25 → 2008-07-28; baseline finish 2008-08-29 → 2008-08-01 |
| 18 | 납입서조회 | 2008-08-11 A → 2008-07-28 A (-14d) | 2008-08-14 A → 2008-08-01 A (-13d) | 4d → 5d |  | was named 카드이체; constraint none → start no earlier than 2008-07-28; baseline start 2008-08-11 → 2008-07-28; baseline finish 2008-08-14 → 2008-08-01 |
| 19 | **신계약일반조회** | 2008-08-11 A → 2008-07-28 A (-14d) | 2008-08-14 A → 2008-08-01 A (-13d) | 4d → 5d |  | was named 즉시이체; baseline start 2008-08-11 → 2008-07-28; baseline finish 2008-08-14 → 2008-08-01 |
| 20 | 계약정보조회 | 2008-08-11 A → 2008-07-28 A (-14d) | 2008-08-14 A → 2008-08-01 A (-13d) | 4d → 5d |  | was named 가상계좌; constraint none → start no earlier than 2008-07-28; baseline start 2008-08-11 → 2008-07-28; baseline finish 2008-08-14 → 2008-08-01 |
| 21 | 심사대상조회 | 2008-08-11 A → 2008-07-28 A (-14d) | 2008-08-14 A → 2008-08-01 A (-13d) | 4d → 5d |  | was named 단체입금; constraint none → start no earlier than 2008-07-28; baseline start 2008-08-11 → 2008-07-28; baseline finish 2008-08-14 → 2008-08-01 |
| 22 | 심사목록조회 | 2008-08-18 A → 2008-07-28 A (-21d) | 2008-08-22 A → 2008-08-01 A (-21d) |  |  | was named 카드이체; constraint none → start no earlier than 2008-07-28; baseline start 2008-08-18 → 2008-07-28; baseline finish 2008-08-22 → 2008-08-01 |
| 23 | **청약서/영수증관리** | 2008-08-18 A → 2008-07-28 A (-21d) | 2008-08-22 A → 2008-08-01 A (-21d) |  |  | was named 자동이체; baseline start 2008-08-18 → 2008-07-28; baseline finish 2008-08-22 → 2008-08-01 |
| 24 | 신계약양식관리 | 2008-08-25 A → 2008-07-28 A (-28d) | 2008-08-29 A → 2008-08-01 A (-28d) |  |  | was named 즉시이체; constraint start no earlier than 2008-08-25 → start no earlier than 2008-07-28; baseline start 2008-08-25 → 2008-07-28; baseline finish 2008-08-29 → 2008-08-01 |
| 25 | 청약서사용관리 | 2008-08-25 A → 2008-07-28 A (-28d) | 2008-08-29 A → 2008-08-01 A (-28d) |  |  | was named 가상계좌; constraint start no earlier than 2008-08-25 → start no earlier than 2008-07-28; baseline start 2008-08-25 → 2008-07-28; baseline finish 2008-08-29 → 2008-08-01 |
| 26 | 영수증사용관리 | 2008-08-18 A → 2008-07-28 A (-21d) | 2008-08-22 A → 2008-08-01 A (-21d) |  |  | was named 단체입금; constraint none → start no earlier than 2008-07-28; baseline start 2008-08-18 → 2008-07-28; baseline finish 2008-08-22 → 2008-08-01 |
| 27 | **반환보험료관리** | 2008-09-01 A → 2008-07-28 A (-35d) | 2008-09-05 A → 2008-08-01 A (-35d) |  |  | was named 카드이체; baseline start 2008-09-01 → 2008-07-28; baseline finish 2008-09-05 → 2008-08-01 |
| 28 | 반송/청약철회 | 2008-09-01 A → 2008-07-28 A (-35d) | 2008-09-05 A → 2008-08-01 A (-35d) |  |  | was named 자동이체; constraint none → start no earlier than 2008-07-28; baseline start 2008-09-01 → 2008-07-28; baseline finish 2008-09-05 → 2008-08-01 |
| 29 | 해지 | 2008-09-08 A → 2008-07-28 A (-42d) | 2008-09-12 A → 2008-08-01 A (-42d) |  |  | was named 즉시이체; constraint start no earlier than 2008-09-08 → start no earlier than 2008-07-28; baseline start 2008-09-08 → 2008-07-28; baseline finish 2008-09-12 → 2008-08-01 |
| 30 | **계약심사** | 2008-08-04 A → 2008-07-28 A (-7d) | 2008-08-08 A → 2008-08-01 A (-7d) |  |  | was named 지로입금; constraint start no earlier than 2008-07-21 → none; baseline start 2008-08-04 → 2008-07-28; baseline finish 2008-08-08 → 2008-08-01 |
| 31 | 개인신계약심사 | 2008-09-01 A → 2008-07-28 A (-35d) | 2008-09-05 A → 2008-08-01 A (-35d) |  |  | was named 단체입금; constraint start no earlier than 2008-08-25 → start no earlier than 2008-07-28; baseline start 2008-09-01 → 2008-07-28; baseline finish 2008-09-05 → 2008-08-01 |
| 36 | 적부조사 | 2008-08-04 A → 2008-07-28 A (-7d) | 2008-08-08 A → 2008-08-01 A (-7d) |  |  | was named 보험료반송; constraint start no earlier than 2008-07-21 → start no earlier than 2008-07-28; baseline start 2008-08-04 → 2008-07-28; baseline finish 2008-08-08 → 2008-08-01 |
| 37 | 진단 | 2008-08-04 A → 2008-07-28 A (-7d) | 2008-08-08 A → 2008-08-01 A (-7d) |  |  | was named 특별입금; constraint start no earlier than 2008-07-21 → start no earlier than 2008-07-28; baseline start 2008-08-04 → 2008-07-28; baseline finish 2008-08-08 → 2008-08-01 |
| 39 | 마감 | 2008-08-04 A → 2008-07-28 A (-7d) | 2008-08-08 A → 2008-08-01 A (-7d) |  |  | was named 영수증관리; constraint start no earlier than 2008-07-21 → start no earlier than 2008-07-28; baseline start 2008-08-04 → 2008-07-28; baseline finish 2008-08-08 → 2008-08-01 |
| 40 | 통계 | 2008-08-04 A → 2008-07-28 A (-7d) | 2008-08-08 A → 2008-08-01 A (-7d) |  |  | was named 마감/통계; constraint start no earlier than 2008-07-21 → start no earlier than 2008-07-28; baseline start 2008-08-04 → 2008-07-28; baseline finish 2008-08-08 → 2008-08-01 |
| 41 | 인터뷰실시 |  |  |  | none → 7 | constraint start no earlier than 2008-08-04 → none |
| 42 | 착수W/S |  |  |  | 41 → none | constraint none → start no earlier than 2008-08-06 |
| 45 | **메뉴구조 및 화면 설명** |  | 2008-08-14 A → 2008-08-13 A (-1d) | 4d → 3d |  | baseline finish 2008-08-14 → 2008-08-13 |
| 47 | 개인청약 | 2008-09-29 A → 2008-08-11 A (-49d) | 2008-10-10 A → 2008-08-13 A (-58d) | 9d → 3d |  | was named 카드이체; constraint none → start no earlier than 2008-07-21; baseline start 2008-09-29 → 2008-08-11; baseline finish 2008-10-10 → 2008-08-13 |
| 48 | 단체청약 | 2008-10-13 A → 2008-08-11 A (-63d) | 2008-10-17 A → 2008-08-13 A (-65d) | 5d → 3d |  | was named 자동이체; constraint finish no earlier than 2008-10-17 → start no earlier than 2008-07-21; baseline start 2008-10-13 → 2008-08-11; baseline finish 2008-10-17 → 2008-08-13 |
| 49 | 부활청약 | 2008-10-06 A → 2008-08-11 A (-56d) | 2008-10-17 A → 2008-08-13 A (-65d) | 10d → 3d |  | was named 즉시이체; constraint finish no earlier than 2008-10-17 → start no earlier than 2008-07-21; baseline start 2008-10-06 → 2008-08-11; baseline finish 2008-10-17 → 2008-08-13 |
| 50 | **청약보험료** | 2008-10-06 A → 2008-08-11 A (-56d) | 2008-10-17 A → 2008-08-13 A (-65d) | 10d → 3d |  | was named 가상계좌; constraint finish no earlier than 2008-10-17 → none; baseline start 2008-10-06 → 2008-08-11; baseline finish 2008-10-17 → 2008-08-13 |
| 51 | 청약보험료수납 | 2008-09-29 A → 2008-08-11 A (-49d) | 2008-10-10 A → 2008-08-13 A (-58d) | 9d → 3d |  | was named 단체입금; constraint start no earlier than 2008-09-22 → start no earlier than 2008-07-21; baseline start 2008-09-29 → 2008-08-11; baseline finish 2008-10-10 → 2008-08-13 |
| 52 | 납입서조회 | 2008-10-16 A → 2008-08-11 A (-66d) | 2008-10-22 A → 2008-08-13 A (-70d) | 5d → 3d |  | was named 카드이체; constraint none → start no earlier than 2008-07-21; baseline start 2008-10-16 → 2008-08-11; baseline finish 2008-10-22 → 2008-08-13 |
| 53 | **신계약일반조회** | 2008-10-20 A → 2008-08-11 A (-70d) | 2008-10-24 A → 2008-08-13 A (-72d) | 5d → 3d |  | was named 자동이체; constraint start no earlier than 2008-10-20 → none; baseline start 2008-10-20 → 2008-08-11; baseline finish 2008-10-24 → 2008-08-13 |
| 54 | 계약정보조회 | 2008-10-20 A → 2008-08-11 A (-70d) | 2008-10-24 A → 2008-08-13 A (-72d) | 5d → 3d |  | was named 즉시이체; constraint start no earlier than 2008-10-20 → start no earlier than 2008-07-21; baseline start 2008-10-20 → 2008-08-11; baseline finish 2008-10-24 → 2008-08-13 |
| 55 | 심사대상조회 | 2008-10-16 A → 2008-08-11 A (-66d) | 2008-10-22 A → 2008-08-13 A (-70d) | 5d → 3d |  | was named 가상계좌; constraint start no earlier than 2008-10-06 → start no earlier than 2008-07-21; baseline start 2008-10-16 → 2008-08-11; baseline finish 2008-10-22 → 2008-08-13 |
| 56 | 심사목록조회 | 2008-10-16 A → 2008-08-11 A (-66d) | 2008-10-22 A → 2008-08-13 A (-70d) | 5d → 3d |  | was named 단체입금; constraint start no earlier than 2008-10-06 → start no earlier than 2008-07-21; baseline start 2008-10-16 → 2008-08-11; baseline finish 2008-10-22 → 2008-08-13 |
| 70 | 적부조사 | 2008-08-04 A → 2008-08-11 A (+7d) | 2008-08-08 A → 2008-08-13 A (+5d) | 5d → 3d |  | was named 카드이체; constraint none → start no earlier than 2008-07-21; baseline start 2008-08-04 → 2008-08-11; baseline finish 2008-08-08 → 2008-08-13 |
| 71 | 진단 | 2008-08-04 A → 2008-08-11 A (+7d) | 2008-08-08 A → 2008-08-13 A (+5d) | 5d → 3d |  | was named 자동이체; constraint none → start no earlier than 2008-07-21; baseline start 2008-08-04 → 2008-08-11; baseline finish 2008-08-08 → 2008-08-13 |
| 72 | 증권관리 | 2008-08-04 A → 2008-08-11 A (+7d) | 2008-08-08 A → 2008-08-13 A (+5d) | 5d → 3d |  | was named 즉시이체; constraint none → start no earlier than 2008-07-21; baseline start 2008-08-04 → 2008-08-11; baseline finish 2008-08-08 → 2008-08-13 |
| 73 | 마감 | 2008-08-04 A → 2008-08-11 A (+7d) | 2008-08-08 A → 2008-08-13 A (+5d) | 5d → 3d |  | was named 가상계좌; constraint none → start no earlier than 2008-07-21; baseline start 2008-08-04 → 2008-08-11; baseline finish 2008-08-08 → 2008-08-13 |
| 74 | 통계 | 2008-08-04 A → 2008-08-11 A (+7d) | 2008-08-08 A → 2008-08-13 A (+5d) | 5d → 3d |  | was named 단체입금; constraint none → start no earlier than 2008-07-21; baseline start 2008-08-04 → 2008-08-11; baseline finish 2008-08-08 → 2008-08-13 |
| 79 | **청약** | 2008-08-04 A → 2008-08-18 A (+14d) | 2008-08-08 A → 2008-08-22 A (+14d) |  |  | was named 자동대출; constraint start no earlier than 2008-07-21 → none; baseline start 2008-08-04 → 2008-08-18; baseline finish 2008-08-08 → 2008-08-22 |
| 80 | 개인청약 | 2008-08-11 A → 2008-08-18 A (+7d) | 2008-08-14 A → 2008-08-22 A (+8d) | 4d → 5d |  | was named 자동대출; baseline start 2008-08-11 → 2008-08-18; baseline finish 2008-08-14 → 2008-08-22 |
| 81 | 단체청약 |  |  |  |  | was named 자동대출 |
| 82 | 부활청약 |  |  |  |  | was named 자동대출 |
| 83 | **청약보험료** | 2008-09-01 A → 2008-08-18 A (-14d) | 2008-09-05 A → 2008-08-22 A (-14d) |  |  | was named 자동대출; constraint start no earlier than 2008-08-25 → none; baseline start 2008-09-01 → 2008-08-18; baseline finish 2008-09-05 → 2008-08-22 |
| 86 | **신계약일반조회** | 2008-10-13 A → 2008-08-18 A (-56d) | 2008-10-17 A → 2008-08-22 A (-56d) |  |  | was named 자동대출; constraint start no earlier than 2008-10-13 → none; baseline start 2008-10-13 → 2008-08-18; baseline finish 2008-10-17 → 2008-08-22 |
| 87 | 계약정보조회 | 2008-10-27 A → 2008-08-18 A (-70d) | 2008-10-31 A → 2008-08-22 A (-70d) |  |  | was named 자동대출; constraint start no earlier than 2008-10-27 → start no earlier than 2008-07-21; baseline start 2008-10-27 → 2008-08-18; baseline finish 2008-10-31 → 2008-08-22 |
| 108 | **타시스템 인터페이스 요구사항정의** | 2008-08-18 A → 2008-08-25 A (+7d) | 2008-08-22 A → 2008-08-29 A (+7d) |  | 44 → 41 | baseline start 2008-08-18 → 2008-08-25; baseline finish 2008-08-22 → 2008-08-29 |
| 109 | **대내시스템 인터페이스 목록 작성** | 2008-08-18 A → 2008-08-25 A (+7d) | 2008-08-22 A → 2008-08-29 A (+7d) |  |  | baseline start 2008-08-18 → 2008-08-25; baseline finish 2008-08-22 → 2008-08-29 |
| 110 | 가입설계시스템 | 2008-08-18 A → 2008-08-25 A (+7d) | 2008-08-22 A → 2008-08-29 A (+7d) |  |  | was named 사이버창구/ARS; constraint start no earlier than 2008-08-18 → finish no earlier than 2008-08-29; baseline start 2008-08-18 → 2008-08-25; baseline finish 2008-08-22 → 2008-08-29 |
| 111 | DM시스템 | 2008-08-18 A → 2008-08-25 A (+7d) | 2008-08-22 A → 2008-08-29 A (+7d) |  |  | was named TM시스템; constraint start no earlier than 2008-08-18 → start no earlier than 2008-08-25; baseline start 2008-08-18 → 2008-08-25; baseline finish 2008-08-22 → 2008-08-29 |
| 112 | 방카시스템 | 2008-08-18 A → 2008-08-25 A (+7d) | 2008-08-22 A → 2008-08-29 A (+7d) |  |  | constraint start no earlier than 2008-08-18 → start no earlier than 2008-08-25; baseline start 2008-08-18 → 2008-08-25; baseline finish 2008-08-22 → 2008-08-29 |
| 114 | NFS시스템 | 2008-08-18 A → 2008-08-25 A (+7d) | 2008-08-22 A → 2008-08-29 A (+7d) |  |  | constraint start no earlier than 2008-08-18 → start no earlier than 2008-08-25; baseline start 2008-08-18 → 2008-08-25; baseline finish 2008-08-22 → 2008-08-29 |
| 115 | **대외시스템 인터페이스 목록 작성** | 2008-08-18 A → 2008-08-25 A (+7d) | 2008-08-22 A → 2008-08-29 A (+7d) |  |  | baseline start 2008-08-18 → 2008-08-25; baseline finish 2008-08-22 → 2008-08-29 |
| 116 | 은행 리얼타임 이체 | 2008-08-18 A → 2008-08-25 A (+7d) | 2008-08-22 A → 2008-08-29 A (+7d) |  |  | constraint start no earlier than 2008-08-18 → start no earlier than 2008-08-25; baseline start 2008-08-18 → 2008-08-25; baseline finish 2008-08-22 → 2008-08-29 |
| 117 | 카드사 실시간 승인 | 2008-08-18 A → 2008-08-25 A (+7d) | 2008-08-22 A → 2008-08-29 A (+7d) |  |  | constraint start no earlier than 2008-08-18 → start no earlier than 2008-08-25; baseline start 2008-08-18 → 2008-08-25; baseline finish 2008-08-22 → 2008-08-29 |
| 119 | 세금우대정보 수신 | 2008-08-18 A → 2008-08-25 A (+7d) | 2008-08-22 A → 2008-08-29 A (+7d) |  |  | constraint start no earlier than 2008-08-18 → start no earlier than 2008-08-25; baseline start 2008-08-18 → 2008-08-25; baseline finish 2008-08-22 → 2008-08-29 |
| 120 | 생보협회 자료 송수신 | 2008-08-18 A → 2008-08-25 A (+7d) | 2008-08-22 A → 2008-08-29 A (+7d) |  |  | was named 가상계좌 이체; constraint start no earlier than 2008-08-18 → start no earlier than 2008-08-25; baseline start 2008-08-18 → 2008-08-25; baseline finish 2008-08-22 → 2008-08-29 |
| 122 | **패키지GAP분석** |  |  |  | 44 → none |  |
| 152 | **매핑결과 및 GAP 대응방안 수립** |  |  |  | 122 → none |  |
| 183 | 요구사항추적표 작성 |  |  |  | 152 → none |  |
| 188 | **추가개발 설계** |  | 2008-11-21 A → 2008-11-14 A (-7d) | 39d → 34d |  | baseline finish 2008-11-21 → 2008-11-14 |
| 189 | **데이터코드 설계** | 2008-10-06 A → 2008-09-29 A (-7d) |  | 8d → 12d |  | baseline start 2008-10-06 → 2008-09-29 |

| ID | Task | Start | Finish | Duration | Predecessors | Other |
| --- | --- | --- | --- | --- | --- | --- |
| 190 | 데이터코드정의서 작성 | 2008-10-06 A → 2008-09-29 A (-7d) |  | 8d → 12d |  | constraint finish no earlier than 2008-10-15 → none; baseline start 2008-10-06 → 2008-09-29 |
| 191 | **데이터베이스 설계** | 2008-10-07 A → 2008-10-01 A (-6d) |  | 7d → 10d |  | baseline start 2008-10-07 → 2008-10-01 |
| 192 | ERD 작성 | 2008-10-14 A → 2008-10-01 A (-13d) |  | 2d → 10d |  | constraint start no earlier than 2008-10-14 → start no earlier than 2008-10-01; baseline start 2008-10-14 → 2008-10-01 |
| 195 | **UI 설계** | 2008-09-29 A → 2008-10-06 A (+7d) |  | 29d → 25d |  | baseline start 2008-09-29 → 2008-10-06 |
| 196 | **화면레이아웃 작성** | 2008-09-29 A → 2008-10-06 A (+7d) |  | 19d → 15d |  | baseline start 2008-09-29 → 2008-10-06 |
| 225 | **보고서레이아웃 작성** |  |  |  |  | was named 출력레이아웃 작성 |
| 226 | 청약서양식 작성 |  |  |  |  | was named 보험료영수증(개인/단체) 작성 |
| 230 | 온라인프로그램목록 작성 |  | 2008-10-22 A → 2008-10-17 A (-5d) | 5d → 2d |  | baseline finish 2008-10-22 → 2008-10-17 |
| 261 | **배치플로우 설계** |  | 2008-11-21 A → 2008-11-14 A (-7d) | 20d → 15d |  | baseline finish 2008-11-21 → 2008-11-14 |
| 264 | 배치프로그램사양서 작성 |  | 2008-11-21 A → 2008-11-14 A (-7d) | 15d → 10d |  | baseline finish 2008-11-21 → 2008-11-14 |
| 267 | **컨버젼 설계** |  | 2008-11-18 A → 2008-11-14 A (-4d) | 36d → 34d |  | baseline finish 2008-11-18 → 2008-11-14 |
| 268 | 테이블 매핑정의서 작성 지원 |  | 2008-11-18 A → 2008-11-14 A (-4d) | 36d → 34d |  | baseline finish 2008-11-18 → 2008-11-14 |
| 269 | 데이터코드 매핑정의서 작성 지원 |  | 2008-11-18 A → 2008-11-14 A (-4d) | 36d → 34d |  | baseline finish 2008-11-18 → 2008-11-14 |
| 270 | **타시스템 인터페이스 설계** | 2008-11-10 A → 2008-11-03 A (-7d) |  | 5d → 10d |  | baseline start 2008-11-10 → 2008-11-03 |
| 271 | 인터페이스 목록(상세) 작성 | 2008-11-10 A → 2008-11-03 A (-7d) | 2008-11-14 A → 2008-11-07 A (-7d) |  |  | constraint start no earlier than 2008-11-10 → start no earlier than 2008-11-03; baseline start 2008-11-10 → 2008-11-03; baseline finish 2008-11-14 → 2008-11-07 |
| 272 | **대내시스템 인터페이스 레이아웃 작성** | 2008-11-10 A → 2008-11-03 A (-7d) |  | 5d → 10d |  | baseline start 2008-11-10 → 2008-11-03 |
| 273 | 가입설계시스템 | 2008-11-10 A → 2008-11-03 A (-7d) |  | 5d → 10d |  | was named 사이버창구/ARS; constraint start no earlier than 2008-11-10 → start no earlier than 2008-11-03; baseline start 2008-11-10 → 2008-11-03 |
| 274 | COS시스템 | 2008-11-10 A → 2008-11-03 A (-7d) |  | 5d → 10d |  | was named TM시스템; constraint start no earlier than 2008-11-10 → start no earlier than 2008-11-03; baseline start 2008-11-10 → 2008-11-03 |
| 276 | 방카시스템 | 2008-11-10 A → 2008-11-03 A (-7d) |  | 5d → 10d |  | constraint start no earlier than 2008-11-10 → start no earlier than 2008-11-03; baseline start 2008-11-10 → 2008-11-03 |
| 278 | NFS시스템 | 2008-11-10 A → 2008-11-03 A (-7d) |  | 5d → 10d |  | constraint start no earlier than 2008-11-10 → start no earlier than 2008-11-03; baseline start 2008-11-10 → 2008-11-03 |
| 279 | **대외시스템 인터페이스 레이아웃 작성** | 2008-11-10 A → 2008-11-03 A (-7d) |  | 5d → 10d |  | baseline start 2008-11-10 → 2008-11-03 |
| 280 | 은행 리얼타임 이체 | 2008-11-10 A → 2008-11-03 A (-7d) |  | 5d → 10d |  | constraint start no earlier than 2008-11-10 → start no earlier than 2008-11-03; baseline start 2008-11-10 → 2008-11-03 |
| 281 | 카드사 실시간 승인 | 2008-11-10 A → 2008-11-03 A (-7d) |  | 5d → 10d |  | constraint start no earlier than 2008-11-10 → start no earlier than 2008-11-03; baseline start 2008-11-10 → 2008-11-03 |
| 283 | 세금우대정보 수신 | 2008-11-10 A → 2008-11-03 A (-7d) |  | 5d → 10d |  | constraint start no earlier than 2008-11-10 → start no earlier than 2008-11-03; baseline start 2008-11-10 → 2008-11-03 |
| 284 | 생보협회 자료 송수신 | 2008-11-10 A → 2008-11-03 A (-7d) |  | 5d → 10d |  | was named 가상계좌 이체; constraint start no earlier than 2008-11-10 → start no earlier than 2008-11-03; baseline start 2008-11-10 → 2008-11-03 |
| 286 | 요구사항추적표 작성 |  |  |  | 229 → 188 | constraint start no earlier than 2008-11-17 → start no earlier than 2008-11-03 |
| 307 | 테스트목록 및 일정 확정 |  |  |  | 306 → none | constraint none → start no earlier than 2008-12-08 |
| 327 | **E2E Test(End to End Test)** |  |  |  | 316 → none |  |
| 332 | **개발 및 Test 검수** |  |  |  | 327 → none |  |
| 333 | 테스트결과제출 |  |  |  | none → 327 |  |
| 336 | **UAT(User Acceptance Test)** |  |  | 38d → 39d |  |  |
| 337 | 사용자테스트 실시 |  |  | 38d → 39d |  |  |
